# Gantt abril impactada REV.RUTA CRITICA (Obra Comercial-Retail)

Schedule from MS Project XML, 2013-02-26 to 2013-11-30, status date 2013-04-15, 9 hours a day.

## Calendars

- Estándar: Mon 08:00-13:00, 14:00-16:00; Tue-Fri 09:00-13:00, 15:00-19:00; Sat-Sun off. Exceptions (off unless hours are given): 2011-07-01 to 2014-06-02 08:00-13:00, 14:00-18:00 (Horario laborable, recurring).

## Schedule

| ID | WBS | Task | Type | Duration | Start | Finish | Total slack | Free slack | Constraint | Dias Corridos | ACU | Número2 |
| --- | --- | --- | --- | --- | --- | --- | --- | --- | --- | --- | --- | --- |
| 1 | 1 | **OBRA EDIFICIO PRINCIPAL CENTRO COMERCIAL** |  | 239d | 2013-02-26 | 2013-11-30 | 0d |  |  | 278 | 0.51d |  |
| 2 | 1.1 | **HITOS** |  | 151d | 2013-05-01 | 2013-10-24 | 33d |  |  | 177 | 0.33d | 540 |
| 3 | 1.1.1 | HITO N°1 : Termino O.Gruesa 1° Piso Edif. Principal | milestone | 0d | 2013-06-01 | 2013-06-01 | 157d |  | start no earlier than 2013-06-01 | 1 |  |  |
| 4 | 1.1.2 | HITO N°2 : Termino O.Gruesa Losa cielo 3° Piso Edif. Centro Medico | milestone | 0d | 2013-06-21 | 2013-06-21 | 140d |  | start no earlier than 2013-06-21 | 1 |  |  |
| 5 | 1.1.3 | HITO N°3 : Entrega de Locales Restaurantes primer, segundo y tercer piso Ed. Principal para Habilitacion por parte de Locatarios (04-08-13) | milestone | 0d | 2013-08-03 | 2013-08-03 | 103d |  | start no earlier than 2013-08-03 | 1 |  |  |
| 6 | 1.1.4 | HITO N°4 : Inicio de Obras Acceso Sector Juegos | milestone | 0d | 2013-08-12 | 2013-08-12 | 96d |  | start no earlier than 2013-08-12 | 1 |  |  |
| 7 | 1.1.5 | HITO N°5 : Termino O.Gruesa Edif. Centro Medico | milestone | 0d | 2013-08-10 | 2013-08-10 | 97d |  | start no earlier than 2013-08-10 | 1 |  |  |
| 8 | 1.1.6 | HITO N°6 : Termino O.Gruesa Ed. Principal | milestone | 0d | 2013-08-16 | 2013-08-16 | 92d |  | start no earlier than 2013-08-16 | 1 |  |  |
| 9 | 1.1.7 | HITO N°7 : Entrega de Locales pasillo 1° y 2° Piso Ed. Principal para Habilitacion por parte de locatarios (03-09-13) | milestone | 0d | 2013-09-03 | 2013-09-03 | 77d |  | start no earlier than 2013-09-03 | 1 |  |  |
| 10 | 1.1.8 | HITO N°8 : Entrega de Locales Tienda Retail 1 para Habilitación por parte de Locatarios (03-09-13) | milestone | 0d | 2013-09-03 | 2013-09-03 | 77d |  | start no earlier than 2013-09-03 | 1 |  |  |
| 11 | 1.1.9 | HITO N°9 : Termino Remodelación Sector Ex. Tienda Retail 1 (04-09-13) | milestone | 0d | 2013-09-04 | 2013-09-04 | 76d |  | start no earlier than 2013-09-04 | 1 |  |  |
| 12 | 1.1.10 | HITO N°10 : Termino de Obras Remodelación Pasillo Primer Piso Existente (04-09-13) | milestone | 0d | 2013-09-04 | 2013-09-04 | 76d |  | start no earlier than 2013-09-04 | 1 |  |  |
| 13 | 1.1.11 | HITO N° 11 : Termino Muro Perimetral Laguna Edificio Principal (04-09-13) | milestone | 0d | 2013-09-04 | 2013-09-04 | 76d |  | start no earlier than 2013-09-04 | 1 |  |  |
| 14 | 1.1.12 | HITO N°12 : Entrega terminados Nuevos Baños (02-10-13) | milestone | 0d | 2013-10-02 | 2013-10-02 | 52d |  | start no earlier than 2013-10-02 | 1 |  |  |
| 15 | 1.1.13 | HITO N°13 : Modificaciones Sector Tienda Retail 2 (09-10-13) | milestone | 0d | 2013-10-09 | 2013-10-09 | 46d |  | start no earlier than 2013-10-09 | 1 |  |  |
| 16 | 1.1.14 | HITO N°14 : Termino de Obras Acceso Sector Juegos (24-10-13) | milestone | 0d | 2013-10-24 | 2013-10-24 | 33d |  | start no earlier than 2013-10-24 | 1 |  |  |
| 17 | 1.1.15 | HITO N°15 : Entrega terminada Laguna (24-10-13) | milestone | 0d | 2013-10-24 | 2013-10-24 | 33d |  | start no earlier than 2013-10-24 | 1 |  |  |
| 18 | 1.1.16 | HITO N°16 : Entrega Local de Comidas 3° Piso Sector A | milestone | 0d | 2013-09-16 | 2013-09-16 | 66d |  | start no earlier than 2013-09-16 | 1 |  |  |
| 19 | 1.1.17 | HITO N°17 : Entrega Sector Tienda Retail 1 para Inicio Obra Gruesa | milestone | 0d | 2013-05-01 | 2013-05-01 | 184d |  | start no earlier than 2013-05-01 | 1 |  |  |
| 20 | 1.1.18 | HITO N°18 : Entrega para Habilitacion Local 1 | milestone | 0d | 2013-08-30 | 2013-08-30 | 6d | 0d | start no earlier than 2013-08-30 | 1 |  |  |
| 21 | 1.2 | ENTREGA DE TERRENO | milestone | 0d | 2013-02-26 | 2013-02-26 | 0d |  |  | 1 |  |  |
| 22 | 1.3 | Sector A,B y C: Autorización Demolición Restaurant (A, B y C) | milestone | 0d | 2013-02-26 | 2013-02-26 | 0d |  |  | 1 |  |  |
| 23 | 1.4 | Sector A,B y C : Entrega Local Restaurant D | milestone | 0d | 2013-03-05 | 2013-03-05 | 0d |  | start no earlier than 2013-03-05 | 1 |  |  |
| 24 | 1.5 | Sector III : Entrega de Anden Centro Medico (Entrega real el 08.04.13) | milestone | 0d | 2013-04-08 | 2013-04-08 | 0d |  | start no earlier than 2013-04-08 | 1 |  |  |
| 25 | 1.6 | Sector II : Entrega local 2 | milestone | 0d | 2013-03-05 | 2013-03-05 | 0d |  | start no earlier than 2013-03-05 | 1 |  |  |
| 26 | 1.7 | Sector II : Entrega Local 1 | milestone | 0d | 2013-03-05 | 2013-03-05 | 0d |  | start no earlier than 2013-03-05 | 1 |  |  |
| 27 | 1.8 | Sector II : Entrega Local 3 | milestone | 0d | 2013-03-05 | 2013-03-05 | 0d |  | start no earlier than 2013-03-05 | 1 |  |  |
| 28 | 1.9 | Sector II : Entrega Sector II (Entrega real el 08.04.13) | milestone | 0d | 2013-03-05 | 2013-03-05 | 0d |  | start no earlier than 2013-03-05 | 1 |  |  |
| 29 | 1.10 | Sector I : Entrega Sector + Autorización para excavación Tunel (pend) | milestone | 0d | 2013-02-26 | 2013-02-26 | 22d | 0d |  | 1 |  |  |
| 30 | 1.11 | Sector I : Entrega Ex Retail 1 para proyecto Remodelación | milestone | 0d | 2013-05-01 | 2013-05-01 | 24d | 0d | start no earlier than 2013-05-01 | 1 |  |  |

| ID | WBS | Task | Duration | Start | Finish | Predecessors | Total slack | Free slack | Dias Corridos | Número2 | ACU |
| --- | --- | --- | --- | --- | --- | --- | --- | --- | --- | --- | --- |
| 31 | 1.12 | **OBRA PRELIMINARES** | 49d | 2013-02-26 | 2013-04-23 |  | 0d |  | 57 | 540 | 0.11d |
| 32 | 1.12.1 | Instalación de Faena | 14d | 2013-02-26 | 2013-03-13 | 21 | 49d | 27d | 16 | 7560 | 0.03d |
| 33 | 1.12.2 | Tuneles Peatonal Acceso Centro Medico | 18d | 2013-02-26 | 2013-03-18 | 21 | 0d |  | 21 | 9720 | 0.04d |
| 34 | 1.12.3 | Tunel Peatonal 2 Acceso Centro Comercial Costado Tienda Retail 1 | 8d | 2013-04-15 | 2013-04-23 | 29FS+41d, 32 | 22d |  | 9 | 4320 | 0.02d |
| 35 | 1.13 | **EDIFICIO PRINCIPAL** | 164d | 2013-03-22 | 2013-09-28 |  | 0d |  | 191 |  | 0.35d |
| 36 | 1.13.1 | Demolición Locales Existentes : Sector Restaurant (A, B y C) | 11d | 2013-03-22 | 2013-04-03 | 22FS+21d, 21FS+21d | 0d |  | 13 | 5940 | 0.02d |
| 37 | 1.13.2 | **SECTOR C (R14 - R19]** | 119d | 2013-03-28 | 2013-08-13 |  | 4d |  | 139 |  | 0.26d |
| 38 | 1.13.2.1 | EXCAVACIÓN FUNDACIONES | 13d | 2013-04-02 | 2013-04-16 | 21, 22, 36FS-2d | 0d |  | 15 | 7020 | 0.03d |
| 39 | 1.13.2.2 | **SUBTERRANEO** | 74d | 2013-03-28 | 2013-06-21 |  | 6d |  | 86 | 540 | 0.16d |
| 40 | 1.13.2.2.1 | EXCAVACIÓN MASIVA | 8d | 2013-03-28 | 2013-04-05 | 21, 22, 36FS-6d | 6d | 0d | 9 | 4320 | 0.02d |
| 41 | 1.13.2.2.2 | EXCAVACION DE FUNDACIONES | 8d | 2013-04-06 | 2013-04-15 | 40 | 6d | 0d | 10 | 4320 | 0.02d |
| 42 | 1.13.2.2.3 | **FUNDACIONES** | 10d | 2013-04-12 | 2013-04-23 |  | 6d |  | 12 | 540 | 0.02d |
| 43 | 1.13.2.2.3.1 | EMPLANTILLADO | 5d | 2013-04-12 | 2013-04-17 | 41FS-3d | 6d | 0d | 6 | 2700 | 0.01d |
| 44 | 1.13.2.2.3.2 | ENFIERRADURA | 7d | 2013-04-15 | 2013-04-22 | 43FS-3d | 6d | 0d | 8 | 3780 | 0.01d |
| 45 | 1.13.2.2.3.3 | HORMIGON | 4d | 2013-04-19 | 2013-04-23 | 44FS-3d | 6d | 0d | 5 | 2160 | 0.01d |
| 46 | 1.13.2.2.4 | **MURO PERIMETRAL** | 28d | 2013-04-11 | 2013-05-13 |  | 6d |  | 33 |  | 0.06d |
| 47 | 1.13.2.2.4.1 | ZAPATAS MURO | 19d | 2013-04-11 | 2013-05-02 | 40FS+4d | 6d | 0d | 22 | 10260 | 0.04d |
| 48 | 1.13.2.2.4.2 | **MURO** | 21d | 2013-04-19 | 2013-05-13 |  | 6d |  | 25 | 540 | 0.05d |
| 49 | 1.13.2.2.4.2.1 | ENFIERRADURA | 12d | 2013-04-19 | 2013-05-02 | 47FS-12d | 6d | 0d | 14 | 6480 | 0.03d |
| 50 | 1.13.2.2.4.2.2 | MOLDAJE | 9d | 2013-04-29 | 2013-05-08 | 49FS-4d | 6d | 0d | 10 | 4860 | 0.02d |
| 51 | 1.13.2.2.4.2.3 | HORMIGON | 9d | 2013-05-03 | 2013-05-13 | 50FS-5d | 6d | 0d | 11 | 4860 | 0.02d |
| 52 | 1.13.2.2.5 | **PILARES (-4.9 , +0,0)** | 16d | 2013-04-19 | 2013-05-07 |  | 6d |  | 19 | 540 | 0.04d |
| 53 | 1.13.2.2.5.1 | ENFIERRADURA | 10d | 2013-04-19 | 2013-04-30 | 47FS-12d | 6d | 0d | 12 | 5400 | 0.02d |
| 54 | 1.13.2.2.5.2 | MOLDAJE | 7d | 2013-04-25 | 2013-05-02 | 53FS-5d | 6d | 0d | 8 | 3780 | 0.01d |
| 55 | 1.13.2.2.5.3 | HORMIGON | 7d | 2013-04-30 | 2013-05-07 | 54FS-3d | 6d | 0d | 8 | 3780 | 0.01d |

| ID | WBS | Task | Duration | Start | Finish | Predecessors | Total slack | Free slack | Dias Corridos | Número2 | ACU |
| --- | --- | --- | --- | --- | --- | --- | --- | --- | --- | --- | --- |
| 56 | 1.13.2.2.6 | **LOSA Y CAPITELES (+0.0)** | 20d | 2013-05-14 | 2013-06-05 |  | 26d |  | 23 | 540 | 0.04d |
| 57 | 1.13.2.2.6.1 | MOLDAJE | 10d | 2013-05-14 | 2013-05-24 | 55, 51 | 26d | 0d | 11 | 5400 | 0.02d |
| 58 | 1.13.2.2.6.2 | ENFIERRADURA | 10d | 2013-05-21 | 2013-05-31 | 57FS-4d | 26d | 0d | 11 | 5400 | 0.02d |
| 59 | 1.13.2.2.6.3 | HORMIGÓN | 8d | 2013-05-28 | 2013-06-05 | 58FS-4d, 51FS+12d | 26d | 5d | 9 | 4320 | 0.02d |
| 60 | 1.13.2.2.7 | RELLENOS 2° PARTE MURO PERIMETRAL | 11d | 2013-05-16 | 2013-05-28 | 51FS+2d, 55FS+7d | 6d | 0d | 13 | 5940 | 0.02d |
| 61 | 1.13.2.2.8 | HORMIGON RADIER NIVEL (+0.0) 2° PARTE (PERIMETRO COSTADO MURO) | 9d | 2013-06-12 | 2013-06-21 | 60, 77FS+7d, 59 | 21d | 15d | 10 | 4860 | 0.02d |
| 62 | 1.13.2.3 | **PRIMER PISO (0.0 , +5,62)** | 49d | 2013-04-08 | 2013-06-03 |  | 4d |  | 57 |  | 0.11d |
| 63 | 1.13.2.3.1 | **FUNDACIONES** | 18d | 2013-04-08 | 2013-04-27 |  | 4d |  | 20 | 540 | 0.04d |
| 64 | 1.13.2.3.1.1 | EMPLANTILLADO | 9d | 2013-04-08 | 2013-04-17 | 38FS-8d | 4d | 0d | 10 | 4860 | 0.02d |
| 65 | 1.13.2.3.1.2 | ENFIERRADURA | 11d | 2013-04-10 | 2013-04-22 | 64FS-7d | 4d | 0d | 13 | 5940 | 0.02d |
| 66 | 1.13.2.3.1.3 | HORMIGÓN | 10d | 2013-04-17 | 2013-04-27 | 65FS-5d | 4d | 0d | 11 | 5400 | 0.02d |
| 67 | 1.13.2.3.2 | **PILARES** | 15d | 2013-04-23 | 2013-05-09 |  | 4d |  | 17 |  | 0.03d |
| 68 | 1.13.2.3.2.1 | ENFIERRADURA | 11d | 2013-04-23 | 2013-05-04 | 66FS-5d | 4d | 0d | 12 | 5940 | 0.02d |
| 69 | 1.13.2.3.2.2 | MOLDAJE | 8d | 2013-04-30 | 2013-05-08 | 68FS-5d | 4d | 0d | 9 | 4320 | 0.02d |
| 70 | 1.13.2.3.2.3 | HORMIGON | 7d | 2013-05-02 | 2013-05-09 | 69FS-6d | 4d | 0d | 8 | 3780 | 0.01d |
| 71 | 1.13.2.3.3 | **RADIER** | 9d | 2013-05-10 | 2013-05-20 |  | 6d |  | 11 |  | 0.02d |
| 72 | 1.13.2.3.3.1 | RELLENOS 1° PARTE (Incl. Base Estabilizada) | 6d | 2013-05-10 | 2013-05-16 | 70, 318FS+1d | 6d | 0d | 7 | 3240 | 0.01d |
| 73 | 1.13.2.3.3.2 | HORMIGON 1° PARTE | 5d | 2013-05-15 | 2013-05-20 | 72FS-2d | 6d | 0d | 6 | 2700 | 0.01d |
| 74 | 1.13.2.3.4 | **VIGAS Y LOSAS** | 13d | 2013-05-20 | 2013-06-03 |  | 6d |  | 15 |  | 0.03d |
| 75 | 1.13.2.3.4.1 | MOLDAJE | 8d | 2013-05-20 | 2013-05-28 | 73FS-1d, 51FS+5d, 60FF, 55FS+10d, 45FS+22d | 6d | 0d | 9 | 4320 | 0.02d |
| 76 | 1.13.2.3.4.2 | ENFIERRADURA | 9d | 2013-05-23 | 2013-06-01 | 75FS-5d | 6d | 0d | 10 | 4860 | 0.02d |
| 77 | 1.13.2.3.4.3 | HORMIGON | 6d | 2013-05-28 | 2013-06-03 | 76FS-5d | 6d | 0d | 7 | 3240 | 0.01d |
| 78 | 1.13.2.4 | **SEGUNDO PISO (+5,62 , +11,18)** | 24d | 2013-06-01 | 2013-06-28 |  | 6d |  | 28 |  | 0.05d |
| 79 | 1.13.2.4.1 | **PILARES** | 13d | 2013-06-01 | 2013-06-15 |  | 6d |  | 15 |  | 0.03d |
| 80 | 1.13.2.4.1.1 | ENFIERRADURA | 9d | 2013-06-01 | 2013-06-11 | 77FS-2d | 6d | 0d | 11 | 4860 | 0.02d |
| 81 | 1.13.2.4.1.2 | MOLDAJE | 8d | 2013-06-06 | 2013-06-14 | 80FS-5d | 6d | 0d | 9 | 4320 | 0.02d |
| 82 | 1.13.2.4.1.3 | HORMIGON | 6d | 2013-06-10 | 2013-06-15 | 81FS-5d | 6d | 0d | 6 | 3240 | 0.01d |

| ID | WBS | Task | Duration | Start | Finish | Predecessors | Total slack | Free slack | Dias Corridos | ACU | Número2 |
| --- | --- | --- | --- | --- | --- | --- | --- | --- | --- | --- | --- |
| 83 | 1.13.2.4.2 | **VIGAS** | 12d | 2013-06-15 | 2013-06-28 |  | 6d |  | 14 | 0.03d |  |
| 84 | 1.13.2.4.2.1 | MOLDAJE | 7d | 2013-06-15 | 2013-06-22 | 82FS-1d | 6d | 0d | 8 | 0.01d | 3780 |
| 85 | 1.13.2.4.2.2 | ENFIERRADURA | 9d | 2013-06-18 | 2013-06-27 | 84FS-5d | 6d | 0d | 10 | 0.02d | 4860 |
| 86 | 1.13.2.4.2.3 | HORMIGON | 6d | 2013-06-22 | 2013-06-28 | 85FS-5d | 6d | 0d | 7 | 0.01d | 3240 |
| 87 | 1.13.2.5 | **PILARES (+11,18 , +15,65)** | 8d | 2013-06-29 | 2013-07-08 |  | 6d |  | 10 | 0.02d |  |
| 88 | 1.13.2.5.1 | **PILARES** | 8d | 2013-06-29 | 2013-07-08 |  | 6d |  | 10 | 0.02d |  |
| 89 | 1.13.2.5.1.1 | ENFIERRADURA | 5d | 2013-06-29 | 2013-07-04 | 86 | 6d | 0d | 6 | 0.01d | 2700 |
| 90 | 1.13.2.5.1.2 | MOLDAJE | 4d | 2013-07-03 | 2013-07-06 | 89FS-2d | 6d | 0d | 4 | 0.01d | 2160 |
| 91 | 1.13.2.5.1.3 | HORMIGON | 5d | 2013-07-03 | 2013-07-08 | 90FS-4d | 6d | 0d | 6 | 0.01d | 2700 |
| 92 | 1.13.2.6 | **EE.MM** | 30d | 2013-07-10 | 2013-08-13 |  | 6d |  | 35 | 0.06d |  |
| 93 | 1.13.2.6.1 | EE.MM CUBIERTA | 30d | 2013-07-10 | 2013-08-13 | 91FS+1d, 61 | 6d |  | 35 | 0.06d | 16200 |
| 94 | 1.13.3 | **SECTOR B (R7 - R14]** | 116d | 2013-04-19 | 2013-08-31 |  | 0d |  | 135 | 0.25d |  |
| 95 | 1.13.3.1 | EXCAVACION FUNDACIONES | 11d | 2013-04-19 | 2013-05-01 | 38FS+2d, 21, 22, 36 | 0d |  | 13 | 0.02d | 5940 |
| 96 | 1.13.3.2 | **FUNDACIONES** | 18d | 2013-04-26 | 2013-05-16 |  | 4d |  | 21 | 0.04d |  |
| 97 | 1.13.3.2.1 | EMPLANTILLADO | 7d | 2013-04-26 | 2013-05-03 | 95FS-5d | 4d | 0d | 8 | 0.01d | 3780 |
| 98 | 1.13.3.2.2 | ENFIERRADURA | 10d | 2013-05-01 | 2013-05-11 | 97FS-3d | 4d | 0d | 11 | 0.02d | 5400 |
| 99 | 1.13.3.2.3 | HORMIGON | 9d | 2013-05-07 | 2013-05-16 | 98FS-5d | 4d | 0d | 10 | 0.02d | 4860 |
| 100 | 1.13.3.3 | **MURO PERIMETRAL** | 31d | 2013-05-13 | 2013-06-17 |  | 39d |  | 36 | 0.07d |  |
| 101 | 1.13.3.3.1 | ENFIERRADURA | 14d | 2013-05-13 | 2013-05-28 | 99FS-4d, 49 | 39d | 0d | 16 | 0.03d | 7560 |
| 102 | 1.13.3.3.2 | MOLDAJE | 14d | 2013-05-24 | 2013-06-08 | 101FS-4d | 39d | 0d | 16 | 0.03d | 7560 |
| 103 | 1.13.3.3.3 | HORMIGON | 11d | 2013-06-05 | 2013-06-17 | 102FS-4d | 39d | 35d | 13 | 0.02d | 5940 |
| 104 | 1.13.3.4 | **PRIMER PISO (0.0 , +5,62)** | 36d | 2013-05-11 | 2013-06-21 |  | 4d |  | 42 | 0.08d |  |
| 105 | 1.13.3.4.1 | **PILARES** | 15d | 2013-05-11 | 2013-05-28 |  | 4d |  | 18 | 0.03d |  |
| 106 | 1.13.3.4.1.1 | ENFIERRADURA | 11d | 2013-05-11 | 2013-05-23 | 99FS-5d | 4d | 0d | 13 | 0.02d | 5940 |
| 107 | 1.13.3.4.1.2 | MOLDAJE | 8d | 2013-05-18 | 2013-05-27 | 106FS-5d, 69FS+7d | 4d | 0d | 10 | 0.02d | 4320 |
| 108 | 1.13.3.4.1.3 | HORMIGON | 7d | 2013-05-21 | 2013-05-28 | 107FS-6d, 70FS+9d | 4d | 0d | 8 | 0.01d | 3780 |

| ID | WBS | Task | Duration | Start | Finish | Predecessors | Total slack | Free slack | Dias Corridos | ACU | Número2 |
| --- | --- | --- | --- | --- | --- | --- | --- | --- | --- | --- | --- |
| 109 | 1.13.3.4.2 | **RADIER** | 9d | 2013-05-29 | 2013-06-07 |  | 4d |  | 10 | 0.02d |  |
| 110 | 1.13.3.4.2.1 | RELLENOS (Incl. Base Estabilizada) | 6d | 2013-05-29 | 2013-06-04 | 108, 329 | 4d | 0d | 7 | 0.01d | 3240 |
| 111 | 1.13.3.4.2.2 | HORMIGON | 3d | 2013-06-05 | 2013-06-07 | 110 | 4d | 0d | 3 | 0.01d | 1620 |
| 112 | 1.13.3.4.3 | **VIGAS Y LOSAS** | 12d | 2013-06-08 | 2013-06-21 |  | 4d |  | 14 | 0.03d |  |
| 113 | 1.13.3.4.3.1 | MOLDAJE | 8d | 2013-06-08 | 2013-06-17 | 111 | 4d | 0d | 10 | 0.02d | 4320 |
| 114 | 1.13.3.4.3.2 | ENFIERRADURA | 8d | 2013-06-12 | 2013-06-20 | 113FS-5d | 4d | 0d | 9 | 0.02d | 4320 |
| 115 | 1.13.3.4.3.3 | HORMIGON | 6d | 2013-06-15 | 2013-06-21 | 114FS-5d | 4d | 0d | 7 | 0.01d | 3240 |
| 116 | 1.13.3.5 | **SEGUNDO PISO (+5,62 , +11,18)** | 24d | 2013-06-20 | 2013-07-17 |  | 4d |  | 28 | 0.05d |  |
| 117 | 1.13.3.5.1 | **PILARES** | 13d | 2013-06-20 | 2013-07-04 |  | 4d |  | 15 | 0.03d |  |
| 118 | 1.13.3.5.1.1 | ENFIERRADURA | 9d | 2013-06-20 | 2013-06-29 | 115FS-2d | 4d | 0d | 10 | 0.02d | 4860 |
| 119 | 1.13.3.5.1.2 | MOLDAJE | 8d | 2013-06-25 | 2013-07-03 | 118FS-5d | 4d | 0d | 9 | 0.02d | 4320 |
| 120 | 1.13.3.5.1.3 | HORMIGON | 6d | 2013-06-28 | 2013-07-04 | 119FS-5d | 4d | 0d | 7 | 0.01d | 3240 |
| 121 | 1.13.3.5.2 | **VIGAS** | 12d | 2013-07-04 | 2013-07-17 |  | 4d |  | 14 | 0.03d |  |
| 122 | 1.13.3.5.2.1 | MOLDAJE | 7d | 2013-07-04 | 2013-07-11 | 120FS-1d | 4d | 0d | 8 | 0.01d | 3780 |
| 123 | 1.13.3.5.2.2 | ENFIERRADURA | 9d | 2013-07-06 | 2013-07-16 | 122FS-5d | 4d | 0d | 11 | 0.02d | 4860 |
| 124 | 1.13.3.5.2.3 | HORMIGON | 6d | 2013-07-11 | 2013-07-17 | 123FS-5d | 4d | 0d | 7 | 0.01d | 3240 |
| 125 | 1.13.3.6 | **PILARES** | 10d | 2013-07-17 | 2013-07-27 |  | 4d |  | 11 | 0.02d |  |
| 126 | 1.13.3.6.1 | **PILARES** | 10d | 2013-07-17 | 2013-07-27 |  | 4d |  | 11 | 0.02d |  |
| 127 | 1.13.3.6.1.1 | ENFIERRADURA | 6d | 2013-07-17 | 2013-07-23 | 124FS-1d | 4d | 0d | 7 | 0.01d | 3240 |
| 128 | 1.13.3.6.1.2 | MOLDAJE | 5d | 2013-07-20 | 2013-07-25 | 127FS-3d | 4d | 0d | 6 | 0.01d | 2700 |
| 129 | 1.13.3.6.1.3 | HORMIGON | 6d | 2013-07-22 | 2013-07-27 | 128FS-4d | 4d | 0d | 6 | 0.01d | 3240 |
| 130 | 1.13.3.7 | **EE.MM CUBIERTA** | 30d | 2013-07-29 | 2013-08-31 |  | 4d |  | 34 | 0.06d |  |
| 131 | 1.13.3.7.1 | EE.MM CUBIERTA | 30d | 2013-07-29 | 2013-08-31 | 129, 103 | 4d |  | 34 | 0.06d | 16200 |
| 132 | 1.13.4 | **SECTOR A [R1 - R7)** | 118d | 2013-05-01 | 2013-09-14 |  | 0d |  | 137 | 0.25d |  |
| 133 | 1.13.4.1 | EXCAVACION FUNDACIONES | 11d | 2013-05-01 | 2013-05-13 | 95FS-1d, 21, 22, 36 | 0d |  | 13 | 0.02d | 5940 |

| ID | WBS | Task | Duration | Start | Finish | Predecessors | Total slack | Free slack | Dias Corridos | ACU | Número2 |
| --- | --- | --- | --- | --- | --- | --- | --- | --- | --- | --- | --- |
| 134 | 1.13.4.2 | **FUNDACIONES** | 19d | 2013-05-07 | 2013-05-28 |  | 0d |  | 22 | 0.04d |  |
| 135 | 1.13.4.2.1 | EMPLANTILLADO | 8d | 2013-05-07 | 2013-05-15 | 133FS-6d | 0d |  | 9 | 0.02d | 4320 |
| 136 | 1.13.4.2.2 | ENFIERRADURA | 12d | 2013-05-10 | 2013-05-23 | 135FS-5d | 0d |  | 14 | 0.03d | 6480 |
| 137 | 1.13.4.2.3 | HORMIGON | 9d | 2013-05-18 | 2013-05-28 | 136FS-5d | 0d |  | 11 | 0.02d | 4860 |
| 138 | 1.13.4.3 | **MURO PERIMETRAL** | 29d | 2013-05-27 | 2013-06-28 |  | 8d |  | 33 | 0.06d |  |
| 139 | 1.13.4.3.1 | ENFIERRADURA | 12d | 2013-05-27 | 2013-06-08 | 137FS-2d | 8d | 0d | 13 | 0.02d | 6480 |
| 140 | 1.13.4.3.2 | MOLDAJE | 14d | 2013-06-05 | 2013-06-20 | 139FS-4d | 8d | 0d | 16 | 0.03d | 7560 |
| 141 | 1.13.4.3.3 | HORMIGON | 11d | 2013-06-17 | 2013-06-28 | 140FS-4d | 8d | 2d | 12 | 0.02d | 5940 |
| 142 | 1.13.4.4 | **PRIMER PISO (0.0 , +5,62)** | 36d | 2013-05-23 | 2013-07-03 |  | 0d |  | 42 | 0.08d |  |
| 143 | 1.13.4.4.1 | **PILARES** | 15d | 2013-05-23 | 2013-06-08 |  | 0d |  | 17 | 0.03d |  |
| 144 | 1.13.4.4.1.1 | ENFIERRADURA | 11d | 2013-05-23 | 2013-06-04 | 137FS-5d | 0d |  | 13 | 0.02d | 5940 |
| 145 | 1.13.4.4.1.2 | MOLDAJE | 8d | 2013-05-30 | 2013-06-07 | 144FS-5d | 0d |  | 9 | 0.02d | 4320 |
| 146 | 1.13.4.4.1.3 | HORMIGON | 7d | 2013-06-01 | 2013-06-08 | 145FS-6d | 0d |  | 8 | 0.01d | 3780 |
| 147 | 1.13.4.4.2 | **RADIER** | 9d | 2013-06-10 | 2013-06-19 |  | 0d |  | 10 | 0.02d |  |
| 148 | 1.13.4.4.2.1 | RELLENOS (Incl. Base Estabilizada) | 7d | 2013-06-10 | 2013-06-17 | 146, 340FS-1d | 0d |  | 8 | 0.01d | 3780 |
| 149 | 1.13.4.4.2.2 | HORMIGON | 2d | 2013-06-18 | 2013-06-19 | 148 | 0d |  | 2 |  | 1080 |
| 150 | 1.13.4.4.3 | **VIGAS Y LOSAS** | 13d | 2013-06-19 | 2013-07-03 |  | 0d |  | 15 | 0.03d |  |
| 151 | 1.13.4.4.3.1 | MOLDAJE | 8d | 2013-06-19 | 2013-06-27 | 149FS-1d | 0d |  | 9 | 0.02d | 4320 |
| 152 | 1.13.4.4.3.2 | ENFIERRADURA | 9d | 2013-06-22 | 2013-07-02 | 151FS-5d | 0d |  | 11 | 0.02d | 4860 |
| 153 | 1.13.4.4.3.3 | HORMIGON | 6d | 2013-06-27 | 2013-07-03 | 152FS-5d | 0d |  | 7 | 0.01d | 3240 |
| 154 | 1.13.4.5 | **SEGUNDO PISO (+5,62 , +11,18)** | 27d | 2013-07-02 | 2013-08-01 |  | 6d |  | 31 | 0.06d |  |
| 155 | 1.13.4.5.1 | **PILARES** | 13d | 2013-07-02 | 2013-07-16 |  | 6d |  | 15 | 0.03d |  |
| 156 | 1.13.4.5.1.1 | ENFIERRADURA | 9d | 2013-07-02 | 2013-07-11 | 153FS-2d, 141 | 6d | 0d | 10 | 0.02d | 4860 |
| 157 | 1.13.4.5.1.2 | MOLDAJE | 8d | 2013-07-06 | 2013-07-15 | 156FS-5d | 6d | 0d | 10 | 0.02d | 4320 |
| 158 | 1.13.4.5.1.3 | HORMIGON | 6d | 2013-07-10 | 2013-07-16 | 157FS-5d | 6d | 0d | 7 | 0.01d | 3240 |

| ID | WBS | Task | Duration | Start | Finish | Predecessors | Total slack | Free slack | Dias Corridos | ACU | Número2 |
| --- | --- | --- | --- | --- | --- | --- | --- | --- | --- | --- | --- |
| 159 | 1.13.4.5.2 | **VIGAS Y LOSAS (incl. Local de comidas)** | 15d | 2013-07-16 | 2013-08-01 |  | 6d |  | 17 | 0.03d |  |
| 160 | 1.13.4.5.2.1 | MOLDAJE | 7d | 2013-07-16 | 2013-07-23 | 158FS-1d | 6d | 0d | 8 | 0.01d | 3780 |
| 161 | 1.13.4.5.2.2 | ENFIERRADURA | 9d | 2013-07-20 | 2013-07-30 | 160FS-3d | 6d | 0d | 11 | 0.02d | 4860 |
| 162 | 1.13.4.5.2.3 | HORMIGON | 6d | 2013-07-26 | 2013-08-01 | 161FS-4d | 6d | 0d | 7 | 0.01d | 3240 |
| 163 | 1.13.4.6 | **PILARES (+11,18 , +15,65)** | 8d | 2013-08-02 | 2013-08-10 |  | 6d |  | 9 | 0.02d |  |
| 164 | 1.13.4.6.1 | **PILARES** | 8d | 2013-08-02 | 2013-08-10 |  | 6d |  | 9 | 0.02d |  |
| 165 | 1.13.4.6.1.1 | ENFIERRADURA | 5d | 2013-08-02 | 2013-08-07 | 162 | 6d | 0d | 6 | 0.01d | 2700 |
| 166 | 1.13.4.6.1.2 | MOLDAJE | 4d | 2013-08-06 | 2013-08-09 | 165FS-2d | 6d | 0d | 4 | 0.01d | 2160 |
| 167 | 1.13.4.6.1.3 | HORMIGON | 5d | 2013-08-06 | 2013-08-10 | 166FS-4d | 6d | 0d | 5 | 0.01d | 2700 |
| 168 | 1.13.4.7 | **EE.MM** | 30d | 2013-08-12 | 2013-09-14 |  | 6d |  | 34 | 0.06d |  |
| 169 | 1.13.4.7.1 | EE.MM CUBIERTA | 30d | 2013-08-12 | 2013-09-14 | 167, 141 | 6d |  | 34 | 0.06d | 16200 |
| 170 | 1.13.5 | **SECTOR II (EMPALME CENTRO COMERCIAL COSTADO TIENDA RETAIL 2 [1 - R20])** | 96d | 2013-05-14 | 2013-09-02 |  | 4d |  | 112 | 0.21d |  |
| 171 | 1.13.5.1 | EXCAVACION FUNDACIONES | 9d | 2013-05-14 | 2013-05-23 | 95, 133, 21, 22, 36, 25, 26, 27, 28 | 4d | 0d | 10 | 0.02d | 4860 |
| 172 | 1.13.5.2 | **FUNDACIONES** | 12d | 2013-05-21 | 2013-06-03 |  | 4d |  | 14 | 0.03d |  |
| 173 | 1.13.5.2.1 | EMPLANTILLADO | 5d | 2013-05-21 | 2013-05-25 | 171FS-3d | 4d | 0d | 5 | 0.01d | 2700 |
| 174 | 1.13.5.2.2 | ENFIERRADURA | 7d | 2013-05-24 | 2013-05-31 | 173FS-2d | 4d | 0d | 8 | 0.01d | 3780 |
| 175 | 1.13.5.2.3 | HORMIGON | 5d | 2013-05-29 | 2013-06-03 | 174FS-3d | 4d | 0d | 6 | 0.01d | 2700 |
| 176 | 1.13.5.3 | **PRIMER PISO (0.0 , +5,62)** | 27d | 2013-06-03 | 2013-07-03 |  | 4d |  | 31 | 0.06d |  |
| 177 | 1.13.5.3.1 | **PILARES** | 10d | 2013-06-03 | 2013-06-13 |  | 4d |  | 11 | 0.02d |  |
| 178 | 1.13.5.3.1.1 | ENFIERRADURA | 6d | 2013-06-03 | 2013-06-08 | 175FS-1d | 4d | 0d | 6 | 0.01d | 3240 |
| 179 | 1.13.5.3.1.2 | MOLDAJE | 6d | 2013-06-06 | 2013-06-12 | 178FS-3d | 4d | 0d | 7 | 0.01d | 3240 |
| 180 | 1.13.5.3.1.3 | HORMIGON | 4d | 2013-06-10 | 2013-06-13 | 179FS-3d | 4d | 0d | 4 | 0.01d | 2160 |
| 181 | 1.13.5.3.2 | **RADIER** | 7d | 2013-06-14 | 2013-06-21 |  | 4d |  | 8 | 0.01d |  |
| 182 | 1.13.5.3.2.1 | RELLENO (incl. Base Estabilizada) | 5d | 2013-06-14 | 2013-06-19 | 180, 307FS+6d | 4d | 0d | 6 | 0.01d | 2700 |
| 183 | 1.13.5.3.2.2 | HORMIGON | 2d | 2013-06-20 | 2013-06-21 | 182 | 4d | 0d | 2 |  | 1080 |

| ID | WBS | Task | Duration | Start | Finish | Predecessors | Total slack | Free slack | Dias Corridos | ACU | Número2 |
| --- | --- | --- | --- | --- | --- | --- | --- | --- | --- | --- | --- |
| 184 | 1.13.5.3.3 | **VIGAS Y LOSAS** | 11d | 2013-06-21 | 2013-07-03 |  | 4d |  | 13 | 0.02d |  |
| 185 | 1.13.5.3.3.1 | MOLDAJE | 7d | 2013-06-21 | 2013-06-28 | 183FS-1d | 4d | 0d | 8 | 0.01d | 3780 |
| 186 | 1.13.5.3.3.2 | ENFIERRADURA | 6d | 2013-06-26 | 2013-07-02 | 185FS-3d | 4d | 0d | 7 | 0.01d | 3240 |
| 187 | 1.13.5.3.3.3 | HORMIGON | 5d | 2013-06-28 | 2013-07-03 | 186FS-4d | 4d | 0d | 6 | 0.01d | 2700 |
| 188 | 1.13.5.4 | **SEGUNDO PISO (+5,62 , +11,18)** | 19d | 2013-07-04 | 2013-07-25 |  | 4d |  | 22 | 0.04d |  |
| 189 | 1.13.5.4.1 | **PILARES** | 10d | 2013-07-04 | 2013-07-15 |  | 4d |  | 12 | 0.02d |  |
| 190 | 1.13.5.4.1.1 | ENFIERRADURA | 6d | 2013-07-04 | 2013-07-10 | 187 | 4d | 0d | 7 | 0.01d | 3240 |
| 191 | 1.13.5.4.1.2 | MOLDAJE | 7d | 2013-07-06 | 2013-07-13 | 190FS-4d | 4d | 0d | 8 | 0.01d | 3780 |
| 192 | 1.13.5.4.1.3 | HORMIGON | 5d | 2013-07-10 | 2013-07-15 | 191FS-4d | 4d | 0d | 6 | 0.01d | 2700 |
| 193 | 1.13.5.4.2 | **VIGAS** | 10d | 2013-07-15 | 2013-07-25 |  | 4d |  | 11 | 0.02d |  |
| 194 | 1.13.5.4.2.1 | MOLDAJE | 6d | 2013-07-15 | 2013-07-20 | 192FS-1d | 4d | 0d | 6 | 0.01d | 3240 |
| 195 | 1.13.5.4.2.2 | ENFIERRADURA | 6d | 2013-07-18 | 2013-07-24 | 194FS-3d | 4d | 0d | 7 | 0.01d | 3240 |
| 196 | 1.13.5.4.2.3 | HORMIGON | 4d | 2013-07-22 | 2013-07-25 | 195FS-3d | 4d | 0d | 4 | 0.01d | 2160 |
| 197 | 1.13.5.5 | **PILARES (+11,18 , +15,65)** | 8d | 2013-07-26 | 2013-08-03 |  | 4d |  | 9 | 0.02d |  |
| 198 | 1.13.5.5.1 | **PILARES** | 8d | 2013-07-26 | 2013-08-03 |  | 4d |  | 9 | 0.02d |  |
| 199 | 1.13.5.5.1.1 | ENFIERRADURA | 5d | 2013-07-26 | 2013-07-31 | 196 | 4d | 0d | 6 | 0.01d | 2700 |
| 200 | 1.13.5.5.1.2 | MOLDAJE | 4d | 2013-07-30 | 2013-08-02 | 199FS-2d | 4d | 0d | 4 | 0.01d | 2160 |
| 201 | 1.13.5.5.1.3 | HORMIGON | 4d | 2013-07-31 | 2013-08-03 | 200FS-3d | 4d | 0d | 4 | 0.01d | 2160 |
| 202 | 1.13.5.6 | **EE.MM** | 25d | 2013-08-05 | 2013-09-02 |  | 4d |  | 29 | 0.05d |  |
| 203 | 1.13.5.6.1 | EE.MM CUBIERTA | 25d | 2013-08-05 | 2013-09-02 | 201 | 4d |  | 29 | 0.05d | 13500 |
| 204 | 1.13.6 | **SECTOR I (EMPALME CENTRO COMERCIAL COSTADO TIENDA RETAIL 1 [R1'-R0'])** | 120d | 2013-04-30 | 2013-09-16 |  | 0d |  | 140 | 0.26d |  |
| 205 | 1.13.6.1 | EXCAVACION FUNDACIONES | 23d | 2013-04-30 | 2013-05-25 | 21, 22, 36, 133FS-12d, 34FF+6d | 0d |  | 26 | 0.05d | 12420 |
| 206 | 1.13.6.2 | **FUNDACIONES** | 37d | 2013-05-06 | 2013-06-17 |  | 0d |  | 43 | 0.08d |  |
| 207 | 1.13.6.2.1 | EMPLANTILLADO | 20d | 2013-05-06 | 2013-05-28 | 205FS-18d | 0d |  | 23 | 0.04d | 10800 |
| 208 | 1.13.6.2.2 | ENFIERRADURA | 22d | 2013-05-09 | 2013-06-03 | 207FS-17d | 0d |  | 26 | 0.05d | 11880 |
| 209 | 1.13.6.2.3 | HORMIGON | 27d | 2013-05-17 | 2013-06-17 | 208FS-15d | 0d |  | 32 | 0.06d | 14580 |

| ID | WBS | Task | Duration | Start | Finish | Predecessors | Total slack | Dias Corridos | ACU | Número2 |
| --- | --- | --- | --- | --- | --- | --- | --- | --- | --- | --- |
| 210 | 1.13.6.3 | **PRIMER PISO (0.0 , +5,62)** | 44d | 2013-05-31 | 2013-07-20 |  | 0d | 51 | 0.09d |  |
| 211 | 1.13.6.3.1 | **PILARES** | 24d | 2013-05-31 | 2013-06-27 |  | 0d | 28 | 0.05d |  |
| 212 | 1.13.6.3.1.1 | ENFIERRADURA | 20d | 2013-05-31 | 2013-06-22 | 209FS-15d | 0d | 23 | 0.04d | 10800 |
| 213 | 1.13.6.3.1.2 | MOLDAJE | 18d | 2013-06-06 | 2013-06-26 | 212FS-15d | 0d | 21 | 0.04d | 9720 |
| 214 | 1.13.6.3.1.3 | HORMIGON | 4d | 2013-06-24 | 2013-06-27 | 213FS-3d | 0d | 4 | 0.01d | 2160 |
| 215 | 1.13.6.3.2 | **RADIER** | 8d | 2013-06-29 | 2013-07-08 |  | 0d | 10 | 0.02d |  |
| 216 | 1.13.6.3.2.1 | RELLENOS (Incl. Base Estabilizada) | 5d | 2013-06-29 | 2013-07-04 | 214FS+1d, 351FS-1d | 0d | 6 | 0.01d | 2700 |
| 217 | 1.13.6.3.2.2 | HORMIGON | 3d | 2013-07-05 | 2013-07-08 | 216 | 0d | 4 | 0.01d | 1620 |
| 218 | 1.13.6.3.3 | **VIGAS Y LOSAS** | 11d | 2013-07-09 | 2013-07-20 |  | 0d | 12 | 0.02d |  |
| 219 | 1.13.6.3.3.1 | MOLDAJE | 6d | 2013-07-09 | 2013-07-15 | 217 | 0d | 7 | 0.01d | 3240 |
| 220 | 1.13.6.3.3.2 | ENFIERRADURA | 5d | 2013-07-15 | 2013-07-19 | 219FS-1d | 0d | 5 | 0.01d | 2700 |
| 221 | 1.13.6.3.3.3 | HORMIGON | 2d | 2013-07-19 | 2013-07-20 | 220FS-1d | 0d | 2 |  | 1080 |
| 222 | 1.13.6.4 | **SEGUNDO PISO (+5,62 , +11,18)** | 20d | 2013-07-22 | 2013-08-13 |  | 0d | 23 | 0.04d |  |
| 223 | 1.13.6.4.1 | **PILARES** | 9d | 2013-07-22 | 2013-07-31 |  | 0d | 10 | 0.02d |  |
| 224 | 1.13.6.4.1.1 | ENFIERRADURA | 5d | 2013-07-22 | 2013-07-26 | 221 | 0d | 5 | 0.01d | 2700 |
| 225 | 1.13.6.4.1.2 | MOLDAJE | 6d | 2013-07-24 | 2013-07-30 | 224FS-3d | 0d | 7 | 0.01d | 3240 |
| 226 | 1.13.6.4.1.3 | HORMIGON | 4d | 2013-07-27 | 2013-07-31 | 225FS-3d | 0d | 5 | 0.01d | 2160 |
| 227 | 1.13.6.4.2 | **VIGAS Y LOSAS** | 12d | 2013-07-31 | 2013-08-13 |  | 0d | 14 | 0.03d |  |
| 228 | 1.13.6.4.2.1 | MOLDAJE | 6d | 2013-07-31 | 2013-08-06 | 226FS-1d | 0d | 7 | 0.01d | 3240 |
| 229 | 1.13.6.4.2.2 | ENFIERRADURA | 5d | 2013-08-03 | 2013-08-08 | 228FS-3d | 0d | 6 | 0.01d | 2700 |
| 230 | 1.13.6.4.2.3 | HORMIGON | 6d | 2013-08-07 | 2013-08-13 | 229FS-2d | 0d | 7 | 0.01d | 3240 |
| 231 | 1.13.6.5 | **PILARES (+11,18 , +15,65)** | 8d | 2013-08-10 | 2013-08-19 |  | 0d | 10 | 0.02d |  |
| 232 | 1.13.6.5.1 | **PILARES** | 8d | 2013-08-10 | 2013-08-19 |  | 0d | 10 | 0.02d |  |
| 233 | 1.13.6.5.1.1 | ENFIERRADURA | 6d | 2013-08-10 | 2013-08-16 | 230FS-3d | 0d | 7 | 0.01d | 3240 |
| 234 | 1.13.6.5.1.2 | MOLDAJE | 5d | 2013-08-13 | 2013-08-17 | 233FS-4d | 0d | 5 | 0.01d | 2700 |
| 235 | 1.13.6.5.1.3 | HORMIGON | 4d | 2013-08-15 | 2013-08-19 | 234FS-3d | 0d | 5 | 0.01d | 2160 |

| ID | WBS | Task | Duration | Start | Finish | Predecessors | Total slack | Free slack | Dias Corridos | ACU | Número2 |
| --- | --- | --- | --- | --- | --- | --- | --- | --- | --- | --- | --- |
| 236 | 1.13.6.6 | **EE.MM** | 24d | 2013-08-20 | 2013-09-16 |  | 0d |  | 28 | 0.05d |  |
| 237 | 1.13.6.6.1 | EE.MM CUBIERTA | 24d | 2013-08-20 | 2013-09-16 | 235 | 0d |  | 28 | 0.05d | 12960 |
| 238 | 1.13.7 | **CUBIERTAS Y LUCARNAS VIDRIADAS** | 30d | 2013-08-26 | 2013-09-28 |  | 0d |  | 34 | 0.06d |  |
| 239 | 1.13.7.1 | CUBIERTAS | 30d | 2013-08-26 | 2013-09-28 | 93FS+4d, 131FS-10d, 237FS-19d, 169FS-24d, 203FS-11d | 0d |  | 34 | 0.06d | 16200 |
| 240 | 1.13.7.2 | LUCARNAS VIDRIADAS | 30d | 2013-08-26 | 2013-09-28 | 93FS+4d, 131FS-10d, 237FS-19d, 169FS-24d, 203FS-11d, 239FF, 249 | 0d |  | 34 | 0.06d | 16200 |
| 241 | 1.14 | **REFUERZO ACTUAL EDIFICIO CENTRO MEDICO** | 129d | 2013-03-21 | 2013-08-17 |  | 6d |  | 150 | 0.28d |  |
| 242 | 1.14.1 | **SECTOR III:** | 129d | 2013-03-21 | 2013-08-17 |  | 6d |  | 150 | 0.28d |  |
| 243 | 1.14.1.1 | DEMOLICION LOCAL EXISTENTE COSTADO LOCAL 1 | 10d | 2013-03-21 | 2013-04-01 | 26FS+14d | 60d | 0d | 12 | 0.02d | 5400 |
| 244 | 1.14.1.2 | PUNTEREO FACHADA | 8d | 2013-04-02 | 2013-04-10 | 243 | 60d | 0d | 9 | 0.02d | 4320 |
| 245 | 1.14.1.3 | INYECCIÓN DOWELS | 8d | 2013-04-11 | 2013-04-19 | 244 | 60d | 0d | 9 | 0.02d | 4320 |
| 246 | 1.14.1.4 | REFUERZO FUNDACIONES | 22d | 2013-04-20 | 2013-05-15 | 245 | 60d | 0d | 26 | 0.05d | 11880 |
| 247 | 1.14.1.5 | REFUERZO MUROS (AUMENTO ESPESOR) | 12d | 2013-05-16 | 2013-05-29 | 246 | 60d | 54d | 14 | 0.03d | 6480 |
| 248 | 1.14.1.6 | REFUERZO FIBRA DE CARBONO (LOCAL 1) | 20d | 2013-04-13 | 2013-05-06 | 24FS+5d | 80d | 74d | 24 | 0.04d | 10800 |
| 249 | 1.14.1.7 | CORTE DE VANOS (LOCAL 1) | 15d | 2013-08-01 | 2013-08-17 | 248, 20FS-25d, 247 | 6d |  | 17 | 0.03d | 8100 |
| 250 | 1.15 | **EDIFICIO CENTRO MÉDICO** | 144d | 2013-04-08 | 2013-09-21 |  | 5d |  | 167 | 0.31d |  |
| 251 | 1.15.1 | **SECTOR III** | 144d | 2013-04-08 | 2013-09-21 |  | 5d |  | 167 | 0.31d |  |
| 252 | 1.15.1.1 | **DEMOLICIONES** | 14d | 2013-04-08 | 2013-04-23 |  | 5d |  | 16 | 0.03d |  |
| 253 | 1.15.1.1.1 | CIERRES Y RETIRO INST. EXISTENTES | 14d | 2013-04-08 | 2013-04-23 | 21FS+35d, 24 | 5d | 0d | 16 | 0.03d | 7560 |
| 254 | 1.15.1.2 | **EXCAVACIONES** | 32d | 2013-04-22 | 2013-05-28 |  | 5d |  | 37 | 0.07d |  |
| 255 | 1.15.1.2.1 | EXCAVACIONES | 15d | 2013-04-22 | 2013-05-08 | 253FS-2d | 5d | 0d | 17 | 0.03d | 8100 |
| 256 | 1.15.1.2.2 | **FUNDACIONES** | 25d | 2013-04-30 | 2013-05-28 |  | 5d |  | 29 | 0.05d |  |
| 257 | 1.15.1.2.2.1 | EMPLANTILLADO | 11d | 2013-04-30 | 2013-05-11 | 255FS-8d | 5d | 0d | 12 | 0.02d | 5940 |
| 258 | 1.15.1.2.2.2 | ENFIERRADURA | 15d | 2013-05-04 | 2013-05-21 | 257FS-7d | 5d | 0d | 18 | 0.03d | 8100 |
| 259 | 1.15.1.2.2.3 | HORMIGON | 13d | 2013-05-14 | 2013-05-28 | 258FS-7d | 5d | 0d | 15 | 0.03d | 7020 |

| ID | WBS | Task | Duration | Start | Finish | Predecessors | Total slack | Free slack | Dias Corridos | ACU | Número2 |
| --- | --- | --- | --- | --- | --- | --- | --- | --- | --- | --- | --- |
| 260 | 1.15.1.3 | **PRIMER PISO** | 34d | 2013-05-24 | 2013-07-02 |  | 5d |  | 40 | 0.07d |  |
| 261 | 1.15.1.3.1 | **PILARES** | 15d | 2013-05-24 | 2013-06-10 |  | 5d |  | 18 | 0.03d |  |
| 262 | 1.15.1.3.1.1 | ENFIERRADURA | 10d | 2013-05-24 | 2013-06-04 | 259FS-4d | 5d | 0d | 12 | 0.02d | 5400 |
| 263 | 1.15.1.3.1.2 | MOLDAJE | 8d | 2013-05-30 | 2013-06-07 | 262FS-5d | 5d | 0d | 9 | 0.02d | 4320 |
| 264 | 1.15.1.3.1.3 | HORMIGÓN | 6d | 2013-06-04 | 2013-06-10 | 263FS-4d | 5d | 0d | 7 | 0.01d | 3240 |
| 265 | 1.15.1.3.2 | **LOSA Y VIGAS** | 20d | 2013-06-10 | 2013-07-02 |  | 5d |  | 23 | 0.04d |  |
| 266 | 1.15.1.3.2.1 | MOLDAJE | 10d | 2013-06-10 | 2013-06-20 | 264FS-1d | 5d | 0d | 11 | 0.02d | 5400 |
| 267 | 1.15.1.3.2.2 | ENFIERRADURA | 9d | 2013-06-18 | 2013-06-27 | 266FS-3d | 5d | 0d | 10 | 0.02d | 4860 |
| 268 | 1.15.1.3.2.3 | HORMIGON | 6d | 2013-06-26 | 2013-07-02 | 267FS-2d | 5d | 0d | 7 | 0.01d | 3240 |
| 269 | 1.15.1.4 | **SEGUNDO PISO** | 29d | 2013-07-02 | 2013-08-03 |  | 5d |  | 33 | 0.06d |  |
| 270 | 1.15.1.4.1 | **PILARES** | 13d | 2013-07-02 | 2013-07-16 |  | 5d |  | 15 | 0.03d |  |
| 271 | 1.15.1.4.1.1 | ENFIERRADURA | 7d | 2013-07-02 | 2013-07-09 | 268FS-1d | 5d | 0d | 8 | 0.01d | 3780 |
| 272 | 1.15.1.4.1.2 | MOLDAJE | 7d | 2013-07-06 | 2013-07-13 | 271FS-3d | 5d | 0d | 8 | 0.01d | 3780 |
| 273 | 1.15.1.4.1.3 | HORMIGON | 6d | 2013-07-10 | 2013-07-16 | 272FS-4d | 5d | 0d | 7 | 0.01d | 3240 |
| 274 | 1.15.1.4.2 | **LOSA Y VIGAS** | 16d | 2013-07-17 | 2013-08-03 |  | 5d |  | 18 | 0.03d |  |
| 275 | 1.15.1.4.2.1 | MOLDAJE | 8d | 2013-07-17 | 2013-07-25 | 273 | 5d | 0d | 9 | 0.02d | 4320 |
| 276 | 1.15.1.4.2.2 | ENFIERRADURA | 8d | 2013-07-23 | 2013-07-31 | 275FS-3d | 5d | 0d | 9 | 0.02d | 4320 |
| 277 | 1.15.1.4.2.3 | HORMIGON | 6d | 2013-07-29 | 2013-08-03 | 276FS-3d | 5d | 0d | 6 | 0.01d | 3240 |
| 278 | 1.15.1.5 | **TERCER PISO** | 22d | 2013-08-03 | 2013-08-28 |  | 5d |  | 26 | 0.05d |  |
| 279 | 1.15.1.5.1 | **PILARES** | 11d | 2013-08-03 | 2013-08-15 |  | 5d |  | 13 | 0.02d |  |
| 280 | 1.15.1.5.1.1 | ENFIERRADURA | 6d | 2013-08-03 | 2013-08-09 | 277FS-1d | 5d | 0d | 7 | 0.01d | 3240 |
| 281 | 1.15.1.5.1.2 | MOLDAJE | 6d | 2013-08-07 | 2013-08-13 | 280FS-3d | 5d | 0d | 7 | 0.01d | 3240 |
| 282 | 1.15.1.5.1.3 | HORMIGON | 5d | 2013-08-10 | 2013-08-15 | 281FS-3d | 5d | 0d | 6 | 0.01d | 2700 |
| 283 | 1.15.1.5.2 | **LOSA Y VIGAS** | 12d | 2013-08-15 | 2013-08-28 |  | 5d |  | 14 | 0.03d |  |
| 284 | 1.15.1.5.2.1 | MOLDAJE | 6d | 2013-08-15 | 2013-08-21 | 282FS-1d | 5d | 0d | 7 | 0.01d | 3240 |
| 285 | 1.15.1.5.2.2 | ENFIERRADURA | 6d | 2013-08-19 | 2013-08-24 | 284FS-3d | 5d | 0d | 6 | 0.01d | 3240 |
| 286 | 1.15.1.5.2.3 | HORMIGON | 5d | 2013-08-23 | 2013-08-28 | 285FS-2d, 20FF-2d | 5d | 0d | 6 | 0.01d | 2700 |

| ID | WBS | Task | Duration | Start | Finish | Predecessors | Total slack | Free slack | Dias Corridos | ACU | Número2 |
| --- | --- | --- | --- | --- | --- | --- | --- | --- | --- | --- | --- |
| 287 | 1.15.1.6 | **CUARTO PISO** | 22d | 2013-08-28 | 2013-09-21 |  | 5d |  | 25 | 0.05d |  |
| 288 | 1.15.1.6.1 | **PILARES** | 11d | 2013-08-28 | 2013-09-09 |  | 5d |  | 13 | 0.02d |  |
| 289 | 1.15.1.6.1.1 | ENFIERRADURA | 6d | 2013-08-28 | 2013-09-03 | 286FS-1d | 5d | 0d | 7 | 0.01d | 3240 |
| 290 | 1.15.1.6.1.2 | MOLDAJE | 6d | 2013-08-31 | 2013-09-06 | 289FS-3d | 5d | 0d | 7 | 0.01d | 3240 |
| 291 | 1.15.1.6.1.3 | HORMIGON | 5d | 2013-09-04 | 2013-09-09 | 290FS-3d | 5d | 0d | 6 | 0.01d | 2700 |
| 292 | 1.15.1.6.2 | **LOSA Y VIGAS** | 12d | 2013-09-09 | 2013-09-21 |  | 5d |  | 13 | 0.02d |  |
| 293 | 1.15.1.6.2.1 | MOLDAJE | 6d | 2013-09-09 | 2013-09-14 | 291FS-1d | 5d | 0d | 6 | 0.01d | 3240 |
| 294 | 1.15.1.6.2.2 | ENFIERRADURA | 6d | 2013-09-12 | 2013-09-18 | 293FS-3d | 5d | 0d | 7 | 0.01d | 3240 |
| 295 | 1.15.1.6.2.3 | HORMIGON | 5d | 2013-09-17 | 2013-09-21 | 294FS-2d, 358 | 5d |  | 5 | 0.01d | 2700 |
| 296 | 1.16 | **TUNEL TÉCNICO SUBTERRANEO** | 74d | 2013-04-04 | 2013-06-28 |  | 0d |  | 86 | 0.16d |  |
| 297 | 1.16.1 | **SECTOR II (EMPALME MALL COSTADO RETAIL 2 [1-R20])** | 40d | 2013-04-22 | 2013-06-06 |  | 4d |  | 46 | 0.09d |  |
| 298 | 1.16.1.1 | EXCAVACIÓN | 23d | 2013-04-22 | 2013-05-17 | 33FS+29d, 25, 26, 27, 28 | 4d | 0d | 26 | 0.05d | 12420 |
| 299 | 1.16.1.2 | RADIER | 9d | 2013-05-10 | 2013-05-20 | 298FS-7d | 4d | 0d | 11 | 0.02d | 4860 |
| 300 | 1.16.1.3 | **MUROS** | 13d | 2013-05-15 | 2013-05-29 |  | 4d |  | 15 | 0.03d |  |
| 301 | 1.16.1.3.1 | ENFIERRADURA | 8d | 2013-05-15 | 2013-05-23 | 299FS-5d | 4d | 0d | 9 | 0.02d | 4320 |
| 302 | 1.16.1.3.2 | MOLDAJE | 8d | 2013-05-18 | 2013-05-27 | 301FS-5d | 4d | 0d | 10 | 0.02d | 4320 |
| 303 | 1.16.1.3.3 | HORMIGÓN | 6d | 2013-05-23 | 2013-05-29 | 302FS-4d | 4d | 0d | 7 | 0.01d | 3240 |
| 304 | 1.16.1.4 | **LOSA** | 8d | 2013-05-29 | 2013-06-06 |  | 4d |  | 9 | 0.02d |  |
| 305 | 1.16.1.4.1 | MOLDAJE | 5d | 2013-05-29 | 2013-06-03 | 303FS-1d | 4d | 0d | 6 | 0.01d | 2700 |
| 306 | 1.16.1.4.2 | ENFIERRADURA | 6d | 2013-05-30 | 2013-06-05 | 305FS-4d | 4d | 0d | 7 | 0.01d | 3240 |
| 307 | 1.16.1.4.3 | HORMIGÓN | 5d | 2013-06-01 | 2013-06-06 | 306FS-4d | 4d | 0d | 6 | 0.01d | 2700 |
| 308 | 1.16.2 | **SECTOR C (R14 -R19]** | 30d | 2013-04-04 | 2013-05-08 |  | 0d |  | 35 | 0.06d |  |
| 309 | 1.16.2.1 | EXCAVACIÓN | 13d | 2013-04-04 | 2013-04-18 | 33FS+14d, 22FS+21d | 0d |  | 15 | 0.03d | 7020 |
| 310 | 1.16.2.2 | RADIER | 9d | 2013-04-12 | 2013-04-22 | 309FS-6d | 0d |  | 11 | 0.02d | 4860 |

| ID | WBS | Task | Duration | Start | Finish | Predecessors | Total slack | Dias Corridos | ACU | Número2 |
| --- | --- | --- | --- | --- | --- | --- | --- | --- | --- | --- |
| 311 | 1.16.2.3 | **MUROS** | 11d | 2013-04-18 | 2013-04-30 |  | 0d | 13 | 0.02d |  |
| 312 | 1.16.2.3.1 | ENFIERRADURA | 6d | 2013-04-18 | 2013-04-24 | 310FS-4d | 0d | 7 | 0.01d | 3240 |
| 313 | 1.16.2.3.2 | MOLDAJE | 5d | 2013-04-23 | 2013-04-27 | 312FS-2d | 0d | 5 | 0.01d | 2700 |
| 314 | 1.16.2.3.3 | HORMIGÓN | 4d | 2013-04-26 | 2013-04-30 | 313FS-2d | 0d | 5 | 0.01d | 2160 |
| 315 | 1.16.2.4 | **LOSA** | 7d | 2013-05-01 | 2013-05-08 |  | 0d | 8 | 0.01d |  |
| 316 | 1.16.2.4.1 | MOLDAJE | 4d | 2013-05-01 | 2013-05-04 | 314 | 0d | 4 | 0.01d | 2160 |
| 317 | 1.16.2.4.2 | ENFIERRADURA | 4d | 2013-05-03 | 2013-05-07 | 316FS-2d | 0d | 5 | 0.01d | 2160 |
| 318 | 1.16.2.4.3 | HORMIGÓN | 2d | 2013-05-07 | 2013-05-08 | 317FS-1d | 0d | 2 |  | 1080 |
| 319 | 1.16.3 | **SECTOR B (R7 -R14]** | 33d | 2013-04-19 | 2013-05-27 |  | 0d | 39 | 0.07d |  |
| 320 | 1.16.3.1 | EXCAVACIÓN | 17d | 2013-04-19 | 2013-05-08 | 318FS-17d, 309 | 0d | 20 | 0.04d | 9180 |
| 321 | 1.16.3.2 | RADIER | 10d | 2013-04-30 | 2013-05-10 | 320FS-8d | 0d | 11 | 0.02d | 5400 |
| 322 | 1.16.3.3 | **MUROS** | 10d | 2013-05-08 | 2013-05-18 |  | 0d | 11 | 0.02d |  |
| 323 | 1.16.3.3.1 | ENFIERRADURA | 5d | 2013-05-08 | 2013-05-13 | 321FS-3d | 0d | 6 | 0.01d | 2700 |
| 324 | 1.16.3.3.2 | MOLDAJE | 6d | 2013-05-10 | 2013-05-16 | 323FS-3d | 0d | 7 | 0.01d | 3240 |
| 325 | 1.16.3.3.3 | HORMIGÓN | 4d | 2013-05-15 | 2013-05-18 | 324FS-2d | 0d | 4 | 0.01d | 2160 |
| 326 | 1.16.3.4 | **LOSA** | 8d | 2013-05-18 | 2013-05-27 |  | 0d | 10 | 0.02d |  |
| 327 | 1.16.3.4.1 | MOLDAJE | 5d | 2013-05-18 | 2013-05-23 | 325FS-1d | 0d | 6 | 0.01d | 2700 |
| 328 | 1.16.3.4.2 | ENFIERRADURA | 4d | 2013-05-22 | 2013-05-25 | 327FS-2d | 0d | 4 | 0.01d | 2160 |
| 329 | 1.16.3.4.3 | HORMIGÓN | 3d | 2013-05-24 | 2013-05-27 | 328FS-2d | 0d | 4 | 0.01d | 1620 |
| 330 | 1.16.4 | **SECTOR A [R1 -R7)** | 28d | 2013-05-09 | 2013-06-10 |  | 0d | 33 | 0.06d |  |
| 331 | 1.16.4.1 | EXCAVACIÓN | 12d | 2013-05-09 | 2013-05-22 | 320, 329FS-16d | 0d | 14 | 0.03d | 6480 |
| 332 | 1.16.4.2 | RADIER | 10d | 2013-05-14 | 2013-05-24 | 331FS-8d | 0d | 11 | 0.02d | 5400 |
| 333 | 1.16.4.3 | **MUROS** | 11d | 2013-05-21 | 2013-06-01 |  | 0d | 12 | 0.02d |  |
| 334 | 1.16.4.3.1 | ENFIERRADURA | 6d | 2013-05-21 | 2013-05-27 | 332FS-4d | 0d | 7 | 0.01d | 3240 |
| 335 | 1.16.4.3.2 | MOLDAJE | 6d | 2013-05-24 | 2013-05-30 | 334FS-3d | 0d | 7 | 0.01d | 3240 |
| 336 | 1.16.4.3.3 | HORMIGÓN | 4d | 2013-05-29 | 2013-06-01 | 335FS-2d | 0d | 4 | 0.01d | 2160 |

| ID | WBS | Task | Duration | Start | Finish | Predecessors | Total slack | Free slack | Dias Corridos | ACU | Número2 |
| --- | --- | --- | --- | --- | --- | --- | --- | --- | --- | --- | --- |
| 337 | 1.16.4.4 | **LOSA** | 8d | 2013-06-01 | 2013-06-10 |  | 0d |  | 10 | 0.02d |  |
| 338 | 1.16.4.4.1 | MOLDAJE | 5d | 2013-06-01 | 2013-06-06 | 336FS-1d | 0d |  | 6 | 0.01d | 2700 |
| 339 | 1.16.4.4.2 | ENFIERRADURA | 4d | 2013-06-05 | 2013-06-08 | 338FS-2d | 0d |  | 4 | 0.01d | 2160 |
| 340 | 1.16.4.4.3 | HORMIGÓN | 3d | 2013-06-07 | 2013-06-10 | 339FS-2d | 0d |  | 4 | 0.01d | 1620 |
| 341 | 1.16.5 | **SECTOR I (EMPALME MALL COSTADO RETAIL 1 [R1' -R0'))** | 57d | 2013-04-24 | 2013-06-28 |  | 1d |  | 66 | 0.12d |  |
| 342 | 1.16.5.1 | EXCAVACIÓN | 18d | 2013-04-24 | 2013-05-14 | 33FS+31d, 29FS+21d | 1d | 0d | 21 | 0.04d | 9720 |
| 343 | 1.16.5.2 | RADIER | 11d | 2013-05-07 | 2013-05-18 | 342FS-7d | 1d | 0d | 12 | 0.02d | 5940 |
| 344 | 1.16.5.3 | **MUROS** | 21d | 2013-05-16 | 2013-06-08 |  | 1d |  | 24 | 0.04d |  |
| 345 | 1.16.5.3.1 | ENFIERRADURA | 11d | 2013-05-16 | 2013-05-28 | 343FS-3d | 1d | 0d | 13 | 0.02d | 5940 |
| 346 | 1.16.5.3.2 | MOLDAJE | 11d | 2013-05-25 | 2013-06-06 | 345FS-3d | 1d | 0d | 13 | 0.02d | 5940 |
| 347 | 1.16.5.3.3 | HORMIGÓN | 7d | 2013-06-01 | 2013-06-08 | 346FS-5d | 1d | 0d | 8 | 0.01d | 3780 |
| 348 | 1.16.5.4 | **LOSA** | 18d | 2013-06-08 | 2013-06-28 |  | 1d |  | 21 | 0.04d |  |
| 349 | 1.16.5.4.1 | MOLDAJE | 10d | 2013-06-08 | 2013-06-19 | 347FS-1d | 1d | 0d | 12 | 0.02d | 5400 |
| 350 | 1.16.5.4.2 | ENFIERRADURA | 10d | 2013-06-17 | 2013-06-27 | 349FS-3d | 1d | 0d | 11 | 0.02d | 5400 |
| 351 | 1.16.5.4.3 | HORMIGÓN | 4d | 2013-06-25 | 2013-06-28 | 350FS-3d | 1d |  | 4 | 0.01d | 2160 |
| 352 | 1.17 | **O.GRUESA REMODELACIÓN EX. TIENDA RETAIL 1** | 100d | 2013-05-01 | 2013-08-24 |  | 24d |  | 116 | 0.21d |  |
| 353 | 1.17.1 | **SECTOR I** | 100d | 2013-05-01 | 2013-08-24 |  | 24d |  | 116 | 0.21d |  |
| 354 | 1.17.1.1 | CIERRE PERIMETRAL | 7d | 2013-05-01 | 2013-05-08 | 21, 30 | 24d | 0d | 8 | 0.01d | 3780 |
| 355 | 1.17.1.2 | DEMOLICIÓN LOSA | 22d | 2013-05-09 | 2013-06-03 | 354 | 24d | 0d | 26 | 0.05d | 11880 |
| 356 | 1.17.1.3 | MONTAJE DE VIGAS | 22d | 2013-06-04 | 2013-06-28 | 355 | 24d | 0d | 25 | 0.05d | 11880 |
| 357 | 1.17.1.4 | DESMONTAJE DE VIGAS EXISTENTES | 26d | 2013-06-29 | 2013-07-29 | 356 | 24d | 0d | 31 | 0.06d | 14040 |
| 358 | 1.17.1.5 | REFUERZO DE VIGAS EXISTENTES | 23d | 2013-07-30 | 2013-08-24 | 357 | 24d | 19d | 26 | 0.05d | 12420 |
| 359 | 1.18 | INSTALACIONES EDIFICIO PRINCIPAL | 210d | 2013-04-01 | 2013-11-30 | 21FS+29d, 240FF-50d, 239FF+50d | 0d |  | 244 | 0.45d | 113400 |
| 360 | 1.19 | TERMINACIONES EDIFICIO PRINCIPAL | 132d | 2013-07-01 | 2013-11-30 | 153FS-3d, 240FF+54d, 239FF+54d, 295FF+55d | 0d |  | 153 | 0.28d | 71280 |
