# Proyecto SLL 2015

Schedule from MS Project XML, 2014-11-20 to 2015-04-07, A marks actual dates.

## Calendars

- Estándar: Mon-Fri 09:00-13:00, 15:00-19:00; Sat-Sun off. Exceptions (off unless hours are given): 2014-12-08 (Inmaculada concepcion), 2014-12-25 (Navidad), 2014-12-26, 2015-01-01 (Año nuevo), 2015-01-02, 2015-04-03.

## Resources

| Resource |
| --- |
| JC |
| OL |
| M. Basulto |
| OLobos |
| Juan Cid |
| Orlando Lobos |
| R.Clavijo |
| G. Castillo |
| G.Castillo |

## Schedule

| ID | WBS | Task | Type | Duration | Start | Finish | Predecessors | Complete | Remaining | Total slack | Free slack | Constraint | Resources | Work | Actual work |
| --- | --- | --- | --- | --- | --- | --- | --- | --- | --- | --- | --- | --- | --- | --- | --- |
| 1 | 1 | **Desarrollos Etapa I** |  | 35d | 2014-11-24 A | 2015-01-16 |  | 16% | 29.43d | 51d | 0d |  |  | 408h | 56h |
| 2 | 1.1 | Inicio desarrollos Etapa I | milestone | 0d | 2014-11-24 A | 2014-11-24 A |  | 100% |  |  |  | start no earlier than 2014-11-24 |  |  |  |
| 3 | 1.2 | **Desarrollos EMDITEC** |  | 17d | 2014-11-24 A | 2014-12-17 |  | 37% | 10.74d | 23d | 0d |  |  | 152h | 56h |
| 4 | 1.2.1 | **Agregar Mensaje PopUP en campo en la planilla del Cliente en la toma de Pedido** |  | 1d | 2014-11-24 A | 2014-11-24 A |  | 100% |  |  |  |  | Juan Cid | 8h | 8h |
| 5 | 1.2.1.1 | modificación en la toma de pedidos que quede permanente el mensaje |  | 1d | 2014-11-24 A | 2014-11-24 A | 2 | 100% |  |  |  |  |  |  |  |
| 6 | 1.2.2 | **Generación obligatoria de pedido frustrado en SLL al entrar una llamada por CTI y no ingresar pedido** |  | 3d | 2014-11-25 A | 2014-11-27 |  | 83% | 0.5d | 36d |  |  | Juan Cid | 24h | 20h |
| 7 | 1.2.2.1 | Base datos tablas y procedimiento que registre el log |  | 2d | 2014-11-25 A | 2014-11-26 A | 4 | 100% |  |  |  |  |  |  |  |
| 8 | 1.2.2.2 | pagina de consulta de información |  | 1d | 2014-11-27 A | 2014-11-27 | 7 | 50% | 0.5d | 36d |  |  |  |  |  |
| 9 | 1.2.3 | **Usar campo Block para dirección de nombres de edificios** |  | 1d | 2014-11-28 A | 2014-11-28 A |  | 100% |  |  |  |  | Juan Cid | 8h | 8h |
| 10 | 1.2.3.1 | Modificación SLL ( que no permita editar ) |  | 1d | 2014-11-28 A | 2014-11-28 A | 6 | 100% |  |  |  |  |  |  |  |
| 11 | 1.2.4 | **En descuentos: permitir agregar más información a los códigos de almaceneros** |  | 2d | 2014-12-01 A | 2014-12-02 |  | 25% | 1.5d | 23d | 0d |  | Juan Cid | 16h | 4h |
| 12 | 1.2.4.1 | Modificación aplicación de Menú Web |  | 1d | 2014-12-01 A | 2014-12-01 | 9 | 50% | 0.5d | 23d | 0d |  |  |  |  |
| 13 | 1.2.4.2 | Modificación Base datos |  | 1d | 2014-12-02 | 2014-12-02 | 12 |  |  | 23d |  |  |  |  |  |
| 14 | 1.2.5 | Desarrollo RFC SAP-SLL (Fecha de ult actualización del precio del cliente) |  | 1d | 2014-11-24 A | 2014-11-24 A |  | 100% |  |  |  | start no earlier than 2014-11-24 | R.Clavijo | 8h | 8h |
| 15 | 1.2.6 | **Mostrar mensaje de ultima actualización precio Chile Compra** |  | 3d | 2014-12-03 | 2014-12-05 |  |  |  | 23d | 0d |  | Juan Cid | 24h |  |
| 16 | 1.2.6.1 | modificación SLL |  | 1d | 2014-12-03 | 2014-12-03 | 11 |  |  | 23d | 0d |  |  |  |  |
| 17 | 1.2.6.2 | modificación WEBSERVCES |  | 1d | 2014-12-04 | 2014-12-04 | 16 |  |  | 23d | 0d |  |  |  |  |
| 18 | 1.2.6.3 | modificar interfaz captura precios |  | 1d | 2014-12-05 | 2014-12-05 | 17, 14 |  |  | 23d |  |  |  |  |  |
| 19 | 1.2.7 | Desarrollo RFC SAP-SLL (Trae información de OC) |  | 1d | 2014-12-05 A | 2014-12-05 A |  | 100% |  |  |  | start no earlier than 2014-12-05 | R.Clavijo | 8h | 8h |
| 20 | 1.2.8 | **Orden de Compra Obligatorio** |  | 3d | 2014-12-09 | 2014-12-11 |  |  |  | 23d | 0d |  | Juan Cid | 24h |  |
| 21 | 1.2.8.1 | modificación SLL |  | 1d | 2014-12-09 | 2014-12-09 | 15 |  |  | 23d | 0d |  |  |  |  |
| 22 | 1.2.8.2 | modificación Base datos |  | 1d | 2014-12-10 | 2014-12-10 | 21 |  |  | 23d | 0d |  |  |  |  |
| 23 | 1.2.8.3 | modificación RFC |  | 1d | 2014-12-11 | 2014-12-11 | 22, 19 |  |  | 23d |  |  |  |  |  |
| 24 | 1.2.9 | **Pegar oficina y terminal que atendió el pedido** |  | 2d | 2014-12-12 | 2014-12-15 |  |  |  | 23d | 0d |  | Juan Cid | 16h |  |
| 25 | 1.2.9.1 | modificación BD con los campos oficina y terminal |  | 1d | 2014-12-12 | 2014-12-12 | 20 |  |  | 23d | 0d |  |  |  |  |
| 26 | 1.2.9.2 | pruebas toma pedidos modificación |  | 1d | 2014-12-15 | 2014-12-15 | 25 |  |  | 23d |  |  |  |  |  |

| ID | WBS | Task | Type | Duration | Start | Finish | Predecessors | Total slack | Free slack | Resources | Work | Texto1 |
| --- | --- | --- | --- | --- | --- | --- | --- | --- | --- | --- | --- | --- |
| 27 | 1.2.10 | **Extraer x,y al momento de censar en el censado manual o consultar un cliente en toma de pedidos en SLL** |  | 2d | 2014-12-16 | 2014-12-17 |  | 23d |  | Juan Cid | 16h |  |
| 28 | 1.2.10.1 | Modificación en toma de pedidos y censado |  | 1d | 2014-12-16 | 2014-12-16 | 24 | 23d | 0d |  |  |  |
| 29 | 1.2.10.2 | Pruebas |  | 1d | 2014-12-17 | 2014-12-17 | 28 | 23d |  |  |  |  |
| 30 | 1.3 | **Pruebas SLL Etapa I** |  | 16d | 2014-12-11 | 2015-01-07 |  | 23d | 0d | M. Basulto; Juan Cid | 256h |  |
| 31 | 1.3.1 | Solicitar a los usuarios |  | 1d | 2014-12-11 | 2014-12-11 | 3FS-5d | 23d | 0d |  |  |  |
| 32 | 1.3.2 | Preparar plan de pruebas para usuarios |  | 5d | 2014-12-11 | 2014-12-17 | 31SS | 23d | 0d |  |  |  |
| 33 | 1.3.3 | Pruebas con usuario |  | 3d | 2014-12-18 | 2014-12-22 | 32, 31 | 23d | 0d |  |  |  |
| 34 | 1.3.4 | Ajustes |  | 5d | 2014-12-23 | 2014-12-31 | 33 | 23d | 0d |  |  |  |
| 35 | 1.3.5 | Solicitar a los usuarios |  | 1d | 2014-12-18 | 2014-12-18 | 33SS | 30d | 7d |  |  |  |
| 36 | 1.3.6 | Pruebas 2 |  | 3d | 2015-01-05 | 2015-01-07 | 35, 34 | 23d |  |  |  |  |
| 37 | 1.4 | **Paso a productivo Emditec** |  | 7d | 2015-01-08 | 2015-01-16 | 30 | 51d |  |  |  |  |
| 38 | 1.4.1 | Coordinar con paso a productivo con transtel |  | 1d | 2015-01-08 | 2015-01-08 |  | 51d | 0d |  |  |  |
| 39 | 1.4.2 | Pasar a productivo |  | 1d | 2015-01-09 | 2015-01-09 | 38 | 51d | 0d |  |  |  |
| 40 | 1.4.3 | Monitoreo de funcionamiento |  | 5d | 2015-01-12 | 2015-01-16 | 39 | 51d |  |  |  |  |
| 41 | 2 | Etapa 1 desarrollos Finalizada | milestone | 0d | 2015-01-16 | 2015-01-16 | 1 | 56d |  |  |  |  |
| 42 | 3 | **Desarrollos SLL Etapa II JC** |  | 15d | 2015-01-08 | 2015-01-28 |  | 23d |  |  | 128h |  |
| 43 | 3.1 | **Retorno Garantía** |  | 3d | 2015-01-08 | 2015-01-12 |  | 23d | 0d | Juan Cid | 24h | SI |
| 44 | 3.1.1 | Mediación base datos |  | 2d | 2015-01-08 | 2015-01-09 | 30 | 23d | 0d |  |  |  |
| 45 | 3.1.2 | WebServices a ser usado por Transtel |  | 1d | 2015-01-12 | 2015-01-12 | 44 | 23d |  |  |  |  |
| 46 | 3.2 | **Mejoras en Emergencias** |  | 3d | 2015-01-13 | 2015-01-15 |  | 23d | 0d | Juan Cid | 24h | SI |
| 47 | 3.2.1 | Modificación SLL |  | 2d | 2015-01-13 | 2015-01-14 | 43 | 23d | 0d |  |  |  |
| 48 | 3.2.2 | Modificación Base datos |  | 1d | 2015-01-15 | 2015-01-15 | 47 | 23d | 0d |  |  |  |
| 49 | 3.3 | Informar tipificaciones para carga a Transtel |  | 1d | 2015-01-16 | 2015-01-16 | 48 | 31d |  | M. Basulto | 8h |  |
| 50 | 3.4 | **Agregar Sistema de Noticias Call en toma de pedido** |  | 8d | 2015-01-16 | 2015-01-27 |  | 23d | 0d | Juan Cid | 64h |  |
| 51 | 3.4.1 | Modificar toma de pedidos |  | 4d | 2015-01-16 | 2015-01-21 | 46 | 23d | 0d |  |  |  |
| 52 | 3.4.2 | modificaciones de parametrización en BD |  | 3d | 2015-01-22 | 2015-01-26 | 51 | 23d | 0d |  |  |  |
| 53 | 3.4.3 | creación de mantenedor |  | 1d | 2015-01-27 | 2015-01-27 | 52 | 23d |  |  |  |  |

Notes:
- 37: No se pasará a productivo la actividad de trastel "Unas campo block para Referencia de nombres de edificios"

| ID | WBS | Task | Duration | Start | Finish | Predecessors | Complete | Remaining | Total slack | Constraint | Resources | Work | Actual work | Texto1 |
| --- | --- | --- | --- | --- | --- | --- | --- | --- | --- | --- | --- | --- | --- | --- |
| 54 | 3.5 | **WS Tarreo** | 1d | 2015-01-28 | 2015-01-28 |  |  |  | 23d |  |  | 8h |  | SI |
| 55 | 3.5.1 | WebServices | 1d | 2015-01-28 | 2015-01-28 | 50 |  |  | 23d |  | Juan Cid | 8h |  |  |
| 56 | 4 | **Desarrollos SLL Etapa II OL** | 61d | 2014-12-01 A | 2015-03-02 |  | 4% | 58.82d | 0d |  |  | 192h | 8h |  |
| 57 | 4.1 | Nueva RFC Datos del Cliente | 1d | 2014-12-01 A | 2014-12-01 A |  | 100% |  |  | start no earlier than 2014-12-01 | R.Clavijo | 8h | 8h |  |
| 58 | 4.2 | **Actualización en línea de datos clientes SAP hacia SLL y Creación en línea de clientes desde SAP a SLL** | 6d | 2015-01-23 | 2015-01-30 |  |  |  | 0d |  | Orlando Lobos | 48h |  |  |
| 59 | 4.2.1 | modificación WS | 3d | 2015-01-23 | 2015-01-27 | 57 |  |  | 0d | start no earlier than 2015-01-23 |  |  |  |  |
| 60 | 4.2.2 | creación nueva interfaz | 3d | 2015-01-28 | 2015-01-30 | 59 |  |  | 0d |  |  |  |  |  |
| 61 | 4.3 | **Nuevos Campos Forma Pago Transtel y Otros** | 1d | 2015-02-02 | 2015-02-02 |  |  |  | 0d |  | Orlando Lobos | 8h |  | SI |
| 62 | 4.3.1 | Modificación Base Datos | 1d | 2015-02-02 | 2015-02-02 | 58 |  |  | 0d |  |  |  |  |  |
| 63 | 4.4 | **Mejoras Bolsa Granel** | 3d | 2015-02-03 | 2015-02-05 |  |  |  | 0d |  | Orlando Lobos | 24h |  |  |
| 64 | 4.4.1 | Modifaciones Base Datos | 1d | 2015-02-03 | 2015-02-03 | 61 |  |  | 0d |  |  |  |  |  |
| 65 | 4.4.2 | Modificacion pagina WEB menu web | 1d | 2015-02-04 | 2015-02-04 | 64 |  |  | 0d |  |  |  |  |  |
| 66 | 4.4.3 | Mantedor de cluster | 1d | 2015-02-05 | 2015-02-05 | 65 |  |  | 0d |  |  |  |  |  |
| 67 | 4.5 | **Mostrar Descuento SAP** | 2d | 2015-02-06 | 2015-02-09 |  |  |  | 0d |  | Orlando Lobos | 16h |  |  |
| 68 | 4.5.1 | Modificaciones en RFC | 1d | 2015-02-06 | 2015-02-06 | 63 |  |  | 0d |  |  |  |  |  |
| 69 | 4.5.2 | Modificación SLL | 1d | 2015-02-09 | 2015-02-09 | 68 |  |  | 0d |  |  |  |  |  |
| 70 | 4.6 | **Tramo Horario** | 6d | 2015-02-10 | 2015-02-17 |  |  |  | 0d |  | Orlando Lobos | 48h |  |  |
| 71 | 4.6.1 | Modificacion Base Datos | 3d | 2015-02-10 | 2015-02-12 | 67 |  |  | 0d |  |  |  |  |  |
| 72 | 4.6.2 | Modifacion SLL | 3d | 2015-02-13 | 2015-02-17 | 71 |  |  | 0d |  |  |  |  |  |
| 73 | 4.7 | **Estandarizar ingreso de número telefónica** | 3d | 2015-02-18 | 2015-02-20 |  |  |  | 0d |  | Orlando Lobos | 24h |  |  |
| 74 | 4.7.1 | modificación toma pedido SLL creación clientes | 1d | 2015-02-18 | 2015-02-18 | 70 |  |  | 0d |  |  |  |  |  |
| 75 | 4.7.2 | modificación base datos procedimientos almacenados | 1d | 2015-02-19 | 2015-02-19 | 74 |  |  | 0d |  |  |  |  |  |
| 76 | 4.7.3 | proceso de normalización de los actuales números | 1d | 2015-02-20 | 2015-02-20 | 75 |  |  | 0d |  |  |  |  |  |
| 77 | 4.8 | **Guardar historia de los números de teléfono del cliente** | 2d | 2015-02-23 | 2015-02-24 |  |  |  | 0d |  | Orlando Lobos | 16h |  |  |
| 78 | 4.8.1 | modificaciones base datos | 1d | 2015-02-23 | 2015-02-23 | 73 |  |  | 0d |  |  |  |  |  |
| 79 | 4.8.2 | modificaciones SLL | 1d | 2015-02-24 | 2015-02-24 | 78 |  |  | 0d |  |  |  |  |  |

Notes:
- 59: el 23-1-15 finalizan los desarrolllos de centro logistico

| ID | WBS | Task | Type | Duration | Start | Finish | Predecessors | Complete | Remaining | Total slack | Free slack | Constraint | Resources | Work | Texto1 |
| --- | --- | --- | --- | --- | --- | --- | --- | --- | --- | --- | --- | --- | --- | --- | --- |
| 80 | 4.9 | **WS Tarreo** |  | 4d | 2015-02-25 | 2015-03-02 |  |  |  | 0d |  |  |  |  | SI |
| 81 | 4.9.1 | Modificaciones Base datos |  | 3d | 2015-02-25 | 2015-02-27 | 77 |  |  | 0d |  |  |  |  |  |
| 82 | 4.9.2 | Normalizacion |  | 1d | 2015-03-02 | 2015-03-02 | 81 |  |  | 0d |  |  |  |  |  |
| 83 | 5 | Etapa 2 Desarrollos Finalizados | milestone | 0d | 2015-03-02 | 2015-03-02 | 42, 56 |  |  | 25d |  |  |  |  |  |
| 84 | 6 | **Pruebas SLL Etapa II** |  | 18d | 2015-02-24 | 2015-03-19 |  |  |  | 0d |  |  | Orlando Lobos; Juan Cid; M. Basulto | 432h |  |
| 85 | 6.1 | Solicitar a los usuarios |  | 1d | 2015-02-24 | 2015-02-24 | 42FS-5d, 56FS-5d |  |  | 0d |  |  |  |  |  |
| 86 | 6.2 | Preparar plan de pruebas para usuarios |  | 5d | 2015-02-25 | 2015-03-03 | 85 |  |  | 0d |  |  |  |  |  |
| 87 | 6.3 | Pruebas con usuario |  | 3d | 2015-03-04 | 2015-03-06 | 86 |  |  | 0d |  |  |  |  |  |
| 88 | 6.4 | Ajustes |  | 5d | 2015-03-09 | 2015-03-13 | 87 |  |  | 0d |  |  |  |  |  |
| 89 | 6.5 | Solicitar a los usuarioso |  | 1d | 2015-03-16 | 2015-03-16 | 88 |  |  | 0d |  |  |  |  |  |
| 90 | 6.6 | Pruebas 2 |  | 3d | 2015-03-17 | 2015-03-19 | 89 |  |  | 0d |  |  |  |  |  |
| 91 | 7 | Pruebas Desarrollo Etapa 2 SLL Finalizado | milestone | 0d | 2015-03-19 | 2015-03-19 | 84 |  |  | 12d |  |  |  |  |  |
| 92 | 8 | Desarrollos Centro logistico |  | 41d | 2014-11-20 A | 2015-01-22 |  | 25% | 30.75d | 3d | 0d | start no earlier than 2014-11-20 |  |  |  |
| 93 | 9 | Pruebas Técnicas |  | 3d | 2015-01-23 | 2015-01-27 | 92 |  |  | 3d | 0d | start no earlier than 2014-11-20 |  |  |  |
| 94 | 10 | Correcciones pruebas técnicas |  | 5d | 2015-01-28 | 2015-02-03 | 93 |  |  | 3d | 0d |  |  |  |  |
| 95 | 11 | **Desarrollos Transtel** |  | 15d | 2015-02-04 | 2015-02-24 |  |  |  | 3d | 0d |  |  |  |  |
| 96 | 11.1 | Inicio de desarrollos |  | 1d | 2015-02-04 | 2015-02-04 | 94 |  |  | 3d | 0d |  |  |  |  |
| 97 | 11.2 | Desarrollos Trnastel |  | 14d | 2015-02-05 | 2015-02-24 | 96 |  |  | 3d | 0d |  |  |  |  |
| 98 | 11.3 | ENTREGA DE TRASNTEL DE DESARROLLOS | milestone | 0d | 2015-02-24 | 2015-02-24 | 97 |  |  | 3d |  |  |  |  |  |
| 99 | 12 | Entrega de webserices, y modificaciones en la base datos. |  | 5d | 2015-02-05 | 2015-02-11 | 96 |  |  | 33d |  |  |  |  |  |
| 100 | 13 | **Pruebas Transtel** |  | 19d | 2015-02-18 | 2015-03-16 |  |  |  | 3d |  |  | M. Basulto; Orlando Lobos | 304h |  |
| 101 | 13.1 | Solicitar a los usuarios |  | 1d | 2015-02-18 | 2015-02-18 | 95FS-5d |  |  | 3d | 0d |  |  |  |  |
| 102 | 13.2 | Preparar plan de pruebas para usuarios |  | 4d | 2015-02-19 | 2015-02-24 | 101 |  |  | 3d | 0d |  |  |  |  |
| 103 | 13.3 | Pruebas con usuario |  | 5d | 2015-02-25 | 2015-03-03 | 102 |  |  | 3d | 0d |  |  |  |  |
| 104 | 13.4 | Ajustes |  | 5d | 2015-03-04 | 2015-03-10 | 103 |  |  | 3d | 0d |  |  |  |  |
| 105 | 13.5 | Solicitar a los usuarioso |  | 1d | 2015-03-11 | 2015-03-11 | 104 |  |  | 3d | 0d |  |  |  |  |
| 106 | 13.6 | Pruebas 2 |  | 3d | 2015-03-12 | 2015-03-16 | 105 |  |  | 3d |  |  |  |  |  |

Notes:
- 96: Fin pruebas Centro logistico

| ID | WBS | Task | Type | Duration | Start | Finish | Predecessors | Total slack | Constraint | Resources | Work |
| --- | --- | --- | --- | --- | --- | --- | --- | --- | --- | --- | --- |
| 107 | 14 | **Paso a productivo** |  | 12d | 2015-03-20 | 2015-04-07 |  | 0d |  | M. Basulto | 96h |
| 108 | 14.1 | Coordinar con paso a productivo |  | 1d | 2015-03-20 | 2015-03-20 | 100, 84 | 0d |  |  |  |
| 109 | 14.2 | Pasar a productivo |  | 1d | 2015-03-23 | 2015-03-23 | 108 | 0d |  |  |  |
| 110 | 14.3 | Monitoreo de funcionamiento |  | 5d | 2015-03-24 | 2015-03-30 | 109 | 0d |  |  |  |
| 111 | 14.4 | Cierre de proyecto |  | 5d | 2015-03-31 | 2015-04-07 | 84, 42, 100, 1, 56, 95, 99, 110 | 0d |  |  |  |
| 112 | 14.5 | Fin de proyecto | milestone | 0d | 2015-04-07 | 2015-04-07 | 111 | 0d | must finish on 2015-04-07 |  |  |
