# Programa Terminacion Final Hotel CYBM

Schedule from MS Project XML, 2014-01-17 to 2014-11-06, A marks actual dates.

## Calendars

- Estándar: Mon-Fri 09:00-13:00, 15:00-19:00; Sat-Sun off.

## Schedule

| ID | WBS | Task | Type | Duration | Start | Finish | Predecessors | Complete | Remaining | Total slack | Constraint |
| --- | --- | --- | --- | --- | --- | --- | --- | --- | --- | --- | --- |
| 1 | 1 | **Obra Hotel** |  | 210d | 2014-01-17 A | 2014-11-06 |  | 75% | 6.3d | 0d |  |
| 2 | 1.1 | **2º Subterraneo** |  | 207d | 2014-01-17 A | 2014-11-03 |  | 40% | 12.42d | 0d |  |
| 3 | 1.1.1 | Entrega obra gruesa | milestone | 0d | 2014-01-17 A | 2014-01-17 |  | 80% | 0d | 0d |  |
| 4 | 1.1.2 | Trazado |  | 1d | 2014-01-17 A | 2014-01-17 | 3 | 100% | 0d | 0d |  |
| 5 | 1.1.3 | Tabiqueria |  | 18d | 2014-01-31 A | 2014-02-25 | 4FS+9d | 70% | 0d | 0d |  |
| 6 | 1.1.4 | Sobrelosa |  | 5d | 2014-06-25 A | 2014-07-01 | 5FS+85d | 20% | 0d | 0d |  |
| 7 | 1.1.5 | Impermeabilización |  | 6d | 2014-07-02 A | 2014-07-09 | 6 | 100% | 0d | 0d |  |
| 8 | 1.1.6 | Instalacion baldosas |  | 20d | 2014-07-17 A | 2014-08-13 | 7FS+5d | 60% | 0d | 0d |  |
| 9 | 1.1.7 | Pinturas Interiores (losalin y tabique) |  | 21d | 2014-04-02 A | 2014-04-30 | 5FS+25d | 100% | 0d | 0d |  |
| 10 | 1.1.8 | Instalacion paneles aislantes |  | 10d | 2014-08-27 A | 2014-09-09 | 8FS+9d | 100% | 0d | 0d |  |
| 11 | 1.1.9 | Pintura piso cuarzo |  | 6d | 2014-07-30 A | 2014-08-06 | 9FS+64d | 100% | 0d | 0d |  |
| 12 | 1.1.10 | Instalacion de puertas |  | 7d | 2014-10-24 A | 2014-11-03 |  |  | 7d | 0d | start no earlier than 2014-10-24 |
| 13 | 1.1.11 | Pintura de pilares |  | 14d | 2014-01-17 A | 2014-02-05 |  | 100% | 0d | 0d |  |
| 14 | 1.1.12 | Pintura demarcación |  | 5d | 2014-01-17 A | 2014-01-23 |  | 100% | 0d | 0d |  |
| 15 | 1.1.13 | Entrega piso | milestone | 0d | 2014-11-03 A | 2014-11-03 | 12 | 50% | 0d | 0d |  |
| 16 | 1.2 | **1º Subterraneo** |  | 210d | 2014-01-17 A | 2014-11-06 |  | 98% | 4.2d | 0d |  |
| 17 | 1.2.1 | Entrega obra gruesa | milestone | 0d | 2014-01-17 A | 2014-01-17 |  | 100% | 0d | 0d |  |
| 18 | 1.2.2 | Trazado |  | 1d | 2014-01-17 A | 2014-01-17 | 17 | 30% | 0d | 0d |  |
| 19 | 1.2.3 | Tabiqueria |  | 18d | 2014-02-07 A | 2014-03-04 | 18FS+14d | 100% | 0d | 0d |  |
| 20 | 1.2.4 | Refuerzo y estructura grupo electrógeno |  | 25d | 2014-03-05 A | 2014-04-08 | 19 | 100% | 0d | 0d |  |
| 21 | 1.2.5 | Pinturas interiores (losalin y tabique) |  | 21d | 2014-04-09 A | 2014-05-07 | 19FS+25d | 100% | 0d | 0d |  |
| 22 | 1.2.6 | Pintura piso cuarzo |  | 6d | 2014-07-30 A | 2014-08-06 | 11FS-6d | 100% | 0d | 0d |  |
| 23 | 1.2.7 | Instalacion de puertas |  | 2d | 2014-11-04 A | 2014-11-05 | 12 |  | 2d | 0d |  |
| 24 | 1.2.8 | Pintura de pilares |  | 14d | 2014-02-06 A | 2014-02-25 | 13 | 100% | 0d | 0d |  |
| 25 | 1.2.9 | Pintura demarcación |  | 7d | 2014-01-24 A | 2014-02-03 | 14 | 100% | 0d | 0d |  |
| 26 | 1.2.10 | Entrega piso |  | 1d | 2014-11-06 A | 2014-11-06 | 23, 25 | 60% | 0d | 0d |  |

| ID | WBS | Task | Type | Duration | Start | Finish | Predecessors | Complete | Remaining | Total slack | Constraint |
| --- | --- | --- | --- | --- | --- | --- | --- | --- | --- | --- | --- |
| 27 | 1.3 | **1º piso** |  | 201.25d | 2014-01-17 A | 2014-10-27 |  | 97% | 6.04d | 0d |  |
| 28 | 1.3.1 | **Areas de Servicio** |  | 201.25d | 2014-01-17 A | 2014-10-27 |  | 97% | 6.04d | 0d |  |
| 29 | 1.3.1.1 | Entrega obra gruesa | milestone | 0d | 2014-01-17 A | 2014-01-17 |  | 100% | 0d | 0d |  |
| 30 | 1.3.1.2 | Trazado |  | 2d | 2014-01-17 A | 2014-01-20 | 29 | 100% | 0d | 0d |  |
| 31 | 1.3.1.3 | DIAS ACORDADOS POR DERCO |  | 9d | 2014-02-20 A | 2014-03-04 |  | 100% | 0d | 0d | start no earlier than 2014-02-20 |
| 32 | 1.3.1.4 | DESARME SALA DERCO |  | 6d | 2014-03-05 A | 2014-03-12 | 31 | 60% | 0d | 0d |  |
| 33 | 1.3.1.5 | Sobrelosa |  | 5d | 2014-03-13 A | 2014-03-19 | 32 | 100% | 0d | 0d |  |
| 34 | 1.3.1.6 | Carpinteria metalica tabiques |  | 15d | 2014-03-20 A | 2014-04-09 | 33 | 90% | 0d | 0d |  |
| 35 | 1.3.1.7 | Tabiqueria |  | 45d | 2014-04-17 A | 2014-06-18 | 33, 34FS+5d | 100% | 0d | 0d |  |
| 36 | 1.3.1.8 | Pinturas Interiores |  | 30d | 2014-07-17 A | 2014-08-27 | 35FS+20d | 100% | 0d | 0d |  |
| 37 | 1.3.1.9 | Tabiques vidriados |  | 20d | 2014-08-21 A | 2014-09-17 | 35FS+45d | 100% | 0d | 0d |  |
| 38 | 1.3.1.10 | **Instalacion Revestimientos** |  | 33d | 2014-08-14 A | 2014-09-29 |  | 99% | 0.33d | 0d |  |
| 39 | 1.3.1.10.1 | Instalacion porcelanato |  | 15d | 2014-08-26 A | 2014-09-15 | 47 | 100% | 0d | 0d |  |
| 40 | 1.3.1.10.2 | Instalacion Baldosas |  | 23d | 2014-08-14 A | 2014-09-15 | 35FS+40d | 99% | 0.23d | 0d |  |
| 41 | 1.3.1.10.3 | Pintura piso cuarzo |  | 10d | 2014-09-16 A | 2014-09-29 | 21, 22, 39 | 100% | 0d | 0d |  |
| 42 | 1.3.1.10.4 | Pintura losalin |  | 15d | 2014-09-02 A | 2014-09-22 | 35FS+53d | 100% | 0d | 0d |  |
| 43 | 1.3.1.11 | Guardapolvos |  | 25d | 2014-08-28 A | 2014-10-01 | 36 | 99% | 0.25d | 0d |  |
| 44 | 1.3.1.12 | Puertas (colocación marco, tacos, colocación hoja, quincallería) |  | 25d | 2014-08-28 A | 2014-10-01 | 36 | 100% | 0d | 0d |  |
| 45 | 1.3.1.13 | **Baños** |  | 56d | 2014-07-21 A | 2014-10-06 |  | 100% | 0d | 0d |  |
| 46 | 1.3.1.13.1 | Zocalos |  | 10d | 2014-07-21 A | 2014-08-01 | 35FS+22d | 100% | 0d | 0d |  |
| 47 | 1.3.1.13.2 | Impermeabilizacion |  | 12d | 2014-08-08 A | 2014-08-25 | 35FS+36d, 46 | 100% | 0d | 0d |  |
| 48 | 1.3.1.13.3 | Instalacion de artefactos sanitarios |  | 15d | 2014-09-16 A | 2014-10-06 | 39 | 100% | 0d | 0d |  |
| 49 | 1.3.1.13.4 | Tabiques divisorios |  | 6d | 2014-09-29 A | 2014-10-06 | 48FS-6d | 100% | 0d | 0d |  |
| 50 | 1.3.1.13.5 | Instalacion cubiertas |  | 5d | 2014-09-30 A | 2014-10-06 | 39FS+10d | 100% | 0d | 0d |  |
| 51 | 1.3.1.13.6 | Instalacion espejo |  | 4d | 2014-10-01 A | 2014-10-06 | 48FS-5d, 50FS-4d | 100% | 0d | 0d |  |
| 52 | 1.3.1.14 | ENTREGA MASTER CLIMA CIELO AREA DE SERVICIO | milestone | 0d | 2014-08-29 A | 2014-08-29 |  | 100% | 0d | 0d | start no earlier than 2014-08-29 |

| ID | WBS | Task | Type | Duration | Start | Finish | Predecessors | Complete | Remaining | Total slack | Constraint |
| --- | --- | --- | --- | --- | --- | --- | --- | --- | --- | --- | --- |
| 53 | 1.3.1.15 | **Cielos** |  | 36d | 2014-08-29 A | 2014-10-17 |  | 99% | 0.36d | 0d |  |
| 54 | 1.3.1.15.1 | Cielo volcanita |  | 26d | 2014-08-29 A | 2014-10-03 | 35FS+40d, 52 | 100% | 0d | 0d |  |
| 55 | 1.3.1.15.2 | Cielo Palmeta acústica |  | 5d | 2014-10-13 A | 2014-10-17 | 35FS+82d, 52 | 99% | 0.05d | 0d |  |
| 56 | 1.3.1.16 | **Cierre Equipos frío alimentario y bicicletero** |  | 45d | 2014-07-31 A | 2014-10-01 |  | 99% | 0.45d | 0d |  |
| 57 | 1.3.1.16.1 | Cierre Camara de frio y bicicletero |  | 45d | 2014-07-31 A | 2014-10-01 | 35FS+30d | 99% | 0.45d | 0d |  |
| 58 | 1.3.1.17 | Cortina de rollo |  | 10d | 2014-09-22 A | 2014-10-03 | 35FS+67d | 100% | 0d | 0d |  |
| 59 | 1.3.1.18 | SUMINISTRO DE JUNTA | milestone | 0d | 2014-09-29 A | 2014-09-29 |  | 100% | 0d | 0d | start no earlier than 2014-09-29 |
| 60 | 1.3.1.19 | Instalación junta dilatación |  | 7d | 2014-01-17 A | 2014-01-27 |  |  | 7d | 0d |  |
| 61 | 1.3.1.20 | **Aprobacion proyecto cocina** |  | 15d | 2014-09-11 A | 2014-10-01 |  | 99% | 0.15d | 0d |  |
| 62 | 1.3.1.20.1 | Habilitacion cocina |  | 15d | 2014-09-11 A | 2014-10-01 | 39FS-3d, 40FS-3d | 99% | 0.15d | 0d |  |
| 63 | 1.3.1.21 | **Proyecto camaras de frio** |  | 36d | 2014-08-14 A | 2014-10-02 |  | 99% | 0.36d | 0d |  |
| 64 | 1.3.1.21.1 | Instalacion paneles e instalacion frio alimentario |  | 25d | 2014-08-29 A | 2014-10-02 | 67 | 99% | 0.25d | 0d |  |
| 65 | 1.3.1.21.2 | Sobrelosa Pasillo |  | 4d | 2014-08-14 A | 2014-08-19 | 35FS+40d | 100% | 0d | 0d |  |
| 66 | 1.3.1.21.3 | Tabiquería |  | 4d | 2014-08-15 A | 2014-08-20 | 65FS-3d | 100% | 0d | 0d |  |
| 67 | 1.3.1.21.4 | Baldosas |  | 6d | 2014-08-21 A | 2014-08-28 | 66 | 100% | 0d | 0d |  |
| 68 | 1.3.1.22 | Entrega |  | 5.25d | 2014-10-20 A | 2014-10-27 | 44, 51, 53, 62, 64 |  | 5.25d | 0d |  |
