# PROGRAMA INICIAL DE OBRA_CMMM_REV_02.mpp Corregido 28.05.14 David

Schedule from MS Project XML, 2014-04-28 to 2015-07-01, costs in UF, A marks actual dates.

## Calendars

- PROYECTO CMMM: Mon-Fri 09:00-13:00, 15:00-19:00; Sat-Sun off. Exceptions (off unless hours are given): 2014-09-18 to 2014-09-19 (Day), 2014-12-25 to 2014-12-26 (Day), 2015-01-01 to 2015-01-02 (Day), 2015-05-21 to 2015-05-22 (Day).

## Schedule

| ID | WBS | Task | Type | Duration | Start | Finish | Predecessors | Complete | Remaining | Total slack | Cost |
| --- | --- | --- | --- | --- | --- | --- | --- | --- | --- | --- | --- |
| 1 | 1 | **EDIFCIO: CENTRO MEDICO MANUEL MONTT** |  | 304d | 2014-04-28 A | 2015-07-01 |  | 27% | 221.92d | 0d | 3,441.7 |
| 2 | 1.1 | Entrega de Terreno | milestone | 0d | 2014-04-28 A | 2014-04-28 |  | 100% | 0d | 0d |  |
| 3 | 1.2 | **LEVANTAMIENTO TOPOGRAFICO** |  | 7d | 2014-04-28 A | 2014-05-06 |  | 100% | 0d | 0d | 0.88 |
| 4 | 1.2.1 | Desarrollo de levantamiento topografico |  | 6d | 2014-04-28 A | 2014-05-05 | 2 | 100% | 0d | 0d | 0.88 |
| 5 | 1.2.2 | Aprobacion por parte de ARQ e ITO levantamiento topografico | milestone | 0d | 2014-05-06 A | 2014-05-06 | 4FS+1d | 100% | 0d | 0d |  |
| 6 | 1.3 | **ENTREGA DE PROYECTOS APTOS DE CONSTRUCCION** |  | 200d | 2014-04-28 A | 2015-02-04 |  |  | 200d | 0d |  |
| 7 | 1.3.1 | Proyecto de Topografia | milestone | 0d | 2014-04-28 A | 2014-04-28 | 2 | 100% | 0d | 0d |  |
| 8 | 1.3.2 | Proyecto de Arquitectura | milestone | 0d | 2014-04-28 A | 2014-04-28 | 2 | 100% | 0d | 0d |  |
| 9 | 1.3.3 | Proyecto de Calculo (sin VSL) | milestone | 0d | 2014-04-28 A | 2014-04-28 | 2 | 100% | 0d | 0d |  |
| 10 | 1.3.4 | Proyecto de Pavimentos | milestone | 0d | 2014-04-28 A | 2014-04-28 | 2 | 100% | 0d | 0d |  |
| 11 | 1.3.5 | Proyecto Sanitario | milestone | 0d | 2014-04-28 A | 2014-04-28 | 2 | 100% | 0d | 0d |  |
| 12 | 1.3.6 | Proyecto Electrico y Corrientes Debiles | milestone | 0d | 2014-04-28 A | 2014-04-28 | 2 | 100% | 0d | 0d |  |
| 13 | 1.3.7 | Proyecto Climatizaicon | milestone | 0d | 2014-04-28 A | 2014-04-28 | 2 | 100% | 0d | 0d |  |
| 14 | 1.3.8 | Proyecto Control centralizado | milestone | 0d | 2014-04-28 A | 2014-04-28 | 2 | 100% | 0d | 0d |  |
| 15 | 1.3.9 | Proyecto Iluminacion | milestone | 0d | 2014-04-28 A | 2014-04-28 | 2 | 100% | 0d | 0d |  |
| 16 | 1.3.10 | Proyecto Gases Clinicos | milestone | 0d | 2014-04-28 A | 2014-04-28 | 2 | 100% | 0d | 0d |  |
| 17 | 1.3.11 | Proyecto Proteccion Radiologia | milestone | 0d | 2014-04-28 A | 2014-04-28 | 2 | 100% | 0d | 0d |  |
| 18 | 1.3.12 | Proyecto Residuos Hospitalarios | milestone | 0d | 2014-04-28 A | 2014-04-28 | 2 | 100% | 0d | 0d |  |
| 19 | 1.3.13 | Proyecto Eficiencia Energitica | milestone | 0d | 2014-04-28 A | 2014-04-28 | 2 | 100% | 0d | 0d |  |
| 20 | 1.3.14 | Proyecto Eficiencia Señaletica | milestone | 0d | 2014-04-28 A | 2014-04-28 | 2 | 100% | 0d | 0d |  |
| 21 | 1.3.15 | Proyecto Eficiencia Moviliario | milestone | 0d | 2014-04-28 A | 2014-04-28 | 2 | 100% | 0d | 0d |  |
| 22 | 1.3.16 | Proyecto Circulacion vertical (Ascensores) | milestone | 0d | 2014-04-28 A | 2014-04-28 | 2 | 100% | 0d | 0d |  |
| 23 | 1.3.17 | Proyecto Audios y Pantallas | milestone | 0d | 2014-04-28 A | 2014-04-28 | 2 | 100% | 0d | 0d |  |
| 24 | 1.3.18 | Proyecto SERVIU | milestone | 0d | 2014-04-28 A | 2014-04-28 | 2 | 100% | 0d | 0d |  |

| ID | WBS | Task | Type | Duration | Start | Finish | Predecessors | Complete | Remaining | Total slack | Cost |
| --- | --- | --- | --- | --- | --- | --- | --- | --- | --- | --- | --- |
| 25 | 1.3.19 | **Proyecto VSL** |  | 176d | 2014-05-28 A | 2015-02-03 |  | 100% | 0d | 0d |  |
| 26 | 1.3.19.1 | Aprobacion de Calculo de cielo -5 | milestone | 0d | 2014-05-28 A | 2014-05-28 | 107SS-20d | 100% | 0d | 0d |  |
| 27 | 1.3.19.2 | Aprobacion de Calculo de cielo -4 | milestone | 0d | 2014-07-04 A | 2014-07-04 | 121SS-20d | 100% | 0d | 0d |  |
| 28 | 1.3.19.3 | Aprobacion de Calculo de cielo -3 | milestone | 0d | 2014-08-01 A | 2014-08-01 | 135SS-20d | 100% | 0d | 0d |  |
| 29 | 1.3.19.4 | Aprobacion de Calculo de cielo -2 | milestone | 0d | 2014-08-29 A | 2014-08-29 | 149SS-20d | 100% | 0d | 0d |  |
| 30 | 1.3.19.5 | Aprobacion de Calculo de cielo -1 (ZOCALO) | milestone | 0d | 2014-09-26 A | 2014-09-26 | 163SS-20d | 100% | 0d | 0d |  |
| 31 | 1.3.19.6 | Aprobacion de Calculo de cielo 1 | milestone | 0d | 2014-10-24 A | 2014-10-24 | 177SS-20d | 100% | 0d | 0d |  |
| 32 | 1.3.19.7 | Aprobacion de Calculo de cielo 2 | milestone | 0d | 2014-11-04 A | 2014-11-04 | 191SS-20d | 100% | 0d | 0d |  |
| 33 | 1.3.19.8 | Aprobacion de Calculo de cielo 3 | milestone | 0d | 2014-11-12 A | 2014-11-12 | 205SS-20d | 100% | 0d | 0d |  |
| 34 | 1.3.19.9 | Aprobacion de Calculo de cielo 4 | milestone | 0d | 2014-11-24 A | 2014-11-24 | 219SS-20d | 100% | 0d | 0d |  |
| 35 | 1.3.19.10 | Aprobacion de Calculo de cielo 5 | milestone | 0d | 2014-12-09 A | 2014-12-09 | 233SS-20d | 100% | 0d | 0d |  |
| 36 | 1.3.19.11 | Aprobacion de Calculo de cielo 6 | milestone | 0d | 2014-12-22 A | 2014-12-22 | 247SS-20d | 100% | 0d | 0d |  |
| 37 | 1.3.19.12 | Aprobacion de Calculo de cielo 7 | milestone | 0d | 2015-01-05 A | 2015-01-05 | 261SS-20d | 100% | 0d | 0d |  |
| 38 | 1.3.19.13 | Aprobacion de Calculo de cielo 8 | milestone | 0d | 2015-01-14 A | 2015-01-14 | 275SS-20d | 100% | 0d | 0d |  |
| 39 | 1.3.19.14 | Aprobacion de Calculo de cielo 9 | milestone | 0d | 2015-01-23 A | 2015-01-23 | 289SS-20d | 100% | 0d | 0d |  |
| 40 | 1.3.19.15 | Aprobacion de Calculo de cielo 10 | milestone | 0d | 2015-02-03 A | 2015-02-03 | 303SS-20d | 100% | 0d | 0d |  |
| 41 | 1.3.20 | **PROVISIONES DE MANDANTE** |  | 110d | 2014-08-29 A | 2015-02-04 |  |  | 110d | 0d |  |
| 42 | 1.3.20.1 | Provision de grupo electrogeno | milestone | 0d | 2014-08-29 A | 2014-08-29 | 2FS+90d | 100% | 0d | 0d |  |
| 43 | 1.3.20.2 | Provision de UPS | milestone | 0d | 2014-08-29 A | 2014-08-29 | 2FS+90d | 100% | 0d | 0d |  |
| 44 | 1.3.20.3 | Provision de ascensores por mandante | milestone | 0d | 2015-01-14 A | 2015-01-14 | 687SS-60d |  | 0d | 0d |  |
| 45 | 1.3.20.4 | Provision de señaletica | milestone | 0d | 2015-01-07 A | 2015-01-07 | 2FS+180d |  | 0d | 0d |  |
| 46 | 1.3.20.5 | Provision de proyecto paisajismo | milestone | 0d | 2015-02-04 A | 2015-02-04 | 2FS+200d |  | 0d | 0d |  |
| 47 | 1.4 | **INSTALACION DE FAENA** |  | 41d | 2014-04-28 A | 2014-06-23 |  | 100% | 0d | 0d | 31.75 |
| 48 | 1.4.1 | **INSTALACION DE PROVISORIAS** |  | 14d | 2014-04-28 A | 2014-05-15 |  | 100% | 0d | 0d | 4.59 |
| 49 | 1.4.1.1 | Retiro de Contenedores de FLESAN | milestone | 0d | 2014-04-28 A | 2014-04-28 | 2 | 100% | 0d | 0d |  |
| 50 | 1.4.1.2 | Montaje de Contenedores por Calle Manuel Montt |  | 4d | 2014-04-28 A | 2014-05-01 | 49 | 100% | 0d | 0d | 2.28 |
| 51 | 1.4.1.3 | Habilitación Instalación Provisoria |  | 10d | 2014-05-02 A | 2014-05-15 | 50 | 100% | 0d | 0d | 2.31 |

| ID | WBS | Task | Type | Duration | Start | Finish | Predecessors | Complete | Remaining | Total slack | Constraint | Cost |
| --- | --- | --- | --- | --- | --- | --- | --- | --- | --- | --- | --- | --- |
| 52 | 1.4.2 | **INSTALACION DE DEFINITIVAS** |  | 34d | 2014-05-07 A | 2014-06-23 |  | 100% | 0d | 0d |  | 27.16 |
| 53 | 1.4.2.1 | Montaje de Pasarella. |  | 10d | 2014-05-07 A | 2014-05-20 | 2FS+7d | 100% | 0d | 0d |  | 12.81 |
| 54 | 1.4.2.2 | Oficinas INARCO |  | 24d | 2014-05-21 A | 2014-06-23 | 51, 53 | 100% | 0d | 0d |  | 8.58 |
| 55 | 1.4.2.3 | Oficinas ITO |  | 24d | 2014-05-21 A | 2014-06-23 | 51, 53 | 100% | 0d | 0d |  | 2.14 |
| 56 | 1.4.2.4 | Comedores |  | 24d | 2014-05-21 A | 2014-06-23 | 51, 53 | 100% | 0d | 0d |  | 1.08 |
| 57 | 1.4.2.5 | Vestidores |  | 24d | 2014-05-21 A | 2014-06-23 | 51, 53 | 100% | 0d | 0d |  | 1.13 |
| 58 | 1.4.2.6 | Baños |  | 24d | 2014-05-21 A | 2014-06-23 | 51, 53 | 100% | 0d | 0d |  | 1.41 |
| 59 | 1.5 | **MONTAJE DE GRUAS** |  | 29d | 2014-04-30 A | 2014-06-09 |  | 100% | 0d | 0d |  | 16.06 |
| 60 | 1.5.1 | Aprobacion de Calculista de enfierradura fundaciones | milestone | 0d | 2014-05-05 A | 2014-05-05 | 2FS+6d | 100% | 0d | 0d |  |  |
| 61 | 1.5.2 | Excavaciones de fundaciones de gruas (ambas) |  | 4d | 2014-04-30 A | 2014-05-05 | 2FS+2d | 100% | 0d | 0d |  | 1.84 |
| 62 | 1.5.3 | Emplantillados y mejoramiento (ambas) |  | 1d | 2014-05-07 A | 2014-05-07 | 61FS+1d | 100% | 0d | 0d |  | 0.92 |
| 63 | 1.5.4 | Suministro de Pie de Grua Nº2 | milestone | 0d | 2014-05-09 A | 2014-05-09 | 2 | 100% | 0d | 0d | start no earlier than 2014-05-09 |  |
| 64 | 1.5.5 | Montaje de Enfierradura y Pie base, Grua Nº2 |  | 3d | 2014-05-09 A | 2014-05-13 | 62, 63 | 100% | 0d | 0d |  | 1.26 |
| 65 | 1.5.6 | Hormigonado de Fundacion, Grua Nº2 |  | 1d | 2014-05-14 A | 2014-05-14 | 64 | 100% | 0d | 0d |  | 1.93 |
| 66 | 1.5.7 | Suministro de Pie de Grua Nº1 | milestone | 0d | 2014-05-15 A | 2014-05-15 |  | 100% | 0d | 0d | start no earlier than 2014-05-15 |  |
| 67 | 1.5.8 | Montaje de Enfierradura y Pie base, Grua Nº1 |  | 3d | 2014-05-15 A | 2014-05-19 | 62, 66 | 100% | 0d | 0d |  | 1.26 |
| 68 | 1.5.9 | Hormigonado de Fundacion, Grua Nº1 |  | 1d | 2014-05-20 A | 2014-05-20 | 67 | 100% | 0d | 0d |  | 1.94 |
| 69 | 1.5.10 | Montaje de Grua Nº2 (90 LD) |  | 1d | 2014-06-02 A | 2014-06-02 | 60, 65 | 100% | 0d | 0d | start no earlier than 2014-05-31 | 3.46 |
| 70 | 1.5.11 | Montaje de Grua Nº1 (45 NC) |  | 1d | 2014-06-09 A | 2014-06-09 | 60, 67 | 100% | 0d | 0d | start no earlier than 2014-06-07 | 3.46 |
| 71 | 1.6 | **OBRA GRUESA** |  | 228d | 2014-05-07 A | 2015-03-25 |  | 54% | 104.88d | 0d |  | 1,324.2 |
| 72 | 1.6.1 | **EXCAVACIONES** |  | 22d | 2014-05-07 A | 2014-06-05 |  | 100% | 0d | 0d |  | 7.21 |
| 73 | 1.6.1.1 | Estanque de Agua |  | 12d | 2014-05-07 A | 2014-05-22 | 5, 7, 8, 9 | 100% | 0d | 0d |  | 2.72 |
| 74 | 1.6.1.2 | Fundaciones Aisladas |  | 22d | 2014-05-07 A | 2014-06-05 | 5 | 100% | 0d | 0d |  | 3.2 |
| 75 | 1.6.1.3 | Fundaciones Corridas |  | 22d | 2014-05-07 A | 2014-06-05 | 5 | 100% | 0d | 0d |  | 1.29 |

| ID | WBS | Task | Duration | Start | Finish | Predecessors | Complete | Remaining | Total slack | Cost |
| --- | --- | --- | --- | --- | --- | --- | --- | --- | --- | --- |
| 76 | 1.6.2 | **ESTANQUE DE AGUA** | 33d | 2014-05-27 A | 2014-07-10 |  | 99% | 0.33d | 0d | 99.3 |
| 77 | 1.6.2.1 | Impeamibilizacion previas | 5d | 2014-05-27 A | 2014-06-02 | 73FS+2d | 97% | 0.15d | 0d | 18.71 |
| 78 | 1.6.2.2 | Emplantillados Fund. Aisladas asocidas EJE 5-7/C-E | 2d | 2014-06-03 A | 2014-06-04 | 73, 77 | 100% | 0d | 0d | 1.06 |
| 79 | 1.6.2.3 | Enfierradura Fund. Aisladas asocidas EJE 5-7/C-E | 3d | 2014-06-04 A | 2014-06-06 | 69, 78FS-1d | 100% | 0d | 0d | 14.36 |
| 80 | 1.6.2.4 | Hormigon Fund. Aisladas asocidas EJE 5-7/C-E | 3d | 2014-06-05 A | 2014-06-09 | 79FS-2d | 100% | 0d | 0d | 19.81 |
| 81 | 1.6.2.5 | Enfierradura Pilares Aisladas asocidas EJE 5-7/C-E | 3d | 2014-06-06 A | 2014-06-10 | 80FS-2d | 100% | 0d | 0d | 8.66 |
| 82 | 1.6.2.6 | Moldaje y Hormigon Fund. Aisladas asocidas EJE 5-7/C-E | 3d | 2014-06-09 A | 2014-06-11 | 81FS-2d | 100% | 0d | 0d | 1.9 |
| 83 | 1.6.2.7 | Mejoramiento estructurales con Hormigon Pobre. | 2d | 2014-06-12 A | 2014-06-13 | 82 | 100% | 0d | 0d | 3.01 |
| 84 | 1.6.2.8 | Mejoramiento estructurales con Relleno compactado | 4d | 2014-06-12 A | 2014-06-17 | 82 | 97% | 0.12d | 0d | 3.72 |
| 85 | 1.6.2.9 | Emplantillado de losa de fundacion | 1d | 2014-06-18 A | 2014-06-18 | 83, 84 | 100% | 0d | 0d | 2.24 |
| 86 | 1.6.2.10 | Enfierradura de losa de fundacion | 2d | 2014-06-19 A | 2014-06-20 | 85 | 100% | 0d | 0d | 2.81 |
| 87 | 1.6.2.11 | Rebalse de losa de fundaciones | 1d | 2014-06-23 A | 2014-06-23 | 86 | 95% | 0.05d | 0d | 1.68 |
| 88 | 1.6.2.12 | Hormigón de losa de fundaciones | 1d | 2014-06-24 A | 2014-06-24 | 87 | 100% | 0d | 0d | 2.24 |
| 89 | 1.6.2.13 | Enfierradura de muros | 3d | 2014-06-25 A | 2014-06-27 | 88 | 100% | 0d | 0d | 4.82 |
| 90 | 1.6.2.14 | Hormigon de muros | 2d | 2014-06-30 A | 2014-07-01 | 89 | 100% | 0d | 0d | 4.57 |
| 91 | 1.6.2.15 | Moldaje de cielo de estanque y sala maquinas | 3d | 2014-07-02 A | 2014-07-04 | 90 | 100% | 0d | 0d | 2.88 |
| 92 | 1.6.2.16 | Enfierradura de cielo de estanque y sala maquinas | 2d | 2014-07-07 A | 2014-07-08 | 91 | 100% | 0d | 0d | 3.96 |
| 93 | 1.6.2.17 | Hormigon de cielo de estanque y sala maquinas | 2d | 2014-07-09 A | 2014-07-10 | 92 | 100% | 0d | 0d | 2.9 |
| 94 | 1.6.3 | **SUBTERRANEO -5** | 47d | 2014-05-23 A | 2014-07-28 |  | 100% | 0d | 0d | 189.86 |
| 95 | 1.6.3.1 | **Pilares y fundaciones - subterraneo -5** | 37d | 2014-05-23 A | 2014-07-14 |  | 100% | 0d | 0d | 43.89 |
| 96 | 1.6.3.1.1 | Impermeabilizacion previa | 22d | 2014-05-23 A | 2014-06-23 | 74FS-10d | 100% | 0d | 0d | 26.94 |
| 97 | 1.6.3.1.2 | Enfierrdura de parilla y 1º elevacion asociada | 22d | 2014-06-10 A | 2014-07-09 | 69, 70, 96FS-20d | 100% | 0d | 0d | 5 |
| 98 | 1.6.3.1.3 | Moldaje | 22d | 2014-06-12 A | 2014-07-11 | 97FS-20d | 100% | 0d | 0d | 5.5 |
| 99 | 1.6.3.1.4 | Hormigon | 21d | 2014-06-16 A | 2014-07-14 | 98FS-20d | 100% | 0d | 0d | 6.45 |

| ID | WBS | Task | Duration | Start | Finish | Predecessors | Complete | Remaining | Total slack | Cost |
| --- | --- | --- | --- | --- | --- | --- | --- | --- | --- | --- |
| 100 | 1.6.3.2 | **Muros - subterraneo -5** | 37d | 2014-05-23 A | 2014-07-14 |  | 100% | 0d | 0d | 67.9 |
| 101 | 1.6.3.2.1 | Impermeabilizacion previa | 22d | 2014-05-23 A | 2014-06-23 | 74FS-10d, 75FS-10d | 100% | 0d | 0d | 32.99 |
| 102 | 1.6.3.2.2 | Enfierrdura 1º elevacion asociada | 22d | 2014-06-10 A | 2014-07-09 | 69, 70, 101FS-10d | 100% | 0d | 0d | 10.47 |
| 103 | 1.6.3.2.3 | Moldaje | 22d | 2014-06-12 A | 2014-07-11 | 102FS-20d | 100% | 0d | 0d | 11.18 |
| 104 | 1.6.3.2.4 | Hormigon | 21d | 2014-06-16 A | 2014-07-14 | 103FS-20d | 100% | 0d | 0d | 13.27 |
| 105 | 1.6.3.3 | **Losas cielo - subterraneo -5** | 30d | 2014-06-17 A | 2014-07-28 |  | 100% | 0d | 0d | 78.07 |
| 106 | 1.6.3.3.1 | Moldaje | 22d | 2014-06-17 A | 2014-07-16 | 69, 70, 99FS-20d, 104FS-20d | 100% | 0d | 0d | 9.81 |
| 107 | 1.6.3.3.2 | Enfierradura | 20d | 2014-06-25 A | 2014-07-22 | 106FS-16d | 100% | 0d | 0d | 42.81 |
| 108 | 1.6.3.3.3 | Postensado | 20d | 2014-06-27 A | 2014-07-24 | 26, 107FS-18d | 100% | 0d | 0d | 10.45 |
| 109 | 1.6.3.3.4 | Hormigon | 22d | 2014-06-27 A | 2014-07-28 | 108FS-20d | 100% | 0d | 0d | 15.01 |
| 110 | 1.6.4 | **SUBTERRANEO -4** | 32d | 2014-07-15 A | 2014-08-27 |  | 100% | 0d | 0d | 129.93 |
| 111 | 1.6.4.1 | **Pilares - subterraneo -4** | 21d | 2014-07-15 A | 2014-08-12 |  | 100% | 0d | 0d | 16.94 |
| 112 | 1.6.4.1.1 | Enfierrdura | 15d | 2014-07-15 A | 2014-08-04 | 54, 55, 56, 57, 58, 109FS-10d | 100% | 0d | 0d | 5 |
| 113 | 1.6.4.1.2 | Moldaje | 15d | 2014-07-18 A | 2014-08-07 | 112FS-12d | 100% | 0d | 0d | 5.5 |
| 114 | 1.6.4.1.3 | Hormigon | 15d | 2014-07-23 A | 2014-08-12 | 113FS-12d | 100% | 0d | 0d | 6.45 |
| 115 | 1.6.4.2 | **Muros - subterraneo -4** | 21d | 2014-07-15 A | 2014-08-12 |  | 100% | 0d | 0d | 34.91 |
| 116 | 1.6.4.2.1 | Enfierrdura | 15d | 2014-07-15 A | 2014-08-04 | 109FS-10d | 100% | 0d | 0d | 10.47 |
| 117 | 1.6.4.2.2 | Moldaje | 15d | 2014-07-18 A | 2014-08-07 | 116FS-12d | 100% | 0d | 0d | 11.18 |
| 118 | 1.6.4.2.3 | Hormigon | 15d | 2014-07-23 A | 2014-08-12 | 117FS-12d | 100% | 0d | 0d | 13.27 |
| 119 | 1.6.4.3 | **Losas cielo - subterraneo -4** | 21d | 2014-07-30 A | 2014-08-27 |  | 100% | 0d | 0d | 78.07 |
| 120 | 1.6.4.3.1 | Moldaje | 15d | 2014-07-30 A | 2014-08-19 | 114FS-10d, 118FS-10d | 100% | 0d | 0d | 9.81 |
| 121 | 1.6.4.3.2 | Enfierradura | 15d | 2014-08-01 A | 2014-08-21 | 120FS-13d | 100% | 0d | 0d | 42.81 |
| 122 | 1.6.4.3.3 | Postensado | 15d | 2014-08-05 A | 2014-08-25 | 27, 121FS-13d | 100% | 0d | 0d | 10.45 |
| 123 | 1.6.4.3.4 | Hormigon | 15d | 2014-08-07 A | 2014-08-27 | 122FS-13d | 100% | 0d | 0d | 15.01 |

| ID | WBS | Task | Duration | Start | Finish | Predecessors | Complete | Remaining | Total slack | Cost |
| --- | --- | --- | --- | --- | --- | --- | --- | --- | --- | --- |
| 124 | 1.6.5 | **SUBTERRANEO -3** | 30d | 2014-08-14 A | 2014-09-25 |  | 99% | 0.3d | 0d | 129.93 |
| 125 | 1.6.5.1 | **Pilares - subterraneo -3** | 19d | 2014-08-14 A | 2014-09-09 |  | 100% | 0d | 0d | 16.94 |
| 126 | 1.6.5.1.1 | Enfierrdura | 15d | 2014-08-14 A | 2014-09-03 | 123FS-10d | 100% | 0d | 0d | 5 |
| 127 | 1.6.5.1.2 | Moldaje | 15d | 2014-08-18 A | 2014-09-05 | 126FS-13d | 100% | 0d | 0d | 5.5 |
| 128 | 1.6.5.1.3 | Hormigon | 15d | 2014-08-20 A | 2014-09-09 | 127FS-13d | 100% | 0d | 0d | 6.45 |
| 129 | 1.6.5.2 | **Muros - subterraneo -3** | 19d | 2014-08-14 A | 2014-09-09 |  | 95% | 0.95d | 0d | 34.91 |
| 130 | 1.6.5.2.1 | Enfierrdura | 15d | 2014-08-14 A | 2014-09-03 | 123FS-10d | 95% | 0.75d | 0d | 10.47 |
| 131 | 1.6.5.2.2 | Moldaje | 15d | 2014-08-18 A | 2014-09-05 | 130FS-13d | 95% | 0.75d | 0d | 11.18 |
| 132 | 1.6.5.2.3 | Hormigon | 15d | 2014-08-20 A | 2014-09-09 | 131FS-13d | 95% | 0.75d | 0d | 13.27 |
| 133 | 1.6.5.3 | **Losas cielo - subterraneo -3** | 21d | 2014-08-27 A | 2014-09-25 |  | 100% | 0d | 0d | 78.07 |
| 134 | 1.6.5.3.1 | Moldaje | 15d | 2014-08-27 A | 2014-09-16 | 128FS-10d, 132FS-10d | 100% | 0d | 0d | 9.81 |
| 135 | 1.6.5.3.2 | Enfierradura | 15d | 2014-08-29 A | 2014-09-19 | 134FS-13d | 100% | 0d | 0d | 42.81 |
| 136 | 1.6.5.3.3 | Postensado | 15d | 2014-09-02 A | 2014-09-23 | 28, 135FS-13d | 100% | 0d | 0d | 10.45 |
| 137 | 1.6.5.3.4 | Hormigon | 15d | 2014-09-04 A | 2014-09-25 | 136FS-13d | 100% | 0d | 0d | 15.01 |
| 138 | 1.6.6 | **SUBTERRANEO -2** | 30d | 2014-09-11 A | 2014-10-23 |  | 94% | 1.8d | 0d | 129.93 |
| 139 | 1.6.6.1 | **Pilares - subterraneo -2** | 19d | 2014-09-11 A | 2014-10-08 |  | 100% | 0d | 0d | 16.94 |
| 140 | 1.6.6.1.1 | Enfierrdura | 15d | 2014-09-11 A | 2014-10-02 | 137FS-10d | 100% | 0d | 0d | 5 |
| 141 | 1.6.6.1.2 | Moldaje | 15d | 2014-09-15 A | 2014-10-06 | 140FS-13d | 100% | 0d | 0d | 5.5 |
| 142 | 1.6.6.1.3 | Hormigon | 15d | 2014-09-17 A | 2014-10-08 | 141FS-13d | 100% | 0d | 0d | 6.45 |
| 143 | 1.6.6.2 | **Muros - subterraneo -2** | 19d | 2014-09-11 A | 2014-10-08 |  | 85% | 2.85d | 0d | 34.91 |
| 144 | 1.6.6.2.1 | Enfierrdura | 15d | 2014-09-11 A | 2014-10-02 | 137FS-10d | 85% | 2.25d | 0d | 10.47 |
| 145 | 1.6.6.2.2 | Moldaje | 15d | 2014-09-15 A | 2014-10-06 | 144FS-13d | 85% | 2.25d | 0d | 11.18 |
| 146 | 1.6.6.2.3 | Hormigon | 15d | 2014-09-17 A | 2014-10-08 | 145FS-13d | 85% | 2.25d | 0d | 13.27 |
| 147 | 1.6.6.3 | **Losas cielo - subterraneo -2** | 21d | 2014-09-25 A | 2014-10-23 |  | 95% | 1.05d | 0d | 78.07 |
| 148 | 1.6.6.3.1 | Moldaje | 15d | 2014-09-25 A | 2014-10-15 | 142FS-10d, 146FS-10d | 95% | 0.75d | 0d | 9.81 |
| 149 | 1.6.6.3.2 | Enfierradura | 15d | 2014-09-29 A | 2014-10-17 | 148FS-13d | 95% | 0.75d | 0d | 42.81 |
| 150 | 1.6.6.3.3 | Postensado | 15d | 2014-10-01 A | 2014-10-21 | 29, 149FS-13d | 95% | 0.75d | 0d | 10.45 |
| 151 | 1.6.6.3.4 | Hormigon | 15d | 2014-10-03 A | 2014-10-23 | 150FS-13d | 95% | 0.75d | 0d | 15.01 |

| ID | WBS | Task | Duration | Start | Finish | Predecessors | Complete | Remaining | Total slack | Cost |
| --- | --- | --- | --- | --- | --- | --- | --- | --- | --- | --- |
| 152 | 1.6.7 | **SUBTERRANEO -1 (ZOCALO)** | 26d | 2014-10-10 A | 2014-11-14 |  | 61% | 10.14d | 0d | 129.93 |
| 153 | 1.6.7.1 | **Pilares - subterraneo -1** | 19d | 2014-10-10 A | 2014-11-05 |  | 82% | 3.42d | 0d | 16.94 |
| 154 | 1.6.7.1.1 | Enfierrdura | 15d | 2014-10-10 A | 2014-10-30 | 151FS-10d | 82% | 2.7d | 0d | 5 |
| 155 | 1.6.7.1.2 | Moldaje | 15d | 2014-10-14 A | 2014-11-03 | 154FS-13d | 82% | 2.7d | 0d | 5.5 |
| 156 | 1.6.7.1.3 | Hormigon | 15d | 2014-10-16 A | 2014-11-05 | 155FS-13d | 82% | 2.7d | 0d | 6.45 |
| 157 | 1.6.7.2 | **Muros - subterraneo -1** | 19d | 2014-10-10 A | 2014-11-05 |  | 55% | 8.55d | 0d | 34.91 |
| 158 | 1.6.7.2.1 | Enfierrdura | 15d | 2014-10-10 A | 2014-10-30 | 151FS-10d | 55% | 6.75d | 0d | 10.47 |
| 159 | 1.6.7.2.2 | Moldaje | 15d | 2014-10-14 A | 2014-11-03 | 158FS-13d | 55% | 6.75d | 0d | 11.18 |
| 160 | 1.6.7.2.3 | Hormigon | 15d | 2014-10-16 A | 2014-11-05 | 159FS-13d | 55% | 6.75d | 0d | 13.27 |
| 161 | 1.6.7.3 | **Losas cielo - subterraneo -1** | 17d | 2014-10-23 A | 2014-11-14 |  | 50% | 8.5d | 0d | 78.07 |
| 162 | 1.6.7.3.1 | Moldaje | 14d | 2014-10-23 A | 2014-11-11 | 156FS-10d, 160FS-10d | 50% | 7d | 0d | 9.81 |
| 163 | 1.6.7.3.2 | Enfierradura | 14d | 2014-10-24 A | 2014-11-12 | 162FS-13d | 50% | 7d | 0d | 42.81 |
| 164 | 1.6.7.3.3 | Postensado | 14d | 2014-10-27 A | 2014-11-13 | 30, 163FS-13d | 50% | 7d | 0d | 10.45 |
| 165 | 1.6.7.3.4 | Hormigon | 14d | 2014-10-28 A | 2014-11-14 | 164FS-13d | 50% | 7d | 0d | 15.01 |
| 166 | 1.6.8 | **PISO 1** | 22d | 2014-11-06 A | 2014-12-05 |  | 6% | 20.68d | 0d | 50.23 |
| 167 | 1.6.8.1 | **Pilares - piso 1** | 15d | 2014-11-06 A | 2014-11-26 |  | 14% | 12.9d | 0d | 6.84 |
| 168 | 1.6.8.1.1 | Enfierrdura | 9d | 2014-11-06 A | 2014-11-18 | 165FS-7d | 14% | 7.74d | 0d | 1.7 |
| 169 | 1.6.8.1.2 | Moldaje | 9d | 2014-11-11 A | 2014-11-21 | 168FS-6d | 14% | 7.74d | 0d | 2.25 |
| 170 | 1.6.8.1.3 | Hormigon | 9d | 2014-11-14 A | 2014-11-26 | 169FS-6d | 14% | 7.74d | 0d | 2.89 |
| 171 | 1.6.8.2 | **Muros - piso 1** | 15d | 2014-11-06 A | 2014-11-26 |  | 4% | 14.4d | 0d | 9.66 |
| 172 | 1.6.8.2.1 | Enfierrdura | 9d | 2014-11-06 A | 2014-11-18 | 165FS-7d | 6% | 8.46d | 0d | 2.4 |
| 173 | 1.6.8.2.2 | Moldaje | 9d | 2014-11-11 A | 2014-11-21 | 172FS-6d | 6% | 8.46d | 0d | 3.35 |
| 174 | 1.6.8.2.3 | Hormigon | 9d | 2014-11-14 A | 2014-11-26 | 173FS-6d |  | 9d | 0d | 3.91 |
| 175 | 1.6.8.3 | **Losas cielo - piso 1** | 13d | 2014-11-19 A | 2014-12-05 |  |  | 13d | 0d | 33.73 |
| 176 | 1.6.8.3.1 | Moldaje | 9d | 2014-11-19 A | 2014-12-01 | 170FS-6d, 174FS-6d |  | 9d | 0d | 4.97 |
| 177 | 1.6.8.3.2 | Enfierradura | 9d | 2014-11-21 A | 2014-12-03 | 176FS-7d |  | 9d | 0d | 7.4 |
| 178 | 1.6.8.3.3 | Postensado | 9d | 2014-11-25 A | 2014-12-05 | 31, 177FS-7d |  | 9d | 0d | 10.45 |
| 179 | 1.6.8.3.4 | Hormigon | 7d | 2014-11-27 A | 2014-12-05 | 178FS-7d |  | 7d | 0d | 10.91 |

| ID | WBS | Task | Duration | Start | Finish | Predecessors | Remaining | Total slack | Constraint | Cost |
| --- | --- | --- | --- | --- | --- | --- | --- | --- | --- | --- |
| 180 | 1.6.9 | **PISO 2** | 12d | 2014-11-26 A | 2014-12-11 |  | 12d | 0d |  | 50.23 |
| 181 | 1.6.9.1 | **Pilares - piso 2** | 9d | 2014-11-26 A | 2014-12-08 |  | 9d | 0d |  | 6.84 |
| 182 | 1.6.9.1.1 | Enfierrdura | 7d | 2014-11-26 A | 2014-12-04 | 179FS-8d | 7d | 0d |  | 1.7 |
| 183 | 1.6.9.1.2 | Moldaje | 7d | 2014-11-27 A | 2014-12-05 | 182FS-6d | 7d | 0d |  | 2.25 |
| 184 | 1.6.9.1.3 | Hormigon | 7d | 2014-11-28 A | 2014-12-08 | 183FS-6d | 7d | 0d |  | 2.89 |
| 185 | 1.6.9.2 | **Muros - piso 2** | 9d | 2014-11-26 A | 2014-12-08 |  | 9d | 0d |  | 9.66 |
| 186 | 1.6.9.2.1 | Enfierrdura | 7d | 2014-11-26 A | 2014-12-04 | 179FS-8d | 7d | 0d |  | 2.4 |
| 187 | 1.6.9.2.2 | Moldaje | 7d | 2014-11-27 A | 2014-12-05 | 186FS-6d | 7d | 0d |  | 3.35 |
| 188 | 1.6.9.2.3 | Hormigon | 7d | 2014-11-28 A | 2014-12-08 | 187FS-6d | 7d | 0d |  | 3.91 |
| 189 | 1.6.9.3 | **Losas cielo - piso 2** | 9d | 2014-12-01 A | 2014-12-11 |  | 9d | 0d |  | 33.73 |
| 190 | 1.6.9.3.1 | Moldaje | 7d | 2014-12-01 A | 2014-12-09 | 184FS-6d, 188FS-6d | 7d | 0d |  | 4.97 |
| 191 | 1.6.9.3.2 | Enfierradura | 7d | 2014-12-02 A | 2014-12-10 | 190FS-6d | 7d | 0d |  | 7.4 |
| 192 | 1.6.9.3.3 | Postensado | 7d | 2014-12-03 A | 2014-12-11 | 32, 191FS-6d | 7d | 0d |  | 10.45 |
| 193 | 1.6.9.3.4 | Hormigon | 6d | 2014-12-04 A | 2014-12-11 | 192FS-6d | 6d | 0d | finish no earlier than 2014-05-06 | 10.91 |
| 194 | 1.6.10 | **PISO 3** | 14d | 2014-12-04 A | 2014-12-23 |  | 14d | 0d |  | 50.23 |
| 195 | 1.6.10.1 | **Pilares - piso 3** | 9d | 2014-12-04 A | 2014-12-16 |  | 9d | 0d |  | 6.84 |
| 196 | 1.6.10.1.1 | Enfierrdura | 7d | 2014-12-04 A | 2014-12-12 | 193FS-6d | 7d | 0d |  | 1.7 |
| 197 | 1.6.10.1.2 | Moldaje | 7d | 2014-12-05 A | 2014-12-15 | 196FS-6d | 7d | 0d |  | 2.25 |
| 198 | 1.6.10.1.3 | Hormigon | 7d | 2014-12-08 A | 2014-12-16 | 197FS-6d | 7d | 0d |  | 2.89 |
| 199 | 1.6.10.2 | **Muros - piso 3** | 9d | 2014-12-04 A | 2014-12-16 |  | 9d | 0d |  | 9.66 |
| 200 | 1.6.10.2.1 | Enfierrdura | 7d | 2014-12-04 A | 2014-12-12 | 193FS-6d | 7d | 0d |  | 2.4 |
| 201 | 1.6.10.2.2 | Moldaje | 7d | 2014-12-05 A | 2014-12-15 | 200FS-6d | 7d | 0d |  | 3.35 |
| 202 | 1.6.10.2.3 | Hormigon | 7d | 2014-12-08 A | 2014-12-16 | 201FS-6d | 7d | 0d |  | 3.91 |
| 203 | 1.6.10.3 | **Losas cielo - piso 3** | 11d | 2014-12-09 A | 2014-12-23 |  | 11d | 0d |  | 33.73 |
| 204 | 1.6.10.3.1 | Moldaje | 7d | 2014-12-09 A | 2014-12-17 | 198FS-6d, 202FS-6d | 7d | 0d |  | 4.97 |
| 205 | 1.6.10.3.2 | Enfierradura | 7d | 2014-12-10 A | 2014-12-18 | 204FS-6d | 7d | 0d |  | 7.4 |
| 206 | 1.6.10.3.3 | Postensado | 7d | 2014-12-11 A | 2014-12-19 | 33, 205FS-6d | 7d | 0d |  | 10.45 |
| 207 | 1.6.10.3.4 | Hormigon | 8d | 2014-12-12 A | 2014-12-23 | 206FS-6d | 8d | 0d |  | 10.91 |

| ID | WBS | Task | Duration | Start | Finish | Predecessors | Remaining | Total slack | Cost |
| --- | --- | --- | --- | --- | --- | --- | --- | --- | --- |
| 208 | 1.6.11 | **PISO 4** | 15d | 2014-12-16 A | 2015-01-07 |  | 15d | 0d | 50.23 |
| 209 | 1.6.11.1 | **Pilares - piso 4** | 9d | 2014-12-16 A | 2014-12-29 |  | 9d | 0d | 6.84 |
| 210 | 1.6.11.1.1 | Enfierrdura | 7d | 2014-12-16 A | 2014-12-24 | 207FS-6d | 7d | 0d | 1.7 |
| 211 | 1.6.11.1.2 | Moldaje | 7d | 2014-12-17 A | 2014-12-26 | 210FS-6d | 7d | 0d | 2.25 |
| 212 | 1.6.11.1.3 | Hormigon | 7d | 2014-12-18 A | 2014-12-29 | 211FS-6d | 7d | 0d | 2.89 |
| 213 | 1.6.11.2 | **Muros - piso 4** | 9d | 2014-12-16 A | 2014-12-29 |  | 9d | 0d | 9.66 |
| 214 | 1.6.11.2.1 | Enfierrdura | 7d | 2014-12-16 A | 2014-12-24 | 207FS-6d | 7d | 0d | 2.4 |
| 215 | 1.6.11.2.2 | Moldaje | 7d | 2014-12-17 A | 2014-12-26 | 214FS-6d | 7d | 0d | 3.35 |
| 216 | 1.6.11.2.3 | Hormigon | 7d | 2014-12-18 A | 2014-12-29 | 215FS-6d | 7d | 0d | 3.91 |
| 217 | 1.6.11.3 | **Losas cielo - piso 4** | 12d | 2014-12-19 A | 2015-01-07 |  | 12d | 0d | 33.73 |
| 218 | 1.6.11.3.1 | Moldaje | 7d | 2014-12-19 A | 2014-12-30 | 212FS-6d, 216FS-6d | 7d | 0d | 4.97 |
| 219 | 1.6.11.3.2 | Enfierradura | 7d | 2014-12-22 A | 2014-12-31 | 218FS-6d | 7d | 0d | 7.4 |
| 220 | 1.6.11.3.3 | Postensado | 8d | 2014-12-23 A | 2015-01-05 | 34, 219FS-6d | 8d | 0d | 10.45 |
| 221 | 1.6.11.3.4 | Hormigon | 8d | 2014-12-26 A | 2015-01-07 | 220FS-6d | 8d | 0d | 10.91 |
| 222 | 1.6.12 | **PISO 5** | 14d | 2014-12-31 A | 2015-01-20 |  | 14d | 0d | 50.23 |
| 223 | 1.6.12.1 | **Pilares - piso 5** | 9d | 2014-12-31 A | 2015-01-13 |  | 9d | 0d | 6.84 |
| 224 | 1.6.12.1.1 | Enfierrdura | 7d | 2014-12-31 A | 2015-01-09 | 221FS-5d | 7d | 0d | 1.7 |
| 225 | 1.6.12.1.2 | Moldaje | 7d | 2015-01-02 A | 2015-01-12 | 224FS-6d | 7d | 0d | 2.25 |
| 226 | 1.6.12.1.3 | Hormigon | 7d | 2015-01-05 A | 2015-01-13 | 225FS-6d | 7d | 0d | 2.89 |
| 227 | 1.6.12.2 | **Muros - piso 5** | 9d | 2014-12-31 A | 2015-01-13 |  | 9d | 0d | 9.66 |
| 228 | 1.6.12.2.1 | Enfierrdura | 7d | 2014-12-31 A | 2015-01-09 | 221FS-5d | 7d | 0d | 2.4 |
| 229 | 1.6.12.2.2 | Moldaje | 7d | 2015-01-02 A | 2015-01-12 | 228FS-6d | 7d | 0d | 3.35 |
| 230 | 1.6.12.2.3 | Hormigon | 7d | 2015-01-05 A | 2015-01-13 | 229FS-6d | 7d | 0d | 3.91 |
| 231 | 1.6.12.3 | **Losas cielo - piso 5** | 10d | 2015-01-07 A | 2015-01-20 |  | 10d | 0d | 33.73 |
| 232 | 1.6.12.3.1 | Moldaje | 7d | 2015-01-07 A | 2015-01-15 | 226FS-5d, 230FS-5d | 7d | 0d | 4.97 |
| 233 | 1.6.12.3.2 | Enfierradura | 7d | 2015-01-08 A | 2015-01-16 | 232FS-6d | 7d | 0d | 7.4 |
| 234 | 1.6.12.3.3 | Postensado | 7d | 2015-01-09 A | 2015-01-19 | 35, 233FS-6d | 7d | 0d | 10.45 |
| 235 | 1.6.12.3.4 | Hormigon | 7d | 2015-01-12 A | 2015-01-20 | 234FS-6d | 7d | 0d | 10.91 |

| ID | WBS | Task | Duration | Start | Finish | Predecessors | Remaining | Total slack | Cost |
| --- | --- | --- | --- | --- | --- | --- | --- | --- | --- |
| 236 | 1.6.13 | **PISO 6** | 14d | 2015-01-14 A | 2015-02-02 |  | 14d | 0d | 50.23 |
| 237 | 1.6.13.1 | **Pilares - piso 6** | 9d | 2015-01-14 A | 2015-01-26 |  | 9d | 0d | 6.84 |
| 238 | 1.6.13.1.1 | Enfierrdura | 7d | 2015-01-14 A | 2015-01-22 | 235FS-5d | 7d | 0d | 1.7 |
| 239 | 1.6.13.1.2 | Moldaje | 7d | 2015-01-15 A | 2015-01-23 | 238FS-6d | 7d | 0d | 2.25 |
| 240 | 1.6.13.1.3 | Hormigon | 7d | 2015-01-16 A | 2015-01-26 | 239FS-6d | 7d | 0d | 2.89 |
| 241 | 1.6.13.2 | **Muros - piso 6** | 9d | 2015-01-14 A | 2015-01-26 |  | 9d | 0d | 9.66 |
| 242 | 1.6.13.2.1 | Enfierrdura | 7d | 2015-01-14 A | 2015-01-22 | 235FS-5d | 7d | 0d | 2.4 |
| 243 | 1.6.13.2.2 | Moldaje | 7d | 2015-01-15 A | 2015-01-23 | 242FS-6d | 7d | 0d | 3.35 |
| 244 | 1.6.13.2.3 | Hormigon | 7d | 2015-01-16 A | 2015-01-26 | 243FS-6d | 7d | 0d | 3.91 |
| 245 | 1.6.13.3 | **Losas cielo - piso 6** | 10d | 2015-01-20 A | 2015-02-02 |  | 10d | 0d | 33.73 |
| 246 | 1.6.13.3.1 | Moldaje | 7d | 2015-01-20 A | 2015-01-28 | 240FS-5d, 244FS-5d | 7d | 0d | 4.97 |
| 247 | 1.6.13.3.2 | Enfierradura | 7d | 2015-01-21 A | 2015-01-29 | 246FS-6d | 7d | 0d | 7.4 |
| 248 | 1.6.13.3.3 | Postensado | 7d | 2015-01-22 A | 2015-01-30 | 36, 247FS-6d | 7d | 0d | 10.45 |
| 249 | 1.6.13.3.4 | Hormigon | 7d | 2015-01-23 A | 2015-02-02 | 248FS-6d | 7d | 0d | 10.91 |
| 250 | 1.6.14 | **PISO 7** | 12d | 2015-01-27 A | 2015-02-11 |  | 12d | 0d | 50.23 |
| 251 | 1.6.14.1 | **Pilares - piso 7** | 8d | 2015-01-27 A | 2015-02-05 |  | 8d | 0d | 6.84 |
| 252 | 1.6.14.1.1 | Enfierrdura | 6d | 2015-01-27 A | 2015-02-03 | 249FS-5d | 6d | 0d | 1.7 |
| 253 | 1.6.14.1.2 | Moldaje | 6d | 2015-01-28 A | 2015-02-04 | 252FS-5d | 6d | 0d | 2.25 |
| 254 | 1.6.14.1.3 | Hormigon | 6d | 2015-01-29 A | 2015-02-05 | 253FS-5d | 6d | 0d | 2.89 |
| 255 | 1.6.14.2 | **Muros - piso 7** | 8d | 2015-01-27 A | 2015-02-05 |  | 8d | 0d | 9.66 |
| 256 | 1.6.14.2.1 | Enfierrdura | 6d | 2015-01-27 A | 2015-02-03 | 249FS-5d | 6d | 0d | 2.4 |
| 257 | 1.6.14.2.2 | Moldaje | 6d | 2015-01-28 A | 2015-02-04 | 256FS-5d | 6d | 0d | 3.35 |
| 258 | 1.6.14.2.3 | Hormigon | 6d | 2015-01-29 A | 2015-02-05 | 257FS-5d | 6d | 0d | 3.91 |
| 259 | 1.6.14.3 | **Losas cielo - piso 7** | 9d | 2015-01-30 A | 2015-02-11 |  | 9d | 0d | 33.73 |
| 260 | 1.6.14.3.1 | Moldaje | 6d | 2015-01-30 A | 2015-02-06 | 254FS-5d, 258FS-5d | 6d | 0d | 4.97 |
| 261 | 1.6.14.3.2 | Enfierradura | 6d | 2015-02-02 A | 2015-02-09 | 260FS-5d | 6d | 0d | 7.4 |
| 262 | 1.6.14.3.3 | Postensado | 6d | 2015-02-03 A | 2015-02-10 | 37, 261FS-5d | 6d | 0d | 10.45 |
| 263 | 1.6.14.3.4 | Hormigon | 6d | 2015-02-04 A | 2015-02-11 | 262FS-5d | 6d | 0d | 10.91 |

| ID | WBS | Task | Duration | Start | Finish | Predecessors | Remaining | Total slack | Cost |
| --- | --- | --- | --- | --- | --- | --- | --- | --- | --- |
| 264 | 1.6.15 | **PISO 8** | 12d | 2015-02-05 A | 2015-02-20 |  | 12d | 0d | 50.23 |
| 265 | 1.6.15.1 | **Pilares - piso 8** | 8d | 2015-02-05 A | 2015-02-16 |  | 8d | 0d | 6.84 |
| 266 | 1.6.15.1.1 | Enfierrdura | 6d | 2015-02-05 A | 2015-02-12 | 263FS-5d | 6d | 0d | 1.7 |
| 267 | 1.6.15.1.2 | Moldaje | 6d | 2015-02-06 A | 2015-02-13 | 266FS-5d | 6d | 0d | 2.25 |
| 268 | 1.6.15.1.3 | Hormigon | 6d | 2015-02-09 A | 2015-02-16 | 267FS-5d | 6d | 0d | 2.89 |
| 269 | 1.6.15.2 | **Muros - piso 8** | 8d | 2015-02-05 A | 2015-02-16 |  | 8d | 0d | 9.66 |
| 270 | 1.6.15.2.1 | Enfierrdura | 6d | 2015-02-05 A | 2015-02-12 | 263FS-5d | 6d | 0d | 2.4 |
| 271 | 1.6.15.2.2 | Moldaje | 6d | 2015-02-06 A | 2015-02-13 | 270FS-5d | 6d | 0d | 3.35 |
| 272 | 1.6.15.2.3 | Hormigon | 6d | 2015-02-09 A | 2015-02-16 | 271FS-5d | 6d | 0d | 3.91 |
| 273 | 1.6.15.3 | **Losas cielo - piso 8** | 9d | 2015-02-10 A | 2015-02-20 |  | 9d | 0d | 33.73 |
| 274 | 1.6.15.3.1 | Moldaje | 6d | 2015-02-10 A | 2015-02-17 | 268FS-5d, 272FS-5d | 6d | 0d | 4.97 |
| 275 | 1.6.15.3.2 | Enfierradura | 6d | 2015-02-11 A | 2015-02-18 | 274FS-5d | 6d | 0d | 7.4 |
| 276 | 1.6.15.3.3 | Postensado | 6d | 2015-02-12 A | 2015-02-19 | 38, 275FS-5d | 6d | 0d | 10.45 |
| 277 | 1.6.15.3.4 | Hormigon | 6d | 2015-02-13 A | 2015-02-20 | 276FS-5d | 6d | 0d | 10.91 |
| 278 | 1.6.16 | **PISO 9** | 12d | 2015-02-16 A | 2015-03-03 |  | 12d | 0d | 50.23 |
| 279 | 1.6.16.1 | **Pilares - piso 9** | 8d | 2015-02-16 A | 2015-02-25 |  | 8d | 0d | 6.84 |
| 280 | 1.6.16.1.1 | Enfierrdura | 6d | 2015-02-16 A | 2015-02-23 | 277FS-5d | 6d | 0d | 1.7 |
| 281 | 1.6.16.1.2 | Moldaje | 6d | 2015-02-17 A | 2015-02-24 | 280FS-5d | 6d | 0d | 2.25 |
| 282 | 1.6.16.1.3 | Hormigon | 6d | 2015-02-18 A | 2015-02-25 | 281FS-5d | 6d | 0d | 2.89 |
| 283 | 1.6.16.2 | **Muros - piso 9** | 8d | 2015-02-16 A | 2015-02-25 |  | 8d | 0d | 9.66 |
| 284 | 1.6.16.2.1 | Enfierrdura | 6d | 2015-02-16 A | 2015-02-23 | 277FS-5d | 6d | 0d | 2.4 |
| 285 | 1.6.16.2.2 | Moldaje | 6d | 2015-02-17 A | 2015-02-24 | 284FS-5d | 6d | 0d | 3.35 |
| 286 | 1.6.16.2.3 | Hormigon | 6d | 2015-02-18 A | 2015-02-25 | 285FS-5d | 6d | 0d | 3.91 |
| 287 | 1.6.16.3 | **Losas cielo - piso 9** | 9d | 2015-02-19 A | 2015-03-03 |  | 9d | 0d | 33.73 |
| 288 | 1.6.16.3.1 | Moldaje | 6d | 2015-02-19 A | 2015-02-26 | 282FS-5d, 286FS-5d | 6d | 0d | 4.97 |
| 289 | 1.6.16.3.2 | Enfierradura | 6d | 2015-02-20 A | 2015-02-27 | 288FS-5d | 6d | 0d | 7.4 |
| 290 | 1.6.16.3.3 | Postensado | 6d | 2015-02-23 A | 2015-03-02 | 39, 289FS-5d | 6d | 0d | 10.45 |
| 291 | 1.6.16.3.4 | Hormigon | 6d | 2015-02-24 A | 2015-03-03 | 290FS-5d | 6d | 0d | 10.91 |

| ID | WBS | Task | Duration | Start | Finish | Predecessors | Remaining | Total slack | Cost |
| --- | --- | --- | --- | --- | --- | --- | --- | --- | --- |
| 292 | 1.6.17 | **PISO 10** | 12d | 2015-02-25 A | 2015-03-12 |  | 12d | 0d | 50.23 |
| 293 | 1.6.17.1 | **Pilares - piso 10** | 8d | 2015-02-25 A | 2015-03-06 |  | 8d | 0d | 6.84 |
| 294 | 1.6.17.1.1 | Enfierrdura | 6d | 2015-02-25 A | 2015-03-04 | 291FS-5d | 6d | 0d | 1.7 |
| 295 | 1.6.17.1.2 | Moldaje | 6d | 2015-02-26 A | 2015-03-05 | 294FS-5d | 6d | 0d | 2.25 |
| 296 | 1.6.17.1.3 | Hormigon | 6d | 2015-02-27 A | 2015-03-06 | 295FS-5d | 6d | 0d | 2.89 |
| 297 | 1.6.17.2 | **Muros - piso 10** | 8d | 2015-02-25 A | 2015-03-06 |  | 8d | 0d | 9.66 |
| 298 | 1.6.17.2.1 | Enfierrdura | 6d | 2015-02-25 A | 2015-03-04 | 291FS-5d | 6d | 0d | 2.4 |
| 299 | 1.6.17.2.2 | Moldaje | 6d | 2015-02-26 A | 2015-03-05 | 298FS-5d | 6d | 0d | 3.35 |
| 300 | 1.6.17.2.3 | Hormigon | 6d | 2015-02-27 A | 2015-03-06 | 299FS-5d | 6d | 0d | 3.91 |
| 301 | 1.6.17.3 | **Losas cielo - piso 10** | 9d | 2015-03-02 A | 2015-03-12 |  | 9d | 0d | 33.73 |
| 302 | 1.6.17.3.1 | Moldaje | 6d | 2015-03-02 A | 2015-03-09 | 296FS-5d, 300FS-5d | 6d | 0d | 4.97 |
| 303 | 1.6.17.3.2 | Enfierradura | 6d | 2015-03-03 A | 2015-03-10 | 302FS-5d | 6d | 0d | 7.4 |
| 304 | 1.6.17.3.3 | Postensado | 6d | 2015-03-04 A | 2015-03-11 | 40, 303FS-5d | 6d | 0d | 10.45 |
| 305 | 1.6.17.3.4 | Hormigon | 6d | 2015-03-05 A | 2015-03-12 | 304FS-5d | 6d | 0d | 10.91 |
| 306 | 1.6.18 | **PISO SM** | 12d | 2015-03-10 A | 2015-03-25 |  | 12d | 0d | 5.83 |
| 307 | 1.6.18.1 | **Muros - piso SM** | 6d | 2015-03-10 A | 2015-03-17 |  | 6d | 0d | 3.04 |
| 308 | 1.6.18.1.1 | Enfierrdura | 4d | 2015-03-10 A | 2015-03-13 | 305FS-3d | 4d | 0d | 0.86 |
| 309 | 1.6.18.1.2 | Moldaje | 4d | 2015-03-11 A | 2015-03-16 | 308FS-3d | 4d | 0d | 0.72 |
| 310 | 1.6.18.1.3 | Hormigon | 4d | 2015-03-12 A | 2015-03-17 | 309FS-3d | 4d | 0d | 1.45 |
| 311 | 1.6.18.2 | **Losas cielo - piso SM** | 6d | 2015-03-18 A | 2015-03-25 |  | 6d | 0d | 2.79 |
| 312 | 1.6.18.2.1 | Moldaje | 3d | 2015-03-18 A | 2015-03-20 | 310 | 3d | 0d | 0.77 |
| 313 | 1.6.18.2.2 | Enfierradura | 2d | 2015-03-23 A | 2015-03-24 | 312 | 2d | 0d | 0.68 |
| 314 | 1.6.18.2.3 | Hormigon | 1d | 2015-03-25 A | 2015-03-25 | 313 | 1d | 0d | 1.35 |
| 315 | 1.7 | **TERMINACIONES** | 137d | 2014-12-08 A | 2015-06-19 | 8, 10, 11, 12, 13, 14, 15, 16, 17, 18, 19, 20, 21, 22, 23 | 137d | 0d | 682.21 |
| 316 | 1.7.1 | RADIER DE SUBTERRANEO -5 | 25d | 2014-12-08 A | 2015-01-13 | 179 | 25d | 0d | 27.16 |

| ID | WBS | Task | Duration | Start | Finish | Predecessors | Remaining | Total slack | Cost |
| --- | --- | --- | --- | --- | --- | --- | --- | --- | --- |
| 317 | 1.7.2 | **SUBTERRANEO -5** | 50d | 2014-12-08 A | 2015-02-17 |  | 50d | 0d | 37.12 |
| 318 | 1.7.2.1 | **Fase 1** | 10d | 2014-12-08 A | 2014-12-19 |  | 10d | 0d | 12.3 |
| 319 | 1.7.2.1.1 | Descarachado y Destape de Pasadas | 3d | 2014-12-08 A | 2014-12-10 | 179 | 3d | 0d | 2.26 |
| 320 | 1.7.2.1.2 | Sobrelosas | 2d | 2014-12-08 A | 2014-12-09 | 179 | 2d | 0d | 2.34 |
| 321 | 1.7.2.1.3 | Tabiques Estructuracion y tapado 1° Cara | 4d | 2014-12-09 A | 2014-12-12 | 320FS-1d | 4d | 0d | 3.21 |
| 322 | 1.7.2.1.4 | Intalaciones Interior Tabique | 6d | 2014-12-11 A | 2014-12-18 | 321FS-2d | 6d | 0d | 2.03 |
| 323 | 1.7.2.1.5 | Tabiques Tapado 2° Cara | 3d | 2014-12-17 A | 2014-12-19 | 322FS-2d | 3d | 0d | 2.46 |
| 324 | 1.7.2.2 | **Fase 2** | 13d | 2014-12-22 A | 2015-01-09 |  | 13d | 0d | 8.82 |
| 325 | 1.7.2.2.1 | Estructuracion de Cielos | 5d | 2014-12-22 A | 2014-12-29 | 323 | 5d | 0d | 2.97 |
| 326 | 1.7.2.2.2 | Intalaciones Interior Cielo | 4d | 2014-12-26 A | 2014-12-31 | 325FS-2d | 4d | 0d | 2.67 |
| 327 | 1.7.2.2.3 | Tapado de Cielo | 3d | 2015-01-05 A | 2015-01-07 | 326FS+1d | 3d | 0d | 1.84 |
| 328 | 1.7.2.2.4 | Yesos, Pastas y Huinchas | 4d | 2015-01-06 A | 2015-01-09 | 327FS-2d | 4d | 0d | 1.34 |
| 329 | 1.7.2.3 | **Fase 3** | 11d | 2015-01-07 A | 2015-01-21 |  | 11d | 0d | 6.16 |
| 330 | 1.7.2.3.1 | Revestimeintos en Muros | 7d | 2015-01-07 A | 2015-01-15 | 328FS-3d | 7d | 0d | 2.67 |
| 331 | 1.7.2.3.2 | Pavimentos | 6d | 2015-01-14 A | 2015-01-21 | 330FS-2d | 6d | 0d | 3.49 |
| 332 | 1.7.2.4 | **Fase 4** | 8d | 2015-01-21 A | 2015-01-30 |  | 8d | 0d | 6.56 |
| 333 | 1.7.2.4.1 | Marcos de Puertas | 3d | 2015-01-22 A | 2015-01-26 | 331 | 3d | 0d | 0.96 |
| 334 | 1.7.2.4.2 | Puertas | 3d | 2015-01-21 A | 2015-01-23 | 331FS-1d | 3d | 0d | 2.65 |
| 335 | 1.7.2.4.3 | Instalacion de Artefactos y equipos | 6d | 2015-01-23 A | 2015-01-30 | 334FS-1d | 6d | 0d | 1.79 |
| 336 | 1.7.2.4.4 | Quincallerias | 2d | 2015-01-29 A | 2015-01-30 | 335FS-2d | 2d | 0d | 1.16 |
| 337 | 1.7.2.5 | **Fase 5** | 8d | 2015-01-22 A | 2015-02-02 |  | 8d | 0d | 2.94 |
| 338 | 1.7.2.5.1 | Trabajos previos pinturas | 6d | 2015-01-22 A | 2015-01-29 | 323, 327, 333FS-3d | 6d | 0d | 1.05 |
| 339 | 1.7.2.5.2 | Pinturas | 5d | 2015-01-27 A | 2015-02-02 | 338FS-3d | 5d | 0d | 1.89 |
| 340 | 1.7.2.6 | **Fase 6** | 10d | 2015-02-04 A | 2015-02-17 |  | 10d | 0d | 0.35 |
| 341 | 1.7.2.6.1 | Levantamiento de Observaciones | 10d | 2015-02-04 A | 2015-02-17 | 339FS+1d | 10d | 0d | 0.35 |

| ID | WBS | Task | Duration | Start | Finish | Predecessors | Remaining | Total slack | Cost |
| --- | --- | --- | --- | --- | --- | --- | --- | --- | --- |
| 342 | 1.7.3 | **SUBTERRANEO -4** | 50d | 2014-12-12 A | 2015-02-23 |  | 50d | 0d | 37.12 |
| 343 | 1.7.3.1 | **Fase 1** | 10d | 2014-12-12 A | 2014-12-26 |  | 10d | 0d | 12.3 |
| 344 | 1.7.3.1.1 | Descarachado y Destape de Pasadas | 3d | 2014-12-12 A | 2014-12-16 | 193 | 3d | 0d | 2.26 |
| 345 | 1.7.3.1.2 | Sobrelosas | 2d | 2014-12-12 A | 2014-12-15 | 193 | 2d | 0d | 2.34 |
| 346 | 1.7.3.1.3 | Tabiques Estructuracion y tapado 1° Cara | 4d | 2014-12-15 A | 2014-12-18 | 345FS-1d | 4d | 0d | 3.21 |
| 347 | 1.7.3.1.4 | Intalaciones Interior Tabique | 6d | 2014-12-17 A | 2014-12-24 | 346FS-2d | 6d | 0d | 2.03 |
| 348 | 1.7.3.1.5 | Tabiques Tapado 2° Cara | 3d | 2014-12-23 A | 2014-12-26 | 347FS-2d | 3d | 0d | 2.46 |
| 349 | 1.7.3.2 | **Fase 2** | 14d | 2014-12-29 A | 2015-01-16 |  | 14d | 0d | 8.82 |
| 350 | 1.7.3.2.1 | Estructuracion de Cielos | 5d | 2014-12-29 A | 2015-01-05 | 348 | 5d | 0d | 2.97 |
| 351 | 1.7.3.2.2 | Intalaciones Interior Cielo | 4d | 2015-01-02 A | 2015-01-07 | 350FS-2d | 4d | 0d | 2.67 |
| 352 | 1.7.3.2.3 | Tapado de Cielo | 3d | 2015-01-09 A | 2015-01-13 | 351FS+1d | 3d | 0d | 1.84 |
| 353 | 1.7.3.2.4 | Yesos, Pastas y Huinchas | 5d | 2015-01-12 A | 2015-01-16 | 352FS-2d | 5d | 0d | 1.34 |
| 354 | 1.7.3.3 | **Fase 3** | 11d | 2015-01-14 A | 2015-01-28 |  | 11d | 0d | 6.16 |
| 355 | 1.7.3.3.1 | Revestimeintos en Muros | 7d | 2015-01-14 A | 2015-01-22 | 353FS-3d | 7d | 0d | 2.67 |
| 356 | 1.7.3.3.2 | Pavimentos | 6d | 2015-01-21 A | 2015-01-28 | 355FS-2d | 6d | 0d | 3.49 |
| 357 | 1.7.3.4 | **Fase 4** | 7d | 2015-01-28 A | 2015-02-05 |  | 7d | 0d | 6.56 |
| 358 | 1.7.3.4.1 | Marcos de Puertas | 3d | 2015-01-29 A | 2015-02-02 | 356 | 3d | 0d | 0.96 |
| 359 | 1.7.3.4.2 | Puertas | 3d | 2015-01-28 A | 2015-01-30 | 356FS-1d | 3d | 0d | 2.65 |
| 360 | 1.7.3.4.3 | Instalacion de Artefactos | 5d | 2015-01-30 A | 2015-02-05 | 359FS-1d | 5d | 0d | 1.79 |
| 361 | 1.7.3.4.4 | Quincallerias | 2d | 2015-02-04 A | 2015-02-05 | 360FS-2d | 2d | 0d | 1.16 |
| 362 | 1.7.3.5 | **Fase 5** | 8d | 2015-01-29 A | 2015-02-09 |  | 8d | 0d | 2.94 |
| 363 | 1.7.3.5.1 | Trabajos previos pinturas | 6d | 2015-01-29 A | 2015-02-05 | 348, 352, 358FS-3d | 6d | 0d | 1.05 |
| 364 | 1.7.3.5.2 | Pinturas | 5d | 2015-02-03 A | 2015-02-09 | 363FS-3d | 5d | 0d | 1.89 |
| 365 | 1.7.3.6 | **Fase 6** | 10d | 2015-02-10 A | 2015-02-23 |  | 10d | 0d | 0.35 |
| 366 | 1.7.3.6.1 | Levantamiento de Observaciones | 10d | 2015-02-10 A | 2015-02-23 | 364 | 10d | 0d | 0.35 |

| ID | WBS | Task | Duration | Start | Finish | Predecessors | Remaining | Total slack | Cost |
| --- | --- | --- | --- | --- | --- | --- | --- | --- | --- |
| 367 | 1.7.4 | **SUBTERRANEO -3** | 50d | 2014-12-24 A | 2015-03-05 |  | 50d | 0d | 37.12 |
| 368 | 1.7.4.1 | **Fase 1** | 10d | 2014-12-24 A | 2015-01-08 |  | 10d | 0d | 12.3 |
| 369 | 1.7.4.1.1 | Descarachado y Destape de Pasadas | 3d | 2014-12-24 A | 2014-12-29 | 207 | 3d | 0d | 2.26 |
| 370 | 1.7.4.1.2 | Sobrelosas | 2d | 2014-12-24 A | 2014-12-26 | 207 | 2d | 0d | 2.34 |
| 371 | 1.7.4.1.3 | Tabiques Estructuracion y tapado 1° Cara | 4d | 2014-12-26 A | 2014-12-31 | 370FS-1d | 4d | 0d | 3.21 |
| 372 | 1.7.4.1.4 | Intalaciones Interior Tabique | 6d | 2014-12-30 A | 2015-01-07 | 371FS-2d | 6d | 0d | 2.03 |
| 373 | 1.7.4.1.5 | Tabiques Tapado 2° Cara | 3d | 2015-01-06 A | 2015-01-08 | 372FS-2d | 3d | 0d | 2.46 |
| 374 | 1.7.4.2 | **Fase 2** | 14d | 2015-01-09 A | 2015-01-28 |  | 14d | 0d | 8.82 |
| 375 | 1.7.4.2.1 | Estructuracion de Cielos | 5d | 2015-01-09 A | 2015-01-15 | 373 | 5d | 0d | 2.97 |
| 376 | 1.7.4.2.2 | Intalaciones Interior Cielo | 4d | 2015-01-14 A | 2015-01-19 | 375FS-2d | 4d | 0d | 2.67 |
| 377 | 1.7.4.2.3 | Tapado de Cielo | 3d | 2015-01-21 A | 2015-01-23 | 376FS+1d | 3d | 0d | 1.84 |
| 378 | 1.7.4.2.4 | Yesos, Pastas y Huinchas | 5d | 2015-01-22 A | 2015-01-28 | 377FS-2d | 5d | 0d | 1.34 |
| 379 | 1.7.4.3 | **Fase 3** | 11d | 2015-01-26 A | 2015-02-09 |  | 11d | 0d | 6.16 |
| 380 | 1.7.4.3.1 | Revestimeintos en Muros | 7d | 2015-01-26 A | 2015-02-03 | 378FS-3d | 7d | 0d | 2.67 |
| 381 | 1.7.4.3.2 | Pavimentos | 6d | 2015-02-02 A | 2015-02-09 | 380FS-2d | 6d | 0d | 3.49 |
| 382 | 1.7.4.4 | **Fase 4** | 7d | 2015-02-09 A | 2015-02-17 |  | 7d | 0d | 6.56 |
| 383 | 1.7.4.4.1 | Marcos de Puertas | 3d | 2015-02-10 A | 2015-02-12 | 381 | 3d | 0d | 0.96 |
| 384 | 1.7.4.4.2 | Puertas | 3d | 2015-02-09 A | 2015-02-11 | 381FS-1d | 3d | 0d | 2.65 |
| 385 | 1.7.4.4.3 | Instalacion de Artefactos | 5d | 2015-02-11 A | 2015-02-17 | 384FS-1d | 5d | 0d | 1.79 |
| 386 | 1.7.4.4.4 | Quincallerias | 2d | 2015-02-16 A | 2015-02-17 | 385FS-2d | 2d | 0d | 1.16 |
| 387 | 1.7.4.5 | **Fase 5** | 8d | 2015-02-10 A | 2015-02-19 |  | 8d | 0d | 2.94 |
| 388 | 1.7.4.5.1 | Trabajos previos pinturas | 6d | 2015-02-10 A | 2015-02-17 | 373, 377, 383FS-3d | 6d | 0d | 1.05 |
| 389 | 1.7.4.5.2 | Pinturas | 5d | 2015-02-13 A | 2015-02-19 | 388FS-3d | 5d | 0d | 1.89 |
| 390 | 1.7.4.6 | **Fase 6** | 10d | 2015-02-20 A | 2015-03-05 |  | 10d | 0d | 0.35 |
| 391 | 1.7.4.6.1 | Levantamiento de Observaciones | 10d | 2015-02-20 A | 2015-03-05 | 389 | 10d | 0d | 0.35 |

| ID | WBS | Task | Duration | Start | Finish | Predecessors | Remaining | Total slack | Cost |
| --- | --- | --- | --- | --- | --- | --- | --- | --- | --- |
| 392 | 1.7.5 | **SUBTERRANEO -2** | 50d | 2015-01-08 A | 2015-03-18 |  | 50d | 0d | 37.12 |
| 393 | 1.7.5.1 | **Fase 1** | 10d | 2015-01-08 A | 2015-01-21 |  | 10d | 0d | 12.3 |
| 394 | 1.7.5.1.1 | Descarachado y Destape de Pasadas | 3d | 2015-01-08 A | 2015-01-12 | 221 | 3d | 0d | 2.26 |
| 395 | 1.7.5.1.2 | Sobrelosas | 2d | 2015-01-08 A | 2015-01-09 | 221 | 2d | 0d | 2.34 |
| 396 | 1.7.5.1.3 | Tabiques Estructuracion y tapado 1° Cara | 4d | 2015-01-09 A | 2015-01-14 | 395FS-1d | 4d | 0d | 3.21 |
| 397 | 1.7.5.1.4 | Intalaciones Interior Tabique | 6d | 2015-01-13 A | 2015-01-20 | 396FS-2d | 6d | 0d | 2.03 |
| 398 | 1.7.5.1.5 | Tabiques Tapado 2° Cara | 3d | 2015-01-19 A | 2015-01-21 | 397FS-2d | 3d | 0d | 2.46 |
| 399 | 1.7.5.2 | **Fase 2** | 14d | 2015-01-22 A | 2015-02-10 |  | 14d | 0d | 8.82 |
| 400 | 1.7.5.2.1 | Estructuracion de Cielos | 5d | 2015-01-22 A | 2015-01-28 | 398 | 5d | 0d | 2.97 |
| 401 | 1.7.5.2.2 | Intalaciones Interior Cielo | 4d | 2015-01-27 A | 2015-01-30 | 400FS-2d | 4d | 0d | 2.67 |
| 402 | 1.7.5.2.3 | Tapado de Cielo | 3d | 2015-02-03 A | 2015-02-05 | 401FS+1d | 3d | 0d | 1.84 |
| 403 | 1.7.5.2.4 | Yesos, Pastas y Huinchas | 5d | 2015-02-04 A | 2015-02-10 | 402FS-2d | 5d | 0d | 1.34 |
| 404 | 1.7.5.3 | **Fase 3** | 11d | 2015-02-06 A | 2015-02-20 |  | 11d | 0d | 6.16 |
| 405 | 1.7.5.3.1 | Revestimeintos en Muros | 7d | 2015-02-06 A | 2015-02-16 | 403FS-3d | 7d | 0d | 2.67 |
| 406 | 1.7.5.3.2 | Pavimentos | 6d | 2015-02-13 A | 2015-02-20 | 405FS-2d | 6d | 0d | 3.49 |
| 407 | 1.7.5.4 | **Fase 4** | 7d | 2015-02-20 A | 2015-03-02 |  | 7d | 0d | 6.56 |
| 408 | 1.7.5.4.1 | Marcos de Puertas | 3d | 2015-02-23 A | 2015-02-25 | 406 | 3d | 0d | 0.96 |
| 409 | 1.7.5.4.2 | Puertas | 3d | 2015-02-20 A | 2015-02-24 | 406FS-1d | 3d | 0d | 2.65 |
| 410 | 1.7.5.4.3 | Instalacion de Artefactos | 5d | 2015-02-24 A | 2015-03-02 | 409FS-1d | 5d | 0d | 1.79 |
| 411 | 1.7.5.4.4 | Quincallerias | 2d | 2015-02-27 A | 2015-03-02 | 410FS-2d | 2d | 0d | 1.16 |
| 412 | 1.7.5.5 | **Fase 5** | 8d | 2015-02-23 A | 2015-03-04 |  | 8d | 0d | 2.94 |
| 413 | 1.7.5.5.1 | Trabajos previos pinturas | 6d | 2015-02-23 A | 2015-03-02 | 398, 402, 408FS-3d | 6d | 0d | 1.05 |
| 414 | 1.7.5.5.2 | Pinturas | 5d | 2015-02-26 A | 2015-03-04 | 413FS-3d | 5d | 0d | 1.89 |
| 415 | 1.7.5.6 | **Fase 6** | 10d | 2015-03-05 A | 2015-03-18 |  | 10d | 0d | 0.35 |
| 416 | 1.7.5.6.1 | Levantamiento de Observaciones | 10d | 2015-03-05 A | 2015-03-18 | 414 | 10d | 0d | 0.35 |

| ID | WBS | Task | Duration | Start | Finish | Predecessors | Remaining | Total slack | Cost |
| --- | --- | --- | --- | --- | --- | --- | --- | --- | --- |
| 417 | 1.7.6 | **SUBTERRANEO -1 (ZOCALO)** | 50d | 2015-01-21 A | 2015-03-31 |  | 50d | 0d | 37.12 |
| 418 | 1.7.6.1 | **Fase 1** | 10d | 2015-01-21 A | 2015-02-03 |  | 10d | 0d | 12.3 |
| 419 | 1.7.6.1.1 | Descarachado y Destape de Pasadas | 3d | 2015-01-21 A | 2015-01-23 | 235 | 3d | 0d | 2.26 |
| 420 | 1.7.6.1.2 | Sobrelosas | 2d | 2015-01-21 A | 2015-01-22 | 235 | 2d | 0d | 2.34 |
| 421 | 1.7.6.1.3 | Tabiques Estructuracion y tapado 1° Cara | 4d | 2015-01-22 A | 2015-01-27 | 420FS-1d | 4d | 0d | 3.21 |
| 422 | 1.7.6.1.4 | Intalaciones Interior Tabique | 6d | 2015-01-26 A | 2015-02-02 | 421FS-2d | 6d | 0d | 2.03 |
| 423 | 1.7.6.1.5 | Tabiques Tapado 2° Cara | 3d | 2015-01-30 A | 2015-02-03 | 422FS-2d | 3d | 0d | 2.46 |
| 424 | 1.7.6.2 | **Fase 2** | 14d | 2015-02-04 A | 2015-02-23 |  | 14d | 0d | 8.82 |
| 425 | 1.7.6.2.1 | Estructuracion de Cielos | 5d | 2015-02-04 A | 2015-02-10 | 423 | 5d | 0d | 2.97 |
| 426 | 1.7.6.2.2 | Intalaciones Interior Cielo | 4d | 2015-02-09 A | 2015-02-12 | 425FS-2d | 4d | 0d | 2.67 |
| 427 | 1.7.6.2.3 | Tapado de Cielo | 3d | 2015-02-16 A | 2015-02-18 | 426FS+1d | 3d | 0d | 1.84 |
| 428 | 1.7.6.2.4 | Yesos, Pastas y Huinchas | 5d | 2015-02-17 A | 2015-02-23 | 427FS-2d | 5d | 0d | 1.34 |
| 429 | 1.7.6.3 | **Fase 3** | 11d | 2015-02-19 A | 2015-03-05 |  | 11d | 0d | 6.16 |
| 430 | 1.7.6.3.1 | Revestimeintos en Muros | 7d | 2015-02-19 A | 2015-02-27 | 428FS-3d | 7d | 0d | 2.67 |
| 431 | 1.7.6.3.2 | Pavimentos | 6d | 2015-02-26 A | 2015-03-05 | 430FS-2d | 6d | 0d | 3.49 |
| 432 | 1.7.6.4 | **Fase 4** | 7d | 2015-03-05 A | 2015-03-13 |  | 7d | 0d | 6.56 |
| 433 | 1.7.6.4.1 | Marcos de Puertas | 3d | 2015-03-06 A | 2015-03-10 | 431 | 3d | 0d | 0.96 |
| 434 | 1.7.6.4.2 | Puertas | 3d | 2015-03-05 A | 2015-03-09 | 431FS-1d | 3d | 0d | 2.65 |
| 435 | 1.7.6.4.3 | Instalacion de Artefactos | 5d | 2015-03-09 A | 2015-03-13 | 434FS-1d | 5d | 0d | 1.79 |
| 436 | 1.7.6.4.4 | Quincallerias | 2d | 2015-03-12 A | 2015-03-13 | 435FS-2d | 2d | 0d | 1.16 |
| 437 | 1.7.6.5 | **Fase 5** | 8d | 2015-03-06 A | 2015-03-17 |  | 8d | 0d | 2.94 |
| 438 | 1.7.6.5.1 | Trabajos previos pinturas | 6d | 2015-03-06 A | 2015-03-13 | 423, 427, 433FS-3d | 6d | 0d | 1.05 |
| 439 | 1.7.6.5.2 | Pinturas | 5d | 2015-03-11 A | 2015-03-17 | 438FS-3d | 5d | 0d | 1.89 |
| 440 | 1.7.6.6 | **Fase 6** | 10d | 2015-03-18 A | 2015-03-31 |  | 10d | 0d | 0.35 |
| 441 | 1.7.6.6.1 | Levantamiento de Observaciones | 10d | 2015-03-18 A | 2015-03-31 | 439 | 10d | 0d | 0.35 |

| ID | WBS | Task | Duration | Start | Finish | Predecessors | Remaining | Total slack | Cost |
| --- | --- | --- | --- | --- | --- | --- | --- | --- | --- |
| 442 | 1.7.7 | **PISO 1** | 50d | 2015-02-03 A | 2015-04-13 |  | 50d | 0d | 57.03 |
| 443 | 1.7.7.1 | **Fase 1** | 10d | 2015-02-03 A | 2015-02-16 |  | 10d | 0d | 18.93 |
| 444 | 1.7.7.1.1 | Descarachado y Destape de Pasadas | 3d | 2015-02-03 A | 2015-02-05 | 249 | 3d | 0d | 1.14 |
| 445 | 1.7.7.1.2 | Sobrelosas | 2d | 2015-02-03 A | 2015-02-04 | 249 | 2d | 0d | 3.97 |
| 446 | 1.7.7.1.3 | Tabiques Estructuracion y tapado 1° Cara | 4d | 2015-02-04 A | 2015-02-09 | 445FS-1d | 4d | 0d | 7.21 |
| 447 | 1.7.7.1.4 | Intalaciones Interior Tabique | 6d | 2015-02-06 A | 2015-02-13 | 446FS-2d | 6d | 0d | 3.33 |
| 448 | 1.7.7.1.5 | Tabiques Tapado 2° Cara | 3d | 2015-02-12 A | 2015-02-16 | 447FS-2d | 3d | 0d | 3.29 |
| 449 | 1.7.7.2 | **Fase 2** | 14d | 2015-02-17 A | 2015-03-06 |  | 14d | 0d | 16.77 |
| 450 | 1.7.7.2.1 | Estructuracion de Cielos | 5d | 2015-02-17 A | 2015-02-23 | 448 | 5d | 0d | 3.57 |
| 451 | 1.7.7.2.2 | Intalaciones Interior Cielo | 4d | 2015-02-20 A | 2015-02-25 | 450FS-2d | 4d | 0d | 3.87 |
| 452 | 1.7.7.2.3 | Tapado de Cielo | 3d | 2015-02-27 A | 2015-03-03 | 451FS+1d | 3d | 0d | 7.18 |
| 453 | 1.7.7.2.4 | Yesos, Pastas y Huinchas | 5d | 2015-03-02 A | 2015-03-06 | 452FS-2d | 5d | 0d | 2.15 |
| 454 | 1.7.7.3 | **Fase 3** | 11d | 2015-03-04 A | 2015-03-18 |  | 11d | 0d | 8.58 |
| 455 | 1.7.7.3.1 | Revestimeintos en Muros | 7d | 2015-03-04 A | 2015-03-12 | 453FS-3d | 7d | 0d | 3.67 |
| 456 | 1.7.7.3.2 | Pavimentos | 6d | 2015-03-11 A | 2015-03-18 | 455FS-2d | 6d | 0d | 4.91 |
| 457 | 1.7.7.4 | **Fase 4** | 7d | 2015-03-18 A | 2015-03-26 |  | 7d | 0d | 7.76 |
| 458 | 1.7.7.4.1 | Marcos de Puertas | 3d | 2015-03-19 A | 2015-03-23 | 456 | 3d | 0d | 1.06 |
| 459 | 1.7.7.4.2 | Puertas | 3d | 2015-03-18 A | 2015-03-20 | 456FS-1d | 3d | 0d | 3.65 |
| 460 | 1.7.7.4.3 | Instalacion de Artefactos | 5d | 2015-03-20 A | 2015-03-26 | 459FS-1d | 5d | 0d | 1.89 |
| 461 | 1.7.7.4.4 | Quincallerias | 2d | 2015-03-25 A | 2015-03-26 | 460FS-2d | 2d | 0d | 1.16 |
| 462 | 1.7.7.5 | **Fase 5** | 8d | 2015-03-19 A | 2015-03-30 |  | 8d | 0d | 4.64 |
| 463 | 1.7.7.5.1 | Trabajos previos pinturas | 6d | 2015-03-19 A | 2015-03-26 | 448, 452, 458FS-3d | 6d | 0d | 1.75 |
| 464 | 1.7.7.5.2 | Pinturas | 5d | 2015-03-24 A | 2015-03-30 | 463FS-3d | 5d | 0d | 2.89 |
| 465 | 1.7.7.6 | **Fase 6** | 10d | 2015-03-31 A | 2015-04-13 |  | 10d | 0d | 0.35 |
| 466 | 1.7.7.6.1 | Levantamiento de Observaciones | 10d | 2015-03-31 A | 2015-04-13 | 464 | 10d | 0d | 0.35 |

| ID | WBS | Task | Duration | Start | Finish | Predecessors | Remaining | Total slack | Cost |
| --- | --- | --- | --- | --- | --- | --- | --- | --- | --- |
| 467 | 1.7.8 | **PISO 2** | 50d | 2015-02-12 A | 2015-04-22 |  | 50d | 0d | 57.03 |
| 468 | 1.7.8.1 | **Fase 1** | 10d | 2015-02-12 A | 2015-02-25 |  | 10d | 0d | 18.93 |
| 469 | 1.7.8.1.1 | Descarachado y Destape de Pasadas | 3d | 2015-02-12 A | 2015-02-16 | 263 | 3d | 0d | 1.14 |
| 470 | 1.7.8.1.2 | Sobrelosas | 2d | 2015-02-12 A | 2015-02-13 | 263 | 2d | 0d | 3.97 |
| 471 | 1.7.8.1.3 | Tabiques Estructuracion y tapado 1° Cara | 4d | 2015-02-13 A | 2015-02-18 | 470FS-1d | 4d | 0d | 7.21 |
| 472 | 1.7.8.1.4 | Intalaciones Interior Tabique | 6d | 2015-02-17 A | 2015-02-24 | 471FS-2d | 6d | 0d | 3.33 |
| 473 | 1.7.8.1.5 | Tabiques Tapado 2° Cara | 3d | 2015-02-23 A | 2015-02-25 | 472FS-2d | 3d | 0d | 3.29 |
| 474 | 1.7.8.2 | **Fase 2** | 14d | 2015-02-26 A | 2015-03-17 |  | 14d | 0d | 16.77 |
| 475 | 1.7.8.2.1 | Estructuracion de Cielos | 5d | 2015-02-26 A | 2015-03-04 | 473 | 5d | 0d | 3.57 |
| 476 | 1.7.8.2.2 | Intalaciones Interior Cielo | 4d | 2015-03-03 A | 2015-03-06 | 475FS-2d | 4d | 0d | 3.87 |
| 477 | 1.7.8.2.3 | Tapado de Cielo | 3d | 2015-03-10 A | 2015-03-12 | 476FS+1d | 3d | 0d | 7.18 |
| 478 | 1.7.8.2.4 | Yesos, Pastas y Huinchas | 5d | 2015-03-11 A | 2015-03-17 | 477FS-2d | 5d | 0d | 2.15 |
| 479 | 1.7.8.3 | **Fase 3** | 11d | 2015-03-13 A | 2015-03-27 |  | 11d | 0d | 8.58 |
| 480 | 1.7.8.3.1 | Revestimeintos en Muros | 7d | 2015-03-13 A | 2015-03-23 | 478FS-3d | 7d | 0d | 3.67 |
| 481 | 1.7.8.3.2 | Pavimentos | 6d | 2015-03-20 A | 2015-03-27 | 480FS-2d | 6d | 0d | 4.91 |
| 482 | 1.7.8.4 | **Fase 4** | 7d | 2015-03-27 A | 2015-04-06 |  | 7d | 0d | 7.76 |
| 483 | 1.7.8.4.1 | Marcos de Puertas | 3d | 2015-03-30 A | 2015-04-01 | 481 | 3d | 0d | 1.06 |
| 484 | 1.7.8.4.2 | Puertas | 3d | 2015-03-27 A | 2015-03-31 | 481FS-1d | 3d | 0d | 3.65 |
| 485 | 1.7.8.4.3 | Instalacion de Artefactos | 5d | 2015-03-31 A | 2015-04-06 | 484FS-1d | 5d | 0d | 1.89 |
| 486 | 1.7.8.4.4 | Quincallerias | 2d | 2015-04-03 A | 2015-04-06 | 485FS-2d | 2d | 0d | 1.16 |
| 487 | 1.7.8.5 | **Fase 5** | 8d | 2015-03-30 A | 2015-04-08 |  | 8d | 0d | 4.64 |
| 488 | 1.7.8.5.1 | Trabajos previos pinturas | 6d | 2015-03-30 A | 2015-04-06 | 473, 477, 483FS-3d | 6d | 0d | 1.75 |
| 489 | 1.7.8.5.2 | Pinturas | 5d | 2015-04-02 A | 2015-04-08 | 488FS-3d | 5d | 0d | 2.89 |
| 490 | 1.7.8.6 | **Fase 6** | 10d | 2015-04-09 A | 2015-04-22 |  | 10d | 0d | 0.35 |
| 491 | 1.7.8.6.1 | Levantamiento de Observaciones | 10d | 2015-04-09 A | 2015-04-22 | 489 | 10d | 0d | 0.35 |

| ID | WBS | Task | Duration | Start | Finish | Predecessors | Remaining | Total slack | Cost |
| --- | --- | --- | --- | --- | --- | --- | --- | --- | --- |
| 492 | 1.7.9 | **PISO 3** | 50d | 2015-02-23 A | 2015-05-01 |  | 50d | 0d | 57.03 |
| 493 | 1.7.9.1 | **Fase 1** | 10d | 2015-02-23 A | 2015-03-06 |  | 10d | 0d | 18.93 |
| 494 | 1.7.9.1.1 | Descarachado y Destape de Pasadas | 3d | 2015-02-23 A | 2015-02-25 | 277 | 3d | 0d | 1.14 |
| 495 | 1.7.9.1.2 | Sobrelosas | 2d | 2015-02-23 A | 2015-02-24 | 277 | 2d | 0d | 3.97 |
| 496 | 1.7.9.1.3 | Tabiques Estructuracion y tapado 1° Cara | 4d | 2015-02-24 A | 2015-02-27 | 495FS-1d | 4d | 0d | 7.21 |
| 497 | 1.7.9.1.4 | Intalaciones Interior Tabique | 6d | 2015-02-26 A | 2015-03-05 | 496FS-2d | 6d | 0d | 3.33 |
| 498 | 1.7.9.1.5 | Tabiques Tapado 2° Cara | 3d | 2015-03-04 A | 2015-03-06 | 497FS-2d | 3d | 0d | 3.29 |
| 499 | 1.7.9.2 | **Fase 2** | 14d | 2015-03-09 A | 2015-03-26 |  | 14d | 0d | 16.77 |
| 500 | 1.7.9.2.1 | Estructuracion de Cielos | 5d | 2015-03-09 A | 2015-03-13 | 498 | 5d | 0d | 3.57 |
| 501 | 1.7.9.2.2 | Intalaciones Interior Cielo | 4d | 2015-03-12 A | 2015-03-17 | 500FS-2d | 4d | 0d | 3.87 |
| 502 | 1.7.9.2.3 | Tapado de Cielo | 3d | 2015-03-19 A | 2015-03-23 | 501FS+1d | 3d | 0d | 7.18 |
| 503 | 1.7.9.2.4 | Yesos, Pastas y Huinchas | 5d | 2015-03-20 A | 2015-03-26 | 502FS-2d | 5d | 0d | 2.15 |
| 504 | 1.7.9.3 | **Fase 3** | 11d | 2015-03-24 A | 2015-04-07 |  | 11d | 0d | 8.58 |
| 505 | 1.7.9.3.1 | Revestimeintos en Muros | 7d | 2015-03-24 A | 2015-04-01 | 503FS-3d | 7d | 0d | 3.67 |
| 506 | 1.7.9.3.2 | Pavimentos | 6d | 2015-03-31 A | 2015-04-07 | 505FS-2d | 6d | 0d | 4.91 |
| 507 | 1.7.9.4 | **Fase 4** | 7d | 2015-04-07 A | 2015-04-15 |  | 7d | 0d | 7.76 |
| 508 | 1.7.9.4.1 | Marcos de Puertas | 3d | 2015-04-08 A | 2015-04-10 | 506 | 3d | 0d | 1.06 |
| 509 | 1.7.9.4.2 | Puertas | 3d | 2015-04-07 A | 2015-04-09 | 506FS-1d | 3d | 0d | 3.65 |
| 510 | 1.7.9.4.3 | Instalacion de Artefactos | 5d | 2015-04-09 A | 2015-04-15 | 509FS-1d | 5d | 0d | 1.89 |
| 511 | 1.7.9.4.4 | Quincallerias | 2d | 2015-04-14 A | 2015-04-15 | 510FS-2d | 2d | 0d | 1.16 |
| 512 | 1.7.9.5 | **Fase 5** | 8d | 2015-04-08 A | 2015-04-17 |  | 8d | 0d | 4.64 |
| 513 | 1.7.9.5.1 | Trabajos previos pinturas | 6d | 2015-04-08 A | 2015-04-15 | 498, 502, 508FS-3d | 6d | 0d | 1.75 |
| 514 | 1.7.9.5.2 | Pinturas | 5d | 2015-04-13 A | 2015-04-17 | 513FS-3d | 5d | 0d | 2.89 |
| 515 | 1.7.9.6 | **Fase 6** | 10d | 2015-04-20 A | 2015-05-01 |  | 10d | 0d | 0.35 |
| 516 | 1.7.9.6.1 | Levantamiento de Observaciones | 10d | 2015-04-20 A | 2015-05-01 | 514 | 10d | 0d | 0.35 |

| ID | WBS | Task | Duration | Start | Finish | Predecessors | Remaining | Total slack | Cost |
| --- | --- | --- | --- | --- | --- | --- | --- | --- | --- |
| 517 | 1.7.10 | **PISO 4** | 50d | 2015-03-04 A | 2015-05-12 |  | 50d | 0d | 57.03 |
| 518 | 1.7.10.1 | **Fase 1** | 10d | 2015-03-04 A | 2015-03-17 |  | 10d | 0d | 18.93 |
| 519 | 1.7.10.1.1 | Descarachado y Destape de Pasadas | 3d | 2015-03-04 A | 2015-03-06 | 291 | 3d | 0d | 1.14 |
| 520 | 1.7.10.1.2 | Sobrelosas | 2d | 2015-03-04 A | 2015-03-05 | 291 | 2d | 0d | 3.97 |
| 521 | 1.7.10.1.3 | Tabiques Estructuracion y tapado 1° Cara | 4d | 2015-03-05 A | 2015-03-10 | 520FS-1d | 4d | 0d | 7.21 |
| 522 | 1.7.10.1.4 | Intalaciones Interior Tabique | 6d | 2015-03-09 A | 2015-03-16 | 521FS-2d | 6d | 0d | 3.33 |
| 523 | 1.7.10.1.5 | Tabiques Tapado 2° Cara | 3d | 2015-03-13 A | 2015-03-17 | 522FS-2d | 3d | 0d | 3.29 |
| 524 | 1.7.10.2 | **Fase 2** | 14d | 2015-03-18 A | 2015-04-06 |  | 14d | 0d | 16.77 |
| 525 | 1.7.10.2.1 | Estructuracion de Cielos | 5d | 2015-03-18 A | 2015-03-24 | 523 | 5d | 0d | 3.57 |
| 526 | 1.7.10.2.2 | Intalaciones Interior Cielo | 4d | 2015-03-23 A | 2015-03-26 | 525FS-2d | 4d | 0d | 3.87 |
| 527 | 1.7.10.2.3 | Tapado de Cielo | 3d | 2015-03-30 A | 2015-04-01 | 526FS+1d | 3d | 0d | 7.18 |
| 528 | 1.7.10.2.4 | Yesos, Pastas y Huinchas | 5d | 2015-03-31 A | 2015-04-06 | 527FS-2d | 5d | 0d | 2.15 |
| 529 | 1.7.10.3 | **Fase 3** | 11d | 2015-04-02 A | 2015-04-16 |  | 11d | 0d | 8.58 |
| 530 | 1.7.10.3.1 | Revestimeintos en Muros | 7d | 2015-04-02 A | 2015-04-10 | 528FS-3d | 7d | 0d | 3.67 |
| 531 | 1.7.10.3.2 | Pavimentos | 6d | 2015-04-09 A | 2015-04-16 | 530FS-2d | 6d | 0d | 4.91 |
| 532 | 1.7.10.4 | **Fase 4** | 7d | 2015-04-16 A | 2015-04-24 |  | 7d | 0d | 7.76 |
| 533 | 1.7.10.4.1 | Marcos de Puertas | 3d | 2015-04-17 A | 2015-04-21 | 531 | 3d | 0d | 1.06 |
| 534 | 1.7.10.4.2 | Puertas | 3d | 2015-04-16 A | 2015-04-20 | 531FS-1d | 3d | 0d | 3.65 |
| 535 | 1.7.10.4.3 | Instalacion de Artefactos | 5d | 2015-04-20 A | 2015-04-24 | 534FS-1d | 5d | 0d | 1.89 |
| 536 | 1.7.10.4.4 | Quincallerias | 2d | 2015-04-23 A | 2015-04-24 | 535FS-2d | 2d | 0d | 1.16 |
| 537 | 1.7.10.5 | **Fase 5** | 8d | 2015-04-17 A | 2015-04-28 |  | 8d | 0d | 4.64 |
| 538 | 1.7.10.5.1 | Trabajos previos pinturas | 6d | 2015-04-17 A | 2015-04-24 | 523, 527, 533FS-3d | 6d | 0d | 1.75 |
| 539 | 1.7.10.5.2 | Pinturas | 5d | 2015-04-22 A | 2015-04-28 | 538FS-3d | 5d | 0d | 2.89 |
| 540 | 1.7.10.6 | **Fase 6** | 10d | 2015-04-29 A | 2015-05-12 |  | 10d | 0d | 0.35 |
| 541 | 1.7.10.6.1 | Levantamiento de Observaciones | 10d | 2015-04-29 A | 2015-05-12 | 539 | 10d | 0d | 0.35 |

| ID | WBS | Task | Duration | Start | Finish | Predecessors | Remaining | Total slack | Cost |
| --- | --- | --- | --- | --- | --- | --- | --- | --- | --- |
| 542 | 1.7.11 | **PISO 5** | 50d | 2015-03-13 A | 2015-05-22 |  | 50d | 0d | 57.03 |
| 543 | 1.7.11.1 | **Fase 1** | 10d | 2015-03-13 A | 2015-03-26 |  | 10d | 0d | 18.93 |
| 544 | 1.7.11.1.1 | Descarachado y Destape de Pasadas | 3d | 2015-03-13 A | 2015-03-17 | 305 | 3d | 0d | 1.14 |
| 545 | 1.7.11.1.2 | Sobrelosas | 2d | 2015-03-13 A | 2015-03-16 | 305 | 2d | 0d | 3.97 |
| 546 | 1.7.11.1.3 | Tabiques Estructuracion y tapado 1° Cara | 4d | 2015-03-16 A | 2015-03-19 | 545FS-1d | 4d | 0d | 7.21 |
| 547 | 1.7.11.1.4 | Intalaciones Interior Tabique | 6d | 2015-03-18 A | 2015-03-25 | 546FS-2d | 6d | 0d | 3.33 |
| 548 | 1.7.11.1.5 | Tabiques Tapado 2° Cara | 3d | 2015-03-24 A | 2015-03-26 | 547FS-2d | 3d | 0d | 3.29 |
| 549 | 1.7.11.2 | **Fase 2** | 14d | 2015-03-27 A | 2015-04-15 |  | 14d | 0d | 16.77 |
| 550 | 1.7.11.2.1 | Estructuracion de Cielos | 5d | 2015-03-27 A | 2015-04-02 | 548 | 5d | 0d | 3.57 |
| 551 | 1.7.11.2.2 | Intalaciones Interior Cielo | 4d | 2015-04-01 A | 2015-04-06 | 550FS-2d | 4d | 0d | 3.87 |
| 552 | 1.7.11.2.3 | Tapado de Cielo | 3d | 2015-04-08 A | 2015-04-10 | 551FS+1d | 3d | 0d | 7.18 |
| 553 | 1.7.11.2.4 | Yesos, Pastas y Huinchas | 5d | 2015-04-09 A | 2015-04-15 | 552FS-2d | 5d | 0d | 2.15 |
| 554 | 1.7.11.3 | **Fase 3** | 11d | 2015-04-13 A | 2015-04-27 |  | 11d | 0d | 8.58 |
| 555 | 1.7.11.3.1 | Revestimeintos en Muros | 7d | 2015-04-13 A | 2015-04-21 | 553FS-3d | 7d | 0d | 3.67 |
| 556 | 1.7.11.3.2 | Pavimentos | 6d | 2015-04-20 A | 2015-04-27 | 555FS-2d | 6d | 0d | 4.91 |
| 557 | 1.7.11.4 | **Fase 4** | 7d | 2015-04-27 A | 2015-05-05 |  | 7d | 0d | 7.76 |
| 558 | 1.7.11.4.1 | Marcos de Puertas | 3d | 2015-04-28 A | 2015-04-30 | 556 | 3d | 0d | 1.06 |
| 559 | 1.7.11.4.2 | Puertas | 3d | 2015-04-27 A | 2015-04-29 | 556FS-1d | 3d | 0d | 3.65 |
| 560 | 1.7.11.4.3 | Instalacion de Artefactos | 5d | 2015-04-29 A | 2015-05-05 | 559FS-1d | 5d | 0d | 1.89 |
| 561 | 1.7.11.4.4 | Quincallerias | 2d | 2015-05-04 A | 2015-05-05 | 560FS-2d | 2d | 0d | 1.16 |
| 562 | 1.7.11.5 | **Fase 5** | 8d | 2015-04-28 A | 2015-05-07 |  | 8d | 0d | 4.64 |
| 563 | 1.7.11.5.1 | Trabajos previos pinturas | 6d | 2015-04-28 A | 2015-05-05 | 548, 552, 558FS-3d | 6d | 0d | 1.75 |
| 564 | 1.7.11.5.2 | Pinturas | 5d | 2015-05-01 A | 2015-05-07 | 563FS-3d | 5d | 0d | 2.89 |
| 565 | 1.7.11.6 | **Fase 6** | 10d | 2015-05-08 A | 2015-05-22 |  | 10d | 0d | 0.35 |
| 566 | 1.7.11.6.1 | Levantamiento de Observaciones | 10d | 2015-05-08 A | 2015-05-22 | 564 | 10d | 0d | 0.35 |

| ID | WBS | Task | Duration | Start | Finish | Predecessors | Remaining | Total slack | Cost |
| --- | --- | --- | --- | --- | --- | --- | --- | --- | --- |
| 567 | 1.7.12 | **PISO 6** | 50d | 2015-03-27 A | 2015-06-05 |  | 50d | 0d | 57.03 |
| 568 | 1.7.12.1 | **Fase 1** | 10d | 2015-03-27 A | 2015-04-09 |  | 10d | 0d | 18.93 |
| 569 | 1.7.12.1.1 | Descarachado y Destape de Pasadas | 3d | 2015-03-27 A | 2015-03-31 | 305FS+10d | 3d | 0d | 1.14 |
| 570 | 1.7.12.1.2 | Sobrelosas | 2d | 2015-03-27 A | 2015-03-30 | 305FS+10d | 2d | 0d | 3.97 |
| 571 | 1.7.12.1.3 | Tabiques Estructuracion y tapado 1° Cara | 4d | 2015-03-30 A | 2015-04-02 | 570FS-1d | 4d | 0d | 7.21 |
| 572 | 1.7.12.1.4 | Intalaciones Interior Tabique | 6d | 2015-04-01 A | 2015-04-08 | 571FS-2d | 6d | 0d | 3.33 |
| 573 | 1.7.12.1.5 | Tabiques Tapado 2° Cara | 3d | 2015-04-07 A | 2015-04-09 | 572FS-2d | 3d | 0d | 3.29 |
| 574 | 1.7.12.2 | **Fase 2** | 14d | 2015-04-10 A | 2015-04-29 |  | 14d | 0d | 16.77 |
| 575 | 1.7.12.2.1 | Estructuracion de Cielos | 5d | 2015-04-10 A | 2015-04-16 | 573 | 5d | 0d | 3.57 |
| 576 | 1.7.12.2.2 | Intalaciones Interior Cielo | 4d | 2015-04-15 A | 2015-04-20 | 575FS-2d | 4d | 0d | 3.87 |
| 577 | 1.7.12.2.3 | Tapado de Cielo | 3d | 2015-04-22 A | 2015-04-24 | 576FS+1d | 3d | 0d | 7.18 |
| 578 | 1.7.12.2.4 | Yesos, Pastas y Huinchas | 5d | 2015-04-23 A | 2015-04-29 | 577FS-2d | 5d | 0d | 2.15 |
| 579 | 1.7.12.3 | **Fase 3** | 11d | 2015-04-27 A | 2015-05-11 |  | 11d | 0d | 8.58 |
| 580 | 1.7.12.3.1 | Revestimeintos en Muros | 7d | 2015-04-27 A | 2015-05-05 | 578FS-3d | 7d | 0d | 3.67 |
| 581 | 1.7.12.3.2 | Pavimentos | 6d | 2015-05-04 A | 2015-05-11 | 580FS-2d | 6d | 0d | 4.91 |
| 582 | 1.7.12.4 | **Fase 4** | 7d | 2015-05-11 A | 2015-05-19 |  | 7d | 0d | 7.76 |
| 583 | 1.7.12.4.1 | Marcos de Puertas | 3d | 2015-05-12 A | 2015-05-14 | 581 | 3d | 0d | 1.06 |
| 584 | 1.7.12.4.2 | Puertas | 3d | 2015-05-11 A | 2015-05-13 | 581FS-1d | 3d | 0d | 3.65 |
| 585 | 1.7.12.4.3 | Instalacion de Artefactos | 5d | 2015-05-13 A | 2015-05-19 | 584FS-1d | 5d | 0d | 1.89 |
| 586 | 1.7.12.4.4 | Quincallerias | 2d | 2015-05-18 A | 2015-05-19 | 585FS-2d | 2d | 0d | 1.16 |
| 587 | 1.7.12.5 | **Fase 5** | 8d | 2015-05-12 A | 2015-05-22 |  | 8d | 0d | 4.64 |
| 588 | 1.7.12.5.1 | Trabajos previos pinturas | 6d | 2015-05-12 A | 2015-05-19 | 573, 577, 583FS-3d | 6d | 0d | 1.75 |
| 589 | 1.7.12.5.2 | Pinturas | 5d | 2015-05-15 A | 2015-05-22 | 588FS-3d | 5d | 0d | 2.89 |
| 590 | 1.7.12.6 | **Fase 6** | 10d | 2015-05-25 A | 2015-06-05 |  | 10d | 0d | 0.35 |
| 591 | 1.7.12.6.1 | Levantamiento de Observaciones | 10d | 2015-05-25 A | 2015-06-05 | 589 | 10d | 0d | 0.35 |

| ID | WBS | Task | Duration | Start | Finish | Predecessors | Remaining | Total slack | Cost |
| --- | --- | --- | --- | --- | --- | --- | --- | --- | --- |
| 592 | 1.7.13 | **PISO 7** | 50d | 2015-04-03 A | 2015-06-12 | 305FS+15d | 50d | 0d | 57.03 |
| 593 | 1.7.13.1 | **Fase 1** | 10d | 2015-04-03 A | 2015-04-16 |  | 10d | 0d | 18.93 |
| 594 | 1.7.13.1.1 | Descarachado y Destape de Pasadas | 3d | 2015-04-03 A | 2015-04-07 | 305FS+15d | 3d | 0d | 1.14 |
| 595 | 1.7.13.1.2 | Sobrelosas | 2d | 2015-04-03 A | 2015-04-06 | 305FS+15d | 2d | 0d | 3.97 |
| 596 | 1.7.13.1.3 | Tabiques Estructuracion y tapado 1° Cara | 4d | 2015-04-06 A | 2015-04-09 | 595FS-1d | 4d | 0d | 7.21 |
| 597 | 1.7.13.1.4 | Intalaciones Interior Tabique | 6d | 2015-04-08 A | 2015-04-15 | 596FS-2d | 6d | 0d | 3.33 |
| 598 | 1.7.13.1.5 | Tabiques Tapado 2° Cara | 3d | 2015-04-14 A | 2015-04-16 | 597FS-2d | 3d | 0d | 3.29 |
| 599 | 1.7.13.2 | **Fase 2** | 14d | 2015-04-17 A | 2015-05-06 |  | 14d | 0d | 16.77 |
| 600 | 1.7.13.2.1 | Estructuracion de Cielos | 5d | 2015-04-17 A | 2015-04-23 | 598 | 5d | 0d | 3.57 |
| 601 | 1.7.13.2.2 | Intalaciones Interior Cielo | 4d | 2015-04-22 A | 2015-04-27 | 600FS-2d | 4d | 0d | 3.87 |
| 602 | 1.7.13.2.3 | Tapado de Cielo | 3d | 2015-04-29 A | 2015-05-01 | 601FS+1d | 3d | 0d | 7.18 |
| 603 | 1.7.13.2.4 | Yesos, Pastas y Huinchas | 5d | 2015-04-30 A | 2015-05-06 | 602FS-2d | 5d | 0d | 2.15 |
| 604 | 1.7.13.3 | **Fase 3** | 11d | 2015-05-04 A | 2015-05-18 |  | 11d | 0d | 8.58 |
| 605 | 1.7.13.3.1 | Revestimeintos en Muros | 7d | 2015-05-04 A | 2015-05-12 | 603FS-3d | 7d | 0d | 3.67 |
| 606 | 1.7.13.3.2 | Pavimentos | 6d | 2015-05-11 A | 2015-05-18 | 605FS-2d | 6d | 0d | 4.91 |
| 607 | 1.7.13.4 | **Fase 4** | 7d | 2015-05-18 A | 2015-05-27 |  | 7d | 0d | 7.76 |
| 608 | 1.7.13.4.1 | Marcos de Puertas | 3d | 2015-05-19 A | 2015-05-22 | 606 | 3d | 0d | 1.06 |
| 609 | 1.7.13.4.2 | Puertas | 3d | 2015-05-18 A | 2015-05-20 | 606FS-1d | 3d | 0d | 3.65 |
| 610 | 1.7.13.4.3 | Instalacion de Artefactos | 5d | 2015-05-20 A | 2015-05-27 | 609FS-1d | 5d | 0d | 1.89 |
| 611 | 1.7.13.4.4 | Quincallerias | 2d | 2015-05-26 A | 2015-05-27 | 610FS-2d | 2d | 0d | 1.16 |
| 612 | 1.7.13.5 | **Fase 5** | 8d | 2015-05-19 A | 2015-05-29 |  | 8d | 0d | 4.64 |
| 613 | 1.7.13.5.1 | Trabajos previos pinturas | 6d | 2015-05-19 A | 2015-05-27 | 598, 602, 608FS-3d | 6d | 0d | 1.75 |
| 614 | 1.7.13.5.2 | Pinturas | 5d | 2015-05-25 A | 2015-05-29 | 613FS-3d | 5d | 0d | 2.89 |
| 615 | 1.7.13.6 | **Fase 6** | 10d | 2015-06-01 A | 2015-06-12 |  | 10d | 0d | 0.35 |
| 616 | 1.7.13.6.1 | Levantamiento de Observaciones | 10d | 2015-06-01 A | 2015-06-12 | 614 | 10d | 0d | 0.35 |

| ID | WBS | Task | Duration | Start | Finish | Predecessors | Remaining | Total slack | Cost |
| --- | --- | --- | --- | --- | --- | --- | --- | --- | --- |
| 617 | 1.7.14 | **PISO 8** | 50d | 2015-04-10 A | 2015-06-19 |  | 50d | 0d | 57.03 |
| 618 | 1.7.14.1 | **Fase 1** | 10d | 2015-04-10 A | 2015-04-23 |  | 10d | 0d | 18.93 |
| 619 | 1.7.14.1.1 | Descarachado y Destape de Pasadas | 3d | 2015-04-10 A | 2015-04-14 | 305FS+20d | 3d | 0d | 1.14 |
| 620 | 1.7.14.1.2 | Sobrelosas | 2d | 2015-04-10 A | 2015-04-13 | 305FS+20d | 2d | 0d | 3.97 |
| 621 | 1.7.14.1.3 | Tabiques Estructuracion y tapado 1° Cara | 4d | 2015-04-13 A | 2015-04-16 | 620FS-1d | 4d | 0d | 7.21 |
| 622 | 1.7.14.1.4 | Intalaciones Interior Tabique | 6d | 2015-04-15 A | 2015-04-22 | 621FS-2d | 6d | 0d | 3.33 |
| 623 | 1.7.14.1.5 | Tabiques Tapado 2° Cara | 3d | 2015-04-21 A | 2015-04-23 | 622FS-2d | 3d | 0d | 3.29 |
| 624 | 1.7.14.2 | **Fase 2** | 14d | 2015-04-24 A | 2015-05-13 |  | 14d | 0d | 16.77 |
| 625 | 1.7.14.2.1 | Estructuracion de Cielos | 5d | 2015-04-24 A | 2015-04-30 | 623 | 5d | 0d | 3.57 |
| 626 | 1.7.14.2.2 | Intalaciones Interior Cielo | 4d | 2015-04-29 A | 2015-05-04 | 625FS-2d | 4d | 0d | 3.87 |
| 627 | 1.7.14.2.3 | Tapado de Cielo | 3d | 2015-05-06 A | 2015-05-08 | 626FS+1d | 3d | 0d | 7.18 |
| 628 | 1.7.14.2.4 | Yesos, Pastas y Huinchas | 5d | 2015-05-07 A | 2015-05-13 | 627FS-2d | 5d | 0d | 2.15 |
| 629 | 1.7.14.3 | **Fase 3** | 11d | 2015-05-11 A | 2015-05-26 |  | 11d | 0d | 8.58 |
| 630 | 1.7.14.3.1 | Revestimeintos en Muros | 7d | 2015-05-11 A | 2015-05-19 | 628FS-3d | 7d | 0d | 3.67 |
| 631 | 1.7.14.3.2 | Pavimentos | 6d | 2015-05-18 A | 2015-05-26 | 630FS-2d | 6d | 0d | 4.91 |
| 632 | 1.7.14.4 | **Fase 4** | 7d | 2015-05-26 A | 2015-06-03 |  | 7d | 0d | 7.76 |
| 633 | 1.7.14.4.1 | Marcos de Puertas | 3d | 2015-05-27 A | 2015-05-29 | 631 | 3d | 0d | 1.06 |
| 634 | 1.7.14.4.2 | Puertas | 3d | 2015-05-26 A | 2015-05-28 | 631FS-1d | 3d | 0d | 3.65 |
| 635 | 1.7.14.4.3 | Instalacion de Artefactos | 5d | 2015-05-28 A | 2015-06-03 | 634FS-1d | 5d | 0d | 1.89 |
| 636 | 1.7.14.4.4 | Quincallerias | 2d | 2015-06-02 A | 2015-06-03 | 635FS-2d | 2d | 0d | 1.16 |
| 637 | 1.7.14.5 | **Fase 5** | 8d | 2015-05-27 A | 2015-06-05 |  | 8d | 0d | 4.64 |
| 638 | 1.7.14.5.1 | Trabajos previos pinturas | 6d | 2015-05-27 A | 2015-06-03 | 623, 627, 633FS-3d | 6d | 0d | 1.75 |
| 639 | 1.7.14.5.2 | Pinturas | 5d | 2015-06-01 A | 2015-06-05 | 638FS-3d | 5d | 0d | 2.89 |
| 640 | 1.7.14.6 | **Fase 6** | 10d | 2015-06-08 A | 2015-06-19 |  | 10d | 0d | 0.35 |
| 641 | 1.7.14.6.1 | Levantamiento de Observaciones | 10d | 2015-06-08 A | 2015-06-19 | 639 | 10d | 0d | 0.35 |

| ID | WBS | Task | Duration | Start | Finish | Predecessors | Remaining | Total slack | Cost |
| --- | --- | --- | --- | --- | --- | --- | --- | --- | --- |
| 642 | 1.7.15 | **PISO 9** | 15d | 2015-05-08 A | 2015-05-29 |  | 15d | 0d | 4.48 |
| 643 | 1.7.15.1 | **Fase 1** | 4d | 2015-05-08 A | 2015-05-13 |  | 4d | 0d | 2.14 |
| 644 | 1.7.15.1.1 | Descarachado y Destape de Pasadas | 4d | 2015-05-08 A | 2015-05-13 | 305FS+40d | 4d | 0d | 2.14 |
| 645 | 1.7.15.2 | **Fase 2** | 7d | 2015-05-14 A | 2015-05-25 |  | 7d | 0d | 1.88 |
| 646 | 1.7.15.2.1 | Instalaciones y terminaciones habilitación | 7d | 2015-05-14 A | 2015-05-25 | 644 | 7d | 0d | 1.88 |
| 647 | 1.7.15.3 | **Fase 3** | 4d | 2015-05-26 A | 2015-05-29 |  | 4d | 0d | 0.46 |
| 648 | 1.7.15.3.1 | Levantamiento de Observaciones | 4d | 2015-05-26 A | 2015-05-29 | 646 | 4d | 0d | 0.46 |
| 649 | 1.7.16 | **PISO 10** | 15d | 2015-05-15 A | 2015-06-05 |  | 15d | 0d | 4.36 |
| 650 | 1.7.16.1 | **Fase 1** | 4d | 2015-05-15 A | 2015-05-20 |  | 4d | 0d | 2.14 |
| 651 | 1.7.16.1.1 | Descarachado y Destape de Pasadas | 4d | 2015-05-15 A | 2015-05-20 | 305FS+45d | 4d | 0d | 2.14 |
| 652 | 1.7.16.2 | **Fase 2** | 7d | 2015-05-22 A | 2015-06-01 |  | 7d | 0d | 1.88 |
| 653 | 1.7.16.2.1 | Instalaciones y terminaciones habilitación | 7d | 2015-05-22 A | 2015-06-01 | 651 | 7d | 0d | 1.88 |
| 654 | 1.7.16.3 | **Fase 3** | 4d | 2015-06-02 A | 2015-06-05 |  | 4d | 0d | 0.35 |
| 655 | 1.7.16.3.1 | Levantamiento de Observaciones | 4d | 2015-06-02 A | 2015-06-05 | 653 | 4d | 0d | 0.35 |
| 656 | 1.7.17 | **PISO SM** | 10d | 2015-05-25 A | 2015-06-05 |  | 10d | 0d | 4.36 |
| 657 | 1.7.17.1 | **Fase 1** | 3d | 2015-05-25 A | 2015-05-27 |  | 3d | 0d | 2.14 |
| 658 | 1.7.17.1.1 | Descarachado y Destape de Pasadas | 3d | 2015-05-25 A | 2015-05-27 | 305FS+50d, 314 | 3d | 0d | 2.14 |
| 659 | 1.7.17.2 | **Fase 2** | 4d | 2015-05-28 A | 2015-06-02 |  | 4d | 0d | 1.88 |
| 660 | 1.7.17.2.1 | Instalaciones y terminaciones habilitación | 4d | 2015-05-28 A | 2015-06-02 | 658 | 4d | 0d | 1.88 |
| 661 | 1.7.17.3 | **Fase 3** | 3d | 2015-06-03 A | 2015-06-05 |  | 3d | 0d | 0.35 |
| 662 | 1.7.17.3.1 | Levantamiento de Observaciones | 3d | 2015-06-03 A | 2015-06-05 | 660 | 3d | 0d | 0.35 |
| 663 | 1.8 | **INSTALACIONES** | 127d | 2014-12-22 A | 2015-06-19 | 8, 10, 11, 12, 13, 14, 15, 16, 17, 18, 19, 20, 21, 22, 23 | 127d | 0d | 1,048.82 |
| 664 | 1.8.1 | SUBTERRANEO -5 | 40d | 2014-12-22 A | 2015-02-17 | 317FS-40d | 40d | 0d | 119.37 |
| 665 | 1.8.2 | SUBTERRANEO -4 | 40d | 2014-12-29 A | 2015-02-23 | 342FS-40d | 40d | 0d | 75.97 |
| 666 | 1.8.3 | SUBTERRANEO -3 | 40d | 2015-01-09 A | 2015-03-05 | 42, 43, 367FS-40d | 40d | 0d | 75.97 |
| 667 | 1.8.4 | SUBTERRANEO -2 | 45d | 2015-01-15 A | 2015-03-18 | 392FS-45d | 45d | 0d | 75.97 |
| 668 | 1.8.5 | SUBTERRANEO -1 (ZOCALO) | 45d | 2015-01-28 A | 2015-03-31 | 417FS-45d | 45d | 0d | 121.37 |
| 669 | 1.8.6 | PISO 1 | 40d | 2015-02-17 A | 2015-04-13 | 442FS-40d | 40d | 0d | 65.81 |
| 670 | 1.8.7 | PISO 2 | 40d | 2015-02-26 A | 2015-04-22 | 467FS-40d | 40d | 0d | 65.81 |
| 671 | 1.8.8 | PISO 3 | 40d | 2015-03-09 A | 2015-05-01 | 492FS-40d | 40d | 0d | 65.81 |
| 672 | 1.8.9 | PISO 4 | 40d | 2015-03-18 A | 2015-05-12 | 517FS-40d | 40d | 0d | 65.81 |
| 673 | 1.8.10 | PISO 5 | 40d | 2015-03-27 A | 2015-05-22 | 542FS-40d | 40d | 0d | 65.81 |
| 674 | 1.8.11 | PISO 6 | 40d | 2015-04-10 A | 2015-06-05 | 567FS-40d | 40d | 0d | 65.81 |
| 675 | 1.8.12 | PISO 7 | 40d | 2015-04-17 A | 2015-06-12 | 592FS-40d | 40d | 0d | 65.81 |
| 676 | 1.8.13 | PISO 8 | 40d | 2015-04-24 A | 2015-06-19 | 617FS-40d | 40d | 0d | 65.81 |
| 677 | 1.8.14 | PISO 9 | 10d | 2015-05-15 A | 2015-05-29 | 642FS-10d | 10d | 0d | 26.84 |
| 678 | 1.8.15 | PISO 10 | 10d | 2015-05-25 A | 2015-06-05 | 649FS-10d | 10d | 0d | 26.84 |
| 679 | 1.8.16 | PISO SM | 10d | 2015-05-25 A | 2015-06-05 | 656FS-10d | 10d | 0d |  |

| ID | WBS | Task | Type | Duration | Start | Finish | Predecessors | Remaining | Total slack | Cost |
| --- | --- | --- | --- | --- | --- | --- | --- | --- | --- | --- |
| 680 | 1.9 | **FACHADAS** |  | 70d | 2015-02-23 A | 2015-06-01 |  | 70d | 0d | 308.09 |
| 681 | 1.9.1 | Revestimeinto Exterior |  | 70d | 2015-02-23 A | 2015-06-01 | 277 | 70d | 0d | 136.27 |
| 682 | 1.9.2 | Muro Cortinas y Ventanas |  | 70d | 2015-02-23 A | 2015-06-01 | 277 | 70d | 0d | 171.82 |
| 683 | 1.10 | **CUBIERTAS** |  | 30d | 2015-04-14 A | 2015-05-27 |  | 30d | 0d | 16.99 |
| 684 | 1.10.1 | Demovilizacion de OBRA GRUESA | milestone | 0d | 2015-04-14 A | 2015-04-14 | 314FS+14d | 0d | 0d | 3.91 |
| 685 | 1.10.2 | Cubiertas |  | 30d | 2015-04-15 A | 2015-05-27 | 684 | 30d | 0d | 13.08 |
| 686 | 1.11 | **ASCENSORES** |  | 59d | 2015-04-07 A | 2015-06-30 |  | 59d | 0d |  |
| 687 | 1.11.1 | Liberacion de escotilla | milestone | 0d | 2015-04-07 A | 2015-04-07 | 314FS+9d | 0d | 0d |  |
| 688 | 1.11.2 | Montaje y Puesta en Marcha |  | 59d | 2015-04-08 A | 2015-06-30 | 44, 687 | 59d | 0d |  |
| 689 | 1.12 | **OBRAS EXTERIORES** |  | 20d | 2015-05-20 A | 2015-06-17 |  | 20d | 0d | 7.53 |
| 690 | 1.12.1 | Obras SERVIU |  | 20d | 2015-05-20 A | 2015-06-17 | 24, 314FS+39d | 20d | 0d | 7.53 |
| 691 | 1.13 | **MONTAJE DE SEÑALETICAS** |  | 90d | 2015-01-30 A | 2015-06-05 |  | 90d | 0d |  |
| 692 | 1.13.1 | Montajes senaletcias |  | 90d | 2015-01-30 A | 2015-06-05 | 45, 637FF | 90d | 0d |  |
| 693 | 1.14 | **PAISAJISMO** |  | 21d | 2015-05-19 A | 2015-06-17 |  | 21d | 0d |  |
| 694 | 1.14.1 | Paisajismo |  | 21d | 2015-05-19 A | 2015-06-17 | 46, 690FF | 21d | 0d |  |
| 695 | 1.15 | **ENTREGA FINAL** |  | 15d | 2015-06-11 A | 2015-07-01 |  | 15d | 0d | 5.18 |
| 696 | 1.15.1 | Preceso de entrega |  | 15d | 2015-06-11 A | 2015-07-01 | 697FF | 15d | 0d | 2.59 |
| 697 | 1.15.2 | Entrega de final recintos |  | 1d | 2015-07-01 A | 2015-07-01 | 316, 317, 342, 367, 392, 417, 442, 467, 492, 517, 542, 567, 592, 617, 642, 649, 656, 664, 665, 666, 667, 668, 669, 670, 671, 672, 673, 674, 675, 676, 677, 678, 679, 681, 682, 683, 685, 686, 688, 690 | 1d | 0d | 2.59 |
| 698 | 1.15.3 | Hito entrega obra | milestone | 0d | 2015-07-01 A | 2015-07-01 | 692, 694, 696, 697 | 0d | 0d |  |
