# Obra Hotel

Schedule from MS Project XML, 2013-12-31 to 2015-02-11, A marks actual dates.

## Calendars

- Estándar: Mon-Fri 09:00-13:00, 15:00-19:00; Sat-Sun off.

## Schedule

| ID | WBS | Task | Type | Duration | Start | Finish | Predecessors | Complete | Remaining | Total slack | Constraint |
| --- | --- | --- | --- | --- | --- | --- | --- | --- | --- | --- | --- |
| 1 | 1 | **Programa Terminaciones Hotel Courtyard** |  | 292d | 2013-12-31 A | 2015-02-11 |  | 61% | 113.88d | 0d |  |
| 2 | 1.1 | **HITOS** |  | 264d | 2013-12-31 A | 2015-01-05 |  |  | 264d | 0d |  |
| 3 | 1.1.1 | Entrada contrato terminaciones | milestone | 0d | 2014-01-06 A | 2014-01-06 |  |  | 0d | 0d | start no earlier than 2014-01-06 |
| 4 | 1.1.2 | Entrega de planos y fichas Arquitectura por parte mandante | milestone | 0d | 2014-01-03 A | 2014-01-03 |  |  | 0d | 0d | start no earlier than 2014-01-03 |
| 5 | 1.1.3 | Inicio de obra | milestone | 0d | 2014-01-06 A | 2014-01-06 | 3 |  | 0d | 0d |  |
| 6 | 1.1.4 | Entrega de 2 habitaciones piloto terminadas | milestone | 0d | 2014-04-15 A | 2014-04-15 |  |  | 0d | 0d | start no earlier than 2014-04-15 |
| 7 | 1.1.5 | Ingreso de Marriott pisos 1 y 6 (sala calderas, grupo generador y cocina instalada y certificada) | milestone | 0d | 2014-09-15 A | 2014-09-15 |  |  | 0d | 0d | start no earlier than 2014-09-15 |
| 8 | 1.1.6 | Entrega documentación y certificación de materiales | milestone | 0d | 2014-10-15 A | 2014-10-15 |  |  | 0d | 0d | start no earlier than 2014-10-15 |
| 9 | 1.1.7 | Entrega hasta piso 16 | milestone | 0d | 2014-11-11 A | 2014-11-11 |  |  | 0d | 0d | start no earlier than 2014-11-11 |
| 10 | 1.1.8 | Entrega certificación de proyecto sanitario, basura y piscina | milestone | 0d | 2015-01-05 A | 2015-01-05 |  |  | 0d | 0d | start no earlier than 2015-01-05 |
| 11 | 1.1.9 | Llegada suministro ascensores | milestone | 0d | 2014-04-11 A | 2014-04-11 |  |  | 0d | 0d | start no earlier than 2014-04-11 |
| 12 | 1.1.10 | Llegada suministro grupo electrógeno | milestone | 0d | 2013-12-31 A | 2013-12-31 |  |  | 0d | 0d | start no earlier than 2013-12-31 |
| 13 | 1.1.11 | Llegada suministro transformadores, celdas | milestone | 0d | 2014-03-07 A | 2014-03-07 |  |  | 0d | 0d | start no earlier than 2014-03-07 |
| 14 | 1.1.12 | Equipos de climatizacion VRV | milestone | 0d | 2014-04-30 A | 2014-04-30 |  |  | 0d | 0d | start no earlier than 2014-04-30 |
| 15 | 1.1.13 | Equipos de climatización roof top | milestone | 0d | 2014-01-27 A | 2014-01-27 |  |  | 0d | 0d | start no earlier than 2014-01-27 |
| 16 | 1.1.14 | Entrega sala de calderas | milestone | 0d | 2014-07-15 A | 2014-07-15 |  |  | 0d | 0d | start no earlier than 2014-07-15 |
| 17 | 1.1.15 | Entrega sala electrica tercer subterraneo | milestone | 0d | 2014-03-14 A | 2014-03-14 |  |  | 0d | 0d | start no earlier than 2014-03-14 |
| 18 | 1.1.16 | Presentacion de planos fabricacion ventaneria | milestone | 0d | 2014-02-21 A | 2014-02-21 |  |  | 0d | 0d | start no earlier than 2014-02-21 |
| 19 | 1.1.17 | Presentacion a mandante Mock-up | milestone | 0d | 2014-03-21 A | 2014-03-21 |  |  | 0d | 0d | start no earlier than 2014-03-21 |
| 20 | 1.1.18 | Presentacion proyecto cocina | milestone | 0d | 2014-01-30 A | 2014-01-30 |  |  | 0d | 0d | start no earlier than 2014-01-30 |
| 21 | 1.1.19 | Aprobacion proyecto cocina | milestone | 0d | 2014-02-10 A | 2014-02-10 | 20 |  | 0d | 0d | start no earlier than 2014-02-10 |
| 22 | 1.1.20 | Presentacion proyecto camaras de frio | milestone | 0d | 2014-02-17 A | 2014-02-17 |  |  | 0d | 0d | start no earlier than 2014-02-17 |
| 23 | 1.1.21 | Aprobacion proyecto camara de frio | milestone | 0d | 2014-02-24 A | 2014-02-24 | 22 |  | 0d | 0d | start no earlier than 2014-02-24 |
| 24 | 1.1.22 | Entrega proyecto trespa Megacenter | milestone | 0d | 2014-02-10 A | 2014-02-10 |  |  | 0d | 0d | start no earlier than 2014-02-10 |
| 25 | 1.1.23 | ENTREGA PROYECTO DE DEMARCACIÒN | milestone | 0d | 2014-07-11 A | 2014-07-11 |  |  | 0d | 0d | start no earlier than 2014-07-11 |
| 26 | 1.1.24 | Termino de obra | milestone | 0d | 2014-11-28 A | 2014-11-28 |  |  | 0d | 0d | start no earlier than 2014-11-28 |

| ID | WBS | Task | Type | Duration | Start | Finish | Predecessors | Complete | Remaining | Total slack | Constraint |
| --- | --- | --- | --- | --- | --- | --- | --- | --- | --- | --- | --- |
| 27 | 1.2 | **3º Subterraneo** |  | 202d | 2014-01-24 A | 2014-11-04 |  | 93% | 14.14d | 0d |  |
| 28 | 1.2.1 | Entrega obra gruesa | milestone | 0d | 2014-01-24 A | 2014-01-24 | 3FS+15d | 100% | 0d | 0d |  |
| 29 | 1.2.2 | Trazado |  | 3d | 2014-01-27 A | 2014-01-29 | 28 | 100% | 0d | 0d |  |
| 30 | 1.2.3 | Tabiqueria |  | 10d | 2014-02-07 A | 2014-02-20 | 29FS+6d | 100% | 0d | 0d |  |
| 31 | 1.2.4 | Pinturas Interiores (losalin y tabique) |  | 23d | 2014-04-01 A | 2014-05-01 | 30FS+27d | 100% | 0d | 0d |  |
| 32 | 1.2.5 | Cierre Acmafor Sala electrica |  | 10d | 2014-04-18 A | 2014-05-01 | 31FS-10d | 100% | 0d | 0d |  |
| 33 | 1.2.6 | Mortero ignifugo vigas |  | 5d | 2014-02-10 A | 2014-02-14 | 28FS+10d | 100% | 0d | 0d |  |
| 34 | 1.2.7 | LLEGADA DE PUERTAS | milestone | 0d | 2014-10-24 A | 2014-10-24 |  |  | 0d | 0d | start no earlier than 2014-10-24 |
| 35 | 1.2.8 | Instalacion de puertas |  | 5d | 2014-10-29 A | 2014-11-04 | 34FS+2d |  | 5d | 0d | start no earlier than 2014-10-24 |
| 36 | 1.2.9 | Pintura de pilares |  | 10d | 2014-05-02 A | 2014-05-15 | 31 | 100% | 0d | 0d |  |
| 37 | 1.2.10 | Pintura demarcación |  | 7d | 2014-09-12 A | 2014-09-22 | 25FS+45d | 100% | 0d | 0d |  |
| 38 | 1.2.11 | Entrega piso | milestone | 0d | 2014-10-21 A | 2014-10-21 | 35 | 100% | 0d | 0d |  |
| 39 | 1.3 | **2º Subterraneo** |  | 203d | 2014-02-03 A | 2014-11-13 |  | 94% | 12.18d | 0d |  |
| 40 | 1.3.1 | Entrega obra gruesa | milestone | 0d | 2014-02-03 A | 2014-02-03 | 3FS+21d | 100% | 0d | 0d |  |
| 41 | 1.3.2 | Trazado |  | 1d | 2014-02-04 A | 2014-02-04 | 40 | 100% | 0d | 0d |  |
| 42 | 1.3.3 | Tabiqueria |  | 18d | 2014-02-18 A | 2014-03-13 | 41FS+9d | 100% | 0d | 0d |  |
| 43 | 1.3.4 | Sobrelosa |  | 5d | 2014-07-11 A | 2014-07-17 | 42FS+85d | 100% | 0d | 0d |  |
| 44 | 1.3.5 | Impermeabilización |  | 6d | 2014-07-18 A | 2014-07-25 | 43 | 100% | 0d | 0d |  |
| 45 | 1.3.6 | Instalacion baldosas |  | 20d | 2014-08-04 A | 2014-08-29 | 44FS+5d | 100% | 0d | 0d |  |
| 46 | 1.3.7 | Pinturas Interiores (losalin y tabique) |  | 21d | 2014-04-18 A | 2014-05-16 | 42FS+25d | 100% | 0d | 0d |  |
| 47 | 1.3.8 | Instalacion paneles aislantes |  | 10d | 2014-09-12 A | 2014-09-25 | 45FS+9d | 100% | 0d | 0d |  |
| 48 | 1.3.9 | Pintura piso cuarzo |  | 6d | 2014-08-15 A | 2014-08-22 | 46FS+64d | 100% | 0d | 0d |  |
| 49 | 1.3.10 | Instalacion de puertas |  | 7d | 2014-11-05 A | 2014-11-13 | 35 |  | 7d | 0d | start no earlier than 2014-10-24 |
| 50 | 1.3.11 | Pintura de pilares |  | 14d | 2014-05-16 A | 2014-06-04 | 36 | 100% | 0d | 0d |  |
| 51 | 1.3.12 | Pintura demarcación |  | 5d | 2014-09-23 A | 2014-09-29 | 37 | 100% | 0d | 0d |  |
| 52 | 1.3.13 | Entrega piso | milestone | 0d | 2014-10-30 A | 2014-10-30 | 49 | 100% | 0d | 0d |  |

| ID | WBS | Task | Type | Duration | Start | Finish | Predecessors | Complete | Remaining | Total slack | Constraint |
| --- | --- | --- | --- | --- | --- | --- | --- | --- | --- | --- | --- |
| 53 | 1.4 | **1º Subterraneo** |  | 205d | 2014-02-03 A | 2014-11-17 |  | 98% | 4.1d | 0d |  |
| 54 | 1.4.1 | Entrega obra gruesa | milestone | 0d | 2014-02-03 A | 2014-02-03 | 3FS+21d | 100% | 0d | 0d |  |
| 55 | 1.4.2 | Trazado |  | 1d | 2014-02-04 A | 2014-02-04 | 54 | 100% | 0d | 0d |  |
| 56 | 1.4.3 | Tabiqueria |  | 18d | 2014-02-25 A | 2014-03-20 | 55FS+14d | 100% | 0d | 0d |  |
| 57 | 1.4.4 | Refuerzo y estructura grupo electrógeno |  | 25d | 2014-03-21 A | 2014-04-24 | 56 | 100% | 0d | 0d |  |
| 58 | 1.4.5 | Pinturas interiores (losalin y tabique) |  | 21d | 2014-04-25 A | 2014-05-23 | 56FS+25d | 100% | 0d | 0d |  |
| 59 | 1.4.6 | Pintura piso cuarzo |  | 6d | 2014-08-15 A | 2014-08-22 | 48FS-6d | 100% | 0d | 0d |  |
| 60 | 1.4.7 | Instalacion de puertas |  | 2d | 2014-11-14 A | 2014-11-17 | 49 |  | 2d | 0d |  |
| 61 | 1.4.8 | Pintura de pilares |  | 14d | 2014-06-05 A | 2014-06-24 | 50 | 100% | 0d | 0d |  |
| 62 | 1.4.9 | Pintura demarcación |  | 7d | 2014-09-30 A | 2014-10-08 | 51 | 100% | 0d | 0d |  |
| 63 | 1.4.10 | Entrega piso |  | 1d | 2014-11-04 A | 2014-11-04 | 60, 62 | 100% | 0d | 0d |  |
| 64 | 1.5 | **1º piso** |  | 189d | 2014-02-13 A | 2014-11-05 |  | 96% | 7.56d | 0d |  |
| 65 | 1.5.1 | **Areas de Servicio** |  | 189d | 2014-02-13 A | 2014-11-05 |  | 97% | 5.67d | 0d |  |
| 66 | 1.5.1.1 | Entrega obra gruesa | milestone | 0d | 2014-02-13 A | 2014-02-13 | 3FS+29d | 100% | 0d | 0d |  |
| 67 | 1.5.1.2 | Trazado |  | 2d | 2014-02-14 A | 2014-02-17 | 66 | 100% | 0d | 0d |  |
| 68 | 1.5.1.3 | DIAS ACORDADOS POR DERCO |  | 9d | 2014-02-20 A | 2014-03-04 |  | 100% | 0d | 0d | start no earlier than 2014-02-20 |
| 69 | 1.5.1.4 | DESARME SALA DERCO |  | 6d | 2014-03-05 A | 2014-03-12 | 68 | 100% | 0d | 0d |  |
| 70 | 1.5.1.5 | Sobrelosa |  | 5d | 2014-03-13 A | 2014-03-19 | 69 | 100% | 0d | 0d |  |
| 71 | 1.5.1.6 | Carpinteria metalica tabiques |  | 15d | 2014-03-20 A | 2014-04-09 | 70 | 100% | 0d | 0d |  |
| 72 | 1.5.1.7 | Tabiqueria |  | 45d | 2014-04-17 A | 2014-06-18 | 70, 71FS+5d | 100% | 0d | 0d |  |
| 73 | 1.5.1.8 | Pinturas Interiores |  | 30d | 2014-07-17 A | 2014-08-27 | 72FS+20d | 100% | 0d | 0d |  |
| 74 | 1.5.1.9 | Tabiques vidriados |  | 20d | 2014-08-21 A | 2014-09-17 | 72FS+45d | 100% | 0d | 0d |  |
| 75 | 1.5.1.10 | **Instalacion Revestimientos** |  | 52.23d | 2014-08-14 A | 2014-10-27 |  | 99% | 0.52d | 0d |  |
| 76 | 1.5.1.10.1 | Instalacion porcelanato |  | 15d | 2014-08-26 A | 2014-09-15 | 84 | 100% | 0d | 0d |  |
| 77 | 1.5.1.10.2 | Instalacion Baldosas |  | 23d | 2014-08-14 A | 2014-10-27 | 72FS+40d | 99% | 0.23d | 0d |  |
| 78 | 1.5.1.10.3 | Pintura piso cuarzo |  | 10d | 2014-09-16 A | 2014-09-29 | 58, 59, 76 | 100% | 0d | 0d |  |
| 79 | 1.5.1.10.4 | Pintura losalin |  | 15d | 2014-09-02 A | 2014-09-22 | 72FS+53d | 100% | 0d | 0d |  |
| 80 | 1.5.1.11 | Guardapolvos |  | 25d | 2014-08-28 A | 2014-10-27 | 73 | 99% | 0.25d | 0d |  |
| 81 | 1.5.1.12 | Puertas (colocación marco, tacos, colocación hoja, quincallería) |  | 25d | 2014-08-28 A | 2014-10-01 | 73 | 100% | 0d | 0d |  |

| ID | WBS | Task | Type | Duration | Start | Finish | Predecessors | Complete | Remaining | Total slack | Constraint |
| --- | --- | --- | --- | --- | --- | --- | --- | --- | --- | --- | --- |
| 82 | 1.5.1.13 | **Baños** |  | 56d | 2014-07-21 A | 2014-10-06 |  | 100% | 0d | 0d |  |
| 83 | 1.5.1.13.1 | Zocalos |  | 10d | 2014-07-21 A | 2014-08-01 | 72FS+22d | 100% | 0d | 0d |  |
| 84 | 1.5.1.13.2 | Impermeabilizacion |  | 12d | 2014-08-08 A | 2014-08-25 | 72FS+36d, 83 | 100% | 0d | 0d |  |
| 85 | 1.5.1.13.3 | Instalacion de artefactos sanitarios |  | 15d | 2014-09-16 A | 2014-10-06 | 76 | 100% | 0d | 0d |  |
| 86 | 1.5.1.13.4 | Tabiques divisorios |  | 6d | 2014-09-29 A | 2014-10-06 | 85FS-6d | 100% | 0d | 0d |  |
| 87 | 1.5.1.13.5 | Instalacion cubiertas |  | 5d | 2014-09-30 A | 2014-10-06 | 76FS+10d | 100% | 0d | 0d |  |
| 88 | 1.5.1.13.6 | Instalacion espejo |  | 4d | 2014-10-01 A | 2014-10-06 | 85FS-5d, 87FS-4d | 100% | 0d | 0d |  |
| 89 | 1.5.1.14 | ENTREGA MASTER CLIMA CIELO AREA DE SERVICIO | milestone | 0d | 2014-08-29 A | 2014-08-29 |  | 100% | 0d | 0d | start no earlier than 2014-08-29 |
| 90 | 1.5.1.15 | **Cielos** |  | 41.05d | 2014-08-29 A | 2014-10-27 |  | 99% | 0.41d | 0d |  |
| 91 | 1.5.1.15.1 | Cielo volcanita |  | 26d | 2014-08-29 A | 2014-10-03 | 72FS+40d, 89 | 100% | 0d | 0d |  |
| 92 | 1.5.1.15.2 | Cielo Palmeta acústica |  | 5d | 2014-10-13 A | 2014-10-27 | 72FS+82d, 89 | 99% | 0.05d | 0d |  |
| 93 | 1.5.1.16 | **Cierre Equipos frío alimentario y bicicletero** |  | 62.45d | 2014-07-31 A | 2014-10-27 |  | 99% | 0.62d | 0d |  |
| 94 | 1.5.1.16.1 | Cierre Camara de frio y bicicletero |  | 45d | 2014-07-31 A | 2014-10-27 | 72FS+30d | 99% | 0.45d | 0d |  |
| 95 | 1.5.1.17 | Cortina de rollo |  | 10d | 2014-09-22 A | 2014-10-03 | 72FS+67d | 100% | 0d | 0d |  |
| 96 | 1.5.1.18 | SUMINISTRO DE JUNTA | milestone | 0d | 2014-09-29 A | 2014-09-29 |  | 100% | 0d | 0d | start no earlier than 2014-09-29 |
| 97 | 1.5.1.19 | Instalación junta dilatación |  | 7d | 2014-10-28 A | 2014-11-05 | 238FS+21d |  | 7d | 0d |  |
| 98 | 1.5.1.20 | **Aprobacion proyecto cocina** |  | 32.15d | 2014-09-11 A | 2014-10-27 |  | 99% | 0.32d | 0d |  |
| 99 | 1.5.1.20.1 | Habilitacion cocina |  | 15d | 2014-09-11 A | 2014-10-27 | 23, 76FS-3d, 77FS-3d | 99% | 0.15d | 0d |  |
| 100 | 1.5.1.21 | **Proyecto camaras de frio** |  | 52.25d | 2014-08-14 A | 2014-10-27 |  | 99% | 0.52d | 0d |  |
| 101 | 1.5.1.21.1 | Instalacion paneles e instalacion frio alimentario |  | 25d | 2014-08-29 A | 2014-10-27 | 104 | 99% | 0.25d | 0d |  |
| 102 | 1.5.1.21.2 | Sobrelosa Pasillo |  | 4d | 2014-08-14 A | 2014-08-19 | 72FS+40d | 100% | 0d | 0d |  |
| 103 | 1.5.1.21.3 | Tabiquería |  | 4d | 2014-08-15 A | 2014-08-20 | 102FS-3d | 100% | 0d | 0d |  |
| 104 | 1.5.1.21.4 | Baldosas |  | 6d | 2014-08-21 A | 2014-08-28 | 103 | 100% | 0d | 0d |  |
| 105 | 1.5.1.22 | Entrega |  | 5.25d | 2014-10-17 A | 2014-11-03 | 81, 88, 90, 99, 101 |  | 5.25d | 0d |  |

| ID | WBS | Task | Type | Duration | Start | Finish | Predecessors | Complete | Remaining | Total slack | Constraint |
| --- | --- | --- | --- | --- | --- | --- | --- | --- | --- | --- | --- |
| 106 | 1.5.2 | **Hall de acceso** |  | 145d | 2014-04-14 A | 2014-11-03 |  | 94% | 8.7d | 0d |  |
| 107 | 1.5.2.1 | MURO CORTINA COSTILLA VIDRIADO ESTIMADO | milestone | 0d | 2014-09-25 A | 2014-09-25 |  | 100% | 0d | 0d | start no earlier than 2014-09-25 |
| 108 | 1.5.2.2 | MURO CORTINA COSTILLA TERMINADO ESTIMADO | milestone | 0d | 2014-10-24 A | 2014-10-24 |  |  | 0d | 0d | start no earlier than 2014-10-24 |
| 109 | 1.5.2.3 | Entrega obra gruesa | milestone | 0d | 2014-04-14 A | 2014-04-14 | 3FS+71d | 100% | 0d | 0d |  |
| 110 | 1.5.2.4 | Demolicion pavimento existente |  | 20d | 2014-04-22 A | 2014-05-19 | 109FS+5d | 100% | 0d | 0d |  |
| 111 | 1.5.2.5 | Retiro de escombros |  | 2d | 2014-05-20 A | 2014-05-21 | 110 | 100% | 0d | 0d |  |
| 112 | 1.5.2.6 | Sobrelosas |  | 6d | 2014-05-22 A | 2014-05-29 | 111 | 100% | 0d | 0d |  |
| 113 | 1.5.2.7 | Porcelanato pilares |  | 35d | 2014-08-01 A | 2014-10-27 | 112FS+45d | 98% | 0.7d | 0d |  |
| 114 | 1.5.2.8 | Tabique divisorio Derco (TE) |  | 25d | 2014-05-20 A | 2014-06-23 | 110 | 100% | 0d | 0d |  |
| 115 | 1.5.2.9 | Porcelanato Piso |  | 10d | 2014-09-30 A | 2014-11-03 | 108 | 40% | 6d | 0d |  |
| 116 | 1.5.2.10 | Porcelanato Muros |  | 35d | 2014-08-12 A | 2014-10-27 | 114FS+35d | 98% | 0.7d | 0d |  |
| 117 | 1.5.2.11 | REFUERZO M2 |  | 10d | 2014-07-08 A | 2014-07-21 | 5FS+131d | 100% | 0d | 0d |  |
| 118 | 1.5.2.12 | Tabiqueria Interior |  | 25d | 2014-07-22 A | 2014-08-25 | 112, 117 | 100% | 0d | 0d |  |
| 119 | 1.5.2.13 | ENTREGA DE MARCOS Y PUERTAS ASCENSORES P1 Y P2 | milestone | 0d | 2014-09-22 A | 2014-09-22 |  | 100% | 0d | 0d | start no earlier than 2014-09-22 |
| 120 | 1.5.2.14 | Remate Ascensores |  | 10d | 2014-09-22 A | 2014-10-28 | 119 | 80% | 2d | 0d |  |
| 121 | 1.5.2.15 | Cielo interior |  | 25d | 2014-09-18 A | 2014-10-22 | 107FS-5d, 118FS-6d | 100% | 0d | 0d |  |
| 122 | 1.5.2.16 | Pintura cielos |  | 8d | 2014-10-13 A | 2014-10-30 | 121FS-8d | 50% | 4d | 0d |  |
| 123 | 1.5.2.17 | Pintura tabiques |  | 20d | 2014-08-26 A | 2014-09-22 | 118 | 100% | 0d | 0d |  |
| 124 | 1.5.2.18 | Habilitacion baño (revestimientos- artefactos) |  | 40d | 2014-08-14 A | 2014-10-28 | 118FS-8d | 95% | 2d | 0d |  |
| 125 | 1.5.2.19 | Entrega | milestone | 0d | 2014-10-30 A | 2014-10-30 | 122 |  | 0d | 0d | start no earlier than 2014-10-24 |
| 126 | 1.6 | **Sala calderas** |  | 220d | 2014-01-06 A | 2014-11-07 |  | 100% | 0d | 0d |  |
| 127 | 1.6.1 | Entrega obra gruesa | milestone | 0d | 2014-01-06 A | 2014-01-06 | 3 | 100% | 0d | 0d |  |
| 128 | 1.6.2 | Refuerzo y estructura |  | 25d | 2014-01-06 A | 2014-02-07 | 127 | 100% | 0d | 0d |  |
| 129 | 1.6.3 | Instalación Celosía |  | 15d | 2014-10-20 A | 2014-11-07 | 128FS+180d | 100% | 0d | 0d |  |

| ID | WBS | Task | Type | Duration | Start | Finish | Predecessors | Complete | Remaining | Total slack | Constraint |
| --- | --- | --- | --- | --- | --- | --- | --- | --- | --- | --- | --- |
| 130 | 1.7 | **3º Piso** |  | 173d | 2014-03-17 A | 2014-11-13 |  | 90% | 17.3d | 0d |  |
| 131 | 1.7.1 | Entrega obra gruesa | milestone | 0d | 2014-03-17 A | 2014-03-17 | 3FS+51d | 100% | 0d | 0d |  |
| 132 | 1.7.2 | Trazado |  | 1d | 2014-03-18 A | 2014-03-18 | 131 | 100% | 0d | 0d |  |
| 133 | 1.7.3 | Tabiqueria |  | 30d | 2014-04-09 A | 2014-05-20 | 132FS+15d | 100% | 0d | 0d |  |
| 134 | 1.7.4 | Tabiqueria Perimetral |  | 40d | 2014-08-06 A | 2014-10-28 | 133FS+55d | 95% | 2d | 0d |  |
| 135 | 1.7.5 | **Revestimiento piso** |  | 50d | 2014-07-30 A | 2014-10-07 |  | 100% | 0d | 0d |  |
| 136 | 1.7.5.1 | Pintura piso cuarzo |  | 6d | 2014-09-30 A | 2014-10-07 | 78 | 100% | 0d | 0d |  |
| 137 | 1.7.5.2 | Instalacion porcelanatos |  | 2d | 2014-07-30 A | 2014-07-31 | 133FS+50d | 100% | 0d | 0d |  |
| 138 | 1.7.6 | **Cielos** |  | 123d | 2014-05-21 A | 2014-11-07 |  | 38% | 76.26d | 0d |  |
| 139 | 1.7.6.1 | Pintura cielo losalin |  | 6d | 2014-05-21 A | 2014-05-28 | 133 | 100% | 0d | 0d |  |
| 140 | 1.7.6.2 | Instalacion palmetas acusticas |  | 10d | 2014-10-27 A | 2014-11-07 | 137FS+35d |  | 10d | 0d | start no earlier than 2014-10-24 |
| 141 | 1.7.7 | **Revestimiento muro** |  | 47d | 2014-07-02 A | 2014-09-04 |  | 100% | 0d | 0d |  |
| 142 | 1.7.7.1 | Pinturas interiores |  | 7d | 2014-07-02 A | 2014-07-10 | 133FS+30d | 100% | 0d | 0d |  |
| 143 | 1.7.7.2 | Porcelanatos |  | 10d | 2014-08-22 A | 2014-09-04 | 137FS+15d | 100% | 0d | 0d |  |
| 144 | 1.7.8 | Instalacion de puertas |  | 7d | 2014-11-05 A | 2014-11-13 | 35 |  | 7d | 0d | start no earlier than 2014-10-24 |
| 145 | 1.7.9 | Cenefas con Porcelanato |  | 35d | 2014-07-16 A | 2014-09-02 | 133FS+40d | 100% | 0d | 0d |  |
| 146 | 1.7.10 | Cenefa volcanita |  | 10d | 2014-09-15 A | 2014-10-27 | 143FS+6d | 95% | 0.5d | 0d |  |
| 147 | 1.7.11 | Pintura pilares |  | 10d | 2014-07-11 A | 2014-07-24 | 142 | 100% | 0d | 0d |  |
| 148 | 1.7.12 | Instalacion junta de dilatación |  | 10d | 2014-09-12 A | 2014-09-25 | 147FS+35d | 100% | 0d | 0d |  |
| 149 | 1.7.13 | Pintura demarcación |  | 10d | 2014-10-09 A | 2014-10-22 | 62 | 100% | 0d | 0d |  |
| 150 | 1.7.14 | Entrega | milestone | 0d | 2014-10-24 A | 2014-10-24 | 145, 149 |  | 0d | 0d | start no earlier than 2014-10-24 |
| 151 | 1.8 | **4º Piso** |  | 165d | 2014-04-07 A | 2014-11-24 |  | 92% | 13.2d | 0d |  |
| 152 | 1.8.1 | Entrega obra gruesa | milestone | 0d | 2014-04-07 A | 2014-04-07 | 3FS+66d | 100% | 0d | 0d |  |
| 153 | 1.8.2 | Trazado |  | 1d | 2014-04-08 A | 2014-04-08 | 152 | 100% | 0d | 0d |  |
| 154 | 1.8.3 | Tabiqueria |  | 25d | 2014-04-23 A | 2014-05-27 | 153FS+10d | 100% | 0d | 0d |  |
| 155 | 1.8.4 | Tabiqueria Perimetral |  | 40d | 2014-08-13 A | 2014-10-28 | 154FS+55d | 95% | 2d | 0d |  |

| ID | WBS | Task | Type | Duration | Start | Finish | Predecessors | Complete | Remaining | Total slack | Constraint |
| --- | --- | --- | --- | --- | --- | --- | --- | --- | --- | --- | --- |
| 156 | 1.8.5 | **Revestimiento piso** |  | 54d | 2014-08-01 A | 2014-10-15 |  | 100% | 0d | 0d |  |
| 157 | 1.8.5.1 | Pintura piso cuarzo |  | 6d | 2014-10-08 A | 2014-10-15 | 136 | 100% | 0d | 0d |  |
| 158 | 1.8.5.2 | Instalacion porcelanatos |  | 2d | 2014-08-01 A | 2014-08-04 | 137 | 100% | 0d | 0d |  |
| 159 | 1.8.6 | **Cielos** |  | 50d | 2014-08-26 A | 2014-11-03 |  | 67% | 16.5d | 0d |  |
| 160 | 1.8.6.1 | Pintura cielo losalin |  | 12d | 2014-08-26 A | 2014-09-10 | 158FS+15d | 100% | 0d | 0d |  |
| 161 | 1.8.6.2 | Instalacion palmetas acusticas |  | 6d | 2014-10-27 A | 2014-11-03 | 160 |  | 6d | 0d | start no earlier than 2014-10-24 |
| 162 | 1.8.7 | **Revestimiento muro** |  | 74d | 2014-06-11 A | 2014-09-22 |  | 100% | 0d | 0d |  |
| 163 | 1.8.7.1 | Pinturas interiores |  | 7d | 2014-06-11 A | 2014-06-19 | 154FS+10d | 100% | 0d | 0d |  |
| 164 | 1.8.7.2 | Porcelanatos |  | 10d | 2014-09-09 A | 2014-09-22 | 143FS+2d | 100% | 0d | 0d |  |
| 165 | 1.8.8 | Instalacion de puertas |  | 7d | 2014-11-14 A | 2014-11-24 | 144 |  | 7d | 0d |  |
| 166 | 1.8.9 | Cenefas con porcelanato |  | 35d | 2014-07-23 A | 2014-09-09 | 154FS+40d | 100% | 0d | 0d |  |
| 167 | 1.8.10 | Cenefa Volcanita |  | 10d | 2014-09-29 A | 2014-10-27 | 146 | 95% | 0.5d | 0d |  |
| 168 | 1.8.11 | Pintura pilares |  | 4d | 2014-07-25 A | 2014-07-30 | 147 | 100% | 0d | 0d |  |
| 169 | 1.8.12 | Pintura Demarcación |  | 10d | 2014-10-23 A | 2014-11-05 | 149 | 100% | 0d | 0d |  |
| 170 | 1.8.13 | Instalacion junta de dilatación |  | 10d | 2014-09-26 A | 2014-10-09 | 148 | 100% | 0d | 0d |  |
| 171 | 1.8.14 | Entrega |  | 1d | 2014-10-10 A | 2014-10-27 | 166, 170 | 90% | 0.1d | 0d |  |
| 172 | 1.9 | **5º Piso** |  | 160.75d | 2014-05-23 A | 2015-01-05 |  | 61% | 62.69d | 0d |  |
| 173 | 1.9.1 | Aprobacion Deck Intermedio | milestone | 0d | 2014-05-23 A | 2014-05-23 | 3FS+100d | 100% | 0d | 0d |  |
| 174 | 1.9.2 | Ejecución Deck Intermedio |  | 90d | 2014-05-26 A | 2014-09-26 | 173 | 100% | 0d | 0d |  |
| 175 | 1.9.3 | Entrega obra gruesa | milestone | 0d | 2014-09-08 A | 2014-09-08 | 174FS-15d | 100% | 0d | 0d |  |
| 176 | 1.9.4 | Trazado |  | 1d | 2014-09-08 A | 2014-09-08 | 175 | 100% | 0d | 0d |  |
| 177 | 1.9.5 | Tabiqueria |  | 25d | 2014-09-09 A | 2014-10-30 | 176 | 85% | 3.75d | 0d |  |
| 178 | 1.9.6 | Tabiqueria Perimetral |  | 40d | 2014-08-19 A | 2014-11-03 | 176FS-15d | 85% | 6d | 0d |  |
| 179 | 1.9.7 | **Revestimiento piso** |  | 11d | 2014-10-30 A | 2014-11-14 |  |  | 11d | 0d |  |
| 180 | 1.9.7.1 | Pintura piso cuarzo |  | 9d | 2014-10-30 A | 2014-11-12 | 177 |  | 9d | 0d | start no earlier than 2014-10-24 |
| 181 | 1.9.7.2 | Instalacion porcelanatos |  | 2d | 2014-11-12 A | 2014-11-14 | 180 |  | 2d | 0d |  |

| ID | WBS | Task | Type | Duration | Start | Finish | Predecessors | Complete | Remaining | Total slack | Constraint |
| --- | --- | --- | --- | --- | --- | --- | --- | --- | --- | --- | --- |
| 182 | 1.9.8 | **Cielos** |  | 12d | 2014-11-14 A | 2014-12-02 |  |  | 12d | 0d |  |
| 183 | 1.9.8.1 | Pintura cielo losalin |  | 6d | 2014-11-14 A | 2014-11-24 | 181 |  | 6d | 0d |  |
| 184 | 1.9.8.2 | Instalacion palmetas acusticas |  | 6d | 2014-11-24 A | 2014-12-02 | 183 |  | 6d | 0d |  |
| 185 | 1.9.9 | **Revestimiento muro** |  | 7d | 2014-10-30 A | 2014-11-10 |  |  | 7d | 0d |  |
| 186 | 1.9.9.1 | Pinturas interiores |  | 7d | 2014-10-30 A | 2014-11-10 | 177 |  | 7d | 0d | start no earlier than 2014-10-24 |
| 187 | 1.9.10 | Instalacion de puertas |  | 10d | 2014-11-25 A | 2014-12-08 | 165 |  | 10d | 0d |  |
| 188 | 1.9.11 | Cenefas( Estructuración,tapado y Pintado) |  | 24d | 2014-12-02 A | 2015-01-05 | 177, 184 |  | 24d | 0d |  |
| 189 | 1.9.12 | Pintura pilares |  | 4d | 2014-11-10 A | 2014-11-14 | 186 |  | 4d | 0d | start no earlier than 2014-10-24 |
| 190 | 1.9.13 | Pintura Demarcación |  | 10d | 2014-11-06 A | 2014-11-19 | 169 |  | 10d | 0d |  |
| 191 | 1.9.14 | Instalacion junta de dilatación |  | 10d | 2014-10-10 A | 2014-11-04 | 170 | 30% | 7d | 0d |  |
| 192 | 1.9.15 | Entrega | milestone | 0d | 2015-01-05 A | 2015-01-05 | 188, 191 |  | 0d | 0d |  |
| 193 | 1.10 | **Piso 6 (Deck Intermedio)** |  | 93d | 2014-08-18 A | 2014-12-24 |  | 14% | 79.98d | 0d |  |
| 194 | 1.10.1 | Entrega y aprobación proyecto Terminaciones Deck Intermedio | milestone | 0d | 2014-08-18 A | 2014-08-18 |  | 100% | 0d | 0d | start no earlier than 2014-08-18 |
| 195 | 1.10.2 | Entrega Obra Gruesa | milestone | 0d | 2014-09-22 A | 2014-09-22 | 194FS+26d | 100% | 0d | 0d |  |
| 196 | 1.10.3 | Trazado |  | 2d | 2014-09-23 A | 2014-09-24 | 195 | 100% | 0d | 0d |  |
| 197 | 1.10.4 | Tabiqueria |  | 15d | 2014-09-25 A | 2014-10-29 | 196 | 80% | 3d | 0d |  |
| 198 | 1.10.5 | Pintura Tabique |  | 10d | 2014-10-30 A | 2014-11-12 | 197 |  | 10d | 0d | start no earlier than 2014-10-24 |
| 199 | 1.10.6 | Barandas metálicas |  | 30d | 2014-10-27 A | 2014-12-05 | 195FS+20d |  | 30d | 0d | start no earlier than 2014-10-24 |
| 200 | 1.10.7 | Aplicación Mortero ignifugo |  | 20d | 2014-11-13 A | 2014-12-10 | 198 |  | 20d | 0d |  |
| 201 | 1.10.8 | Junta de dilatacion |  | 10d | 2014-12-11 A | 2014-12-24 | 200 |  | 10d | 0d |  |
| 202 | 1.10.9 | Pintura demarcación |  | 10d | 2014-12-11 A | 2014-12-24 | 200 |  | 10d | 0d |  |
| 203 | 1.10.10 | Entrega y aseo | milestone | 0d | 2014-12-24 A | 2014-12-24 | 201, 202 |  | 0d | 0d |  |
| 204 | 1.11 | **7º Piso** |  | 209d | 2014-03-24 A | 2015-01-09 |  | 80% | 41.8d | 0d |  |
| 205 | 1.11.1 | **Sector Hotel** |  | 155d | 2014-04-21 A | 2014-11-21 |  | 84% | 24.8d | 0d |  |
| 206 | 1.11.1.1 | MODIFICACIONES PROYECTO OBRA GRUESA 5° Y 6° PISO |  | 7d | 2014-04-21 A | 2014-04-29 |  | 100% | 0d | 0d | start no earlier than 2014-04-21 |
| 207 | 1.11.1.2 | Entrega obra gruesa | milestone | 0d | 2014-04-29 A | 2014-04-29 | 3FS+76d, 206 | 100% | 0d | 0d |  |
| 208 | 1.11.1.3 | Trazado |  | 1d | 2014-04-30 A | 2014-04-30 | 207 | 100% | 0d | 0d |  |
| 209 | 1.11.1.4 | Sobrelosa |  | 5d | 2014-05-01 A | 2014-05-07 | 208 | 100% | 0d | 0d |  |
| 210 | 1.11.1.5 | Tabiqueria |  | 35d | 2014-07-03 A | 2014-08-20 | 209FS+40d | 100% | 0d | 0d |  |
| 211 | 1.11.1.6 | Tabiques Perimetrales |  | 35d | 2014-05-22 A | 2014-07-09 | 209FS+10d | 100% | 0d | 0d |  |
| 212 | 1.11.1.7 | Pinturas interiores |  | 30d | 2014-08-11 A | 2014-10-27 | 210FS-8d | 98% | 0.6d | 0d |  |
| 213 | 1.11.1.8 | Tabiques vidriados |  | 30d | 2014-08-07 A | 2014-09-17 | 209FS+65d | 100% | 0d | 0d |  |

| ID | WBS | Task | Type | Duration | Start | Finish | Predecessors | Complete | Remaining | Total slack | Constraint |
| --- | --- | --- | --- | --- | --- | --- | --- | --- | --- | --- | --- |
| 214 | 1.11.1.9 | **Revestimientos de muro y piso** |  | 77d | 2014-08-07 A | 2014-11-21 |  | 73% | 20.79d | 0d |  |
| 215 | 1.11.1.9.1 | Instalacion alfombra |  | 10d | 2014-09-26 A | 2014-10-31 | 220FS-9d | 68% | 3.2d | 0d |  |
| 216 | 1.11.1.9.2 | Instalacion porcelanatos |  | 25d | 2014-08-22 A | 2014-10-27 | 225FS-5d | 99% | 0.25d | 0d |  |
| 217 | 1.11.1.9.3 | Instalacion baldosas |  | 20d | 2014-08-29 A | 2014-10-27 | 225 | 95% | 1d | 0d |  |
| 218 | 1.11.1.9.4 | Instalacion piso seguridad |  | 20d | 2014-10-27 A | 2014-11-21 | 216FS-15d |  | 20d | 0d | start no earlier than 2014-10-24 |
| 219 | 1.11.1.9.5 | Porcelanatos Pilares |  | 25d | 2014-08-07 A | 2014-09-10 | 210FS-10d | 100% | 0d | 0d |  |
| 220 | 1.11.1.9.6 | Papel mural |  | 10d | 2014-10-27 A | 2014-11-07 | 222FS-5d, 223FS-5d |  | 10d | 0d | start no earlier than 2014-10-24 |
| 221 | 1.11.1.9.7 | Guardapolvos |  | 10d | 2014-09-18 A | 2014-10-29 | 212FS-2d | 70% | 3d | 0d |  |
| 222 | 1.11.1.9.8 | Puertas (colocación marco, tacos, colocación hoja, quincallería) |  | 10d | 2014-09-18 A | 2014-10-27 | 212FS-2d | 95% | 0.5d | 0d |  |
| 223 | 1.11.1.9.9 | Instalacion de ventanas |  | 10d | 2014-09-18 A | 2014-10-01 | 210FS+20d | 100% | 0d | 0d |  |
| 224 | 1.11.1.10 | **Baños** |  | 61.5d | 2014-08-01 A | 2014-10-27 |  | 99% | 0.61d | 0d |  |
| 225 | 1.11.1.10.1 | Impermeabilizacion |  | 20d | 2014-08-01 A | 2014-08-28 | 210FS-14d | 100% | 0d | 0d |  |
| 226 | 1.11.1.10.2 | Instalacion artefactos sanitarios |  | 25d | 2014-09-09 A | 2014-10-27 | 216FS-13d | 98% | 0.5d | 0d |  |
| 227 | 1.11.1.10.3 | Tabiques divisorios |  | 10d | 2014-09-30 A | 2014-10-13 | 226FS-10d | 100% | 0d | 0d |  |
| 228 | 1.11.1.10.4 | Instalacion cubierta |  | 10d | 2014-09-22 A | 2014-10-03 | 216FS-4d | 100% | 0d | 0d |  |
| 229 | 1.11.1.10.5 | Instalacion espejo |  | 6d | 2014-09-30 A | 2014-10-27 | 226FS-10d | 99% | 0.06d | 0d |  |
| 230 | 1.11.1.11 | **ENTREGA CLIMA** |  | 15d | 2014-09-15 A | 2014-10-06 |  | 100% | 0d | 0d |  |
| 231 | 1.11.1.11.1 | ENTREGA CLIMA ZONA 1 | milestone | 0d | 2014-09-15 A | 2014-09-15 |  | 100% | 0d | 0d | start no earlier than 2014-09-15 |
| 232 | 1.11.1.11.2 | ENTREGA CLIMA ZONA 2 Y 3 | milestone | 0d | 2014-09-25 A | 2014-09-25 |  | 100% | 0d | 0d | start no earlier than 2014-09-25 |
| 233 | 1.11.1.11.3 | ENTREGA CLIMA ZONA 4 | milestone | 0d | 2014-10-06 A | 2014-10-06 |  | 100% | 0d | 0d | start no earlier than 2014-10-06 |
| 234 | 1.11.1.12 | **Cielos** |  | 45d | 2014-09-22 A | 2014-11-21 |  | 67% | 14.85d | 0d |  |
| 235 | 1.11.1.12.1 | Cielo volcanita |  | 20d | 2014-09-22 A | 2014-10-17 | 231FS-5d, 232FS-8d, 233FS-10d | 100% | 0d | 0d |  |
| 236 | 1.11.1.12.2 | Cielo modular metalico |  | 20d | 2014-10-27 A | 2014-11-21 | 231FS-5d, 232FS-8d, 233FS-10d |  | 20d | 0d | start no earlier than 2014-10-24 |
| 237 | 1.11.1.12.3 | Cielo Palmeta acústica |  | 20d | 2014-09-22 A | 2014-10-17 | 231FS-5d, 232FS-8d, 233FS-10d | 100% | 0d | 0d |  |
| 238 | 1.11.1.13 | SUMINISTRO DE JUNTA | milestone | 0d | 2014-09-29 A | 2014-09-29 |  | 100% | 0d | 0d | start no earlier than 2014-09-29 |
| 239 | 1.11.1.14 | Instalación junta dilatación |  | 10d | 2014-10-28 A | 2014-11-10 | 238FS+21d |  | 10d | 0d |  |

| ID | WBS | Task | Type | Duration | Start | Finish | Predecessors | Complete | Remaining | Total slack | Constraint |
| --- | --- | --- | --- | --- | --- | --- | --- | --- | --- | --- | --- |
| 240 | 1.11.1.15 | **Proyecto camaras de frio** |  | 41.5d | 2014-09-01 A | 2014-10-28 |  | 95% | 2.08d | 0d |  |
| 241 | 1.11.1.15.1 | Instalacion paneles e instalacion frio alimentario |  | 30d | 2014-09-01 A | 2014-10-28 | 23, 216FS-19d | 95% | 1.5d | 0d |  |
| 242 | 1.11.1.16 | **Aprobacion proyecto cocina** |  | 47d | 2014-08-29 A | 2014-11-03 |  | 80% | 9.4d | 0d |  |
| 243 | 1.11.1.16.1 | Instalacion y habilitacion cocina |  | 30d | 2014-08-29 A | 2014-11-03 | 21, 216FS-20d | 80% | 6d | 0d |  |
| 244 | 1.11.1.16.2 | Ingreso contrato de gas | milestone | 0d | 2014-10-09 A | 2014-10-09 | 243 | 100% | 0d | 0d |  |
| 245 | 1.11.1.17 | Entrega | milestone | 0d | 2014-10-31 A | 2014-10-31 | 215 |  | 0d | 0d | start no earlier than 2014-10-24 |
| 246 | 1.11.2 | **Hotel Sector Ascensores** |  | 72d | 2014-10-02 A | 2015-01-09 |  | 27% | 52.56d | 0d |  |
| 247 | 1.11.2.1 | ENTREGA ASCENSOR P1 Y P2 | milestone | 0d | 2014-10-02 A | 2014-10-02 |  | 100% | 0d | 0d | start no earlier than 2014-10-02 |
| 248 | 1.11.2.2 | ENTREGA ASCENSOR P3 Y P4 | milestone | 0d | 2014-12-11 A | 2014-12-11 |  |  | 0d | 0d | start no earlier than 2014-12-11 |
| 249 | 1.11.2.3 | Remates Ascensor |  | 5d | 2014-12-11 A | 2014-12-17 | 247, 248 |  | 5d | 0d |  |
| 250 | 1.11.2.4 | Tabique |  | 5d | 2014-12-11 A | 2014-12-17 | 247, 248 | 70% | 1.5d | 0d |  |
| 251 | 1.11.2.5 | **Cielos** |  | 7d | 2014-12-18 A | 2014-12-26 |  | 50% | 3.5d | 0d |  |
| 252 | 1.11.2.5.1 | Cielo Volcanita |  | 7d | 2014-12-18 A | 2014-12-26 | 249 | 100% | 0d | 0d |  |
| 253 | 1.11.2.5.2 | Cielo Palmeta Acústica |  | 7d | 2014-12-18 A | 2014-12-26 | 249 |  | 7d | 0d |  |
| 254 | 1.11.2.6 | Porcelanato |  | 4d | 2014-12-29 A | 2015-01-01 | 252, 253 |  | 4d | 0d |  |
| 255 | 1.11.2.7 | Instalación de Muebles |  | 5d | 2014-12-30 A | 2015-01-05 | 254FS-3d |  | 5d | 0d |  |
| 256 | 1.11.2.8 | Papel Mural |  | 2d | 2015-01-06 A | 2015-01-07 | 255 |  | 2d | 0d |  |
| 257 | 1.11.2.9 | Guardapolvos |  | 2d | 2015-01-07 A | 2015-01-08 | 256FS-1d |  | 2d | 0d |  |
| 258 | 1.11.2.10 | Alfombra |  | 2d | 2015-01-08 A | 2015-01-09 | 257FS-1d |  | 2d | 0d |  |
| 259 | 1.11.2.11 | Entrega | milestone | 0d | 2015-01-09 A | 2015-01-09 | 258 |  | 0d | 0d |  |
| 260 | 1.11.3 | **Sector Salon de Eventos** |  | 179d | 2014-03-24 A | 2014-11-28 |  | 80% | 35.8d | 0d |  |
| 261 | 1.11.3.1 | Entrega obra gruesa | milestone | 0d | 2014-03-24 A | 2014-03-24 | 3FS+56d | 100% | 0d | 0d |  |
| 262 | 1.11.3.2 | Trazado |  | 1d | 2014-03-25 A | 2014-03-25 | 261 | 100% | 0d | 0d |  |
| 263 | 1.11.3.3 | Carpinteria metalica |  | 40d | 2014-03-26 A | 2014-05-20 | 262 | 100% | 0d | 0d |  |
| 264 | 1.11.3.4 | Instalación Cubierta |  | 15d | 2014-05-06 A | 2014-05-26 | 263FS-11d | 100% | 0d | 0d |  |
| 265 | 1.11.3.5 | Cielos Promatech |  | 30d | 2014-05-27 A | 2014-10-28 | 264 | 95% | 1.5d | 0d |  |
| 266 | 1.11.3.6 | Cielos |  | 50d | 2014-08-05 A | 2014-11-26 | 265FS+20d | 97% | 1.5d | 0d |  |
| 267 | 1.11.3.7 | Tabiques |  | 20d | 2014-07-31 A | 2014-10-27 | 210FS-15d | 99% | 0.2d | 0d |  |
| 268 | 1.11.3.8 | Pinturas Interiores |  | 15d | 2014-08-21 A | 2014-09-10 | 267FS-5d | 100% | 0d | 0d |  |
| 269 | 1.11.3.9 | Tabique especiales |  | 10d | 2014-08-29 A | 2014-10-31 | 267FS+1d | 70% | 3d | 0d |  |
| 270 | 1.11.3.10 | Revestimientos muro |  | 15d | 2014-08-22 A | 2014-10-29 | 267FS-4d | 83% | 2.55d | 0d |  |
| 271 | 1.11.3.11 | Revestimientos piso |  | 6d | 2014-11-21 A | 2014-11-28 | 266FS-4d |  | 6d | 0d | start no earlier than 2014-10-24 |
| 272 | 1.11.3.12 | Barandas de cristal |  | 22d | 2014-10-27 A | 2014-11-25 | 263FS+86d |  | 22d | 0d | start no earlier than 2014-10-24 |
| 273 | 1.11.3.13 | Pintura exteriores |  | 10d | 2014-11-05 A | 2014-11-18 | 272FS-15d |  | 10d | 0d | start no earlier than 2014-10-24 |
| 274 | 1.11.3.14 | Entrega | milestone | 0d | 2014-11-25 A | 2014-11-25 | 272 |  | 0d | 0d | start no earlier than 2014-10-24 |

| ID | WBS | Task | Type | Duration | Start | Finish | Predecessors | Complete | Remaining | Total slack | Constraint |
| --- | --- | --- | --- | --- | --- | --- | --- | --- | --- | --- | --- |
| 275 | 1.12 | **8º Piso** |  | 123.74d | 2014-05-09 A | 2014-10-30 |  | 98% | 2.47d | 0d |  |
| 276 | 1.12.1 | Entrega obra gruesa | milestone | 0d | 2014-05-09 A | 2014-05-09 | 3FS+90d | 100% | 0d | 0d |  |
| 277 | 1.12.2 | Sobrelosa |  | 6d | 2014-05-12 A | 2014-05-19 | 276 | 100% | 0d | 0d |  |
| 278 | 1.12.3 | Trazado |  | 6d | 2014-05-20 A | 2014-05-27 | 277 | 100% | 0d | 0d |  |
| 279 | 1.12.4 | Tabiqueria |  | 40d | 2014-05-28 A | 2014-07-22 | 278 | 100% | 0d | 0d |  |
| 280 | 1.12.5 | TERMINO MODIFICACIONES INSTALACIONES CIELOS Y TABIQUES | milestone | 0d | 2014-08-29 A | 2014-08-29 |  | 100% | 0d | 0d | start no earlier than 2014-08-29 |
| 281 | 1.12.6 | ENTREGA INSTALACIONES DE CLIMA | milestone | 0d | 2014-08-29 A | 2014-08-29 |  | 100% | 0d | 0d | start no earlier than 2014-08-29 |
| 282 | 1.12.7 | Enlucidos |  | 15d | 2014-07-09 A | 2014-07-29 | 279FS-10d | 100% | 0d | 0d |  |
| 283 | 1.12.8 | Pinturas interiores |  | 25d | 2014-08-13 A | 2014-09-16 | 279FS+15d | 100% | 0d | 0d |  |
| 284 | 1.12.9 | **Revestimiento de piso y muro** |  | 87.74d | 2014-07-01 A | 2014-10-30 |  | 94% | 5.26d | 0d |  |
| 285 | 1.12.9.1 | TERMINO VENTANA GLASSTECH | milestone | 0d | 2014-08-04 A | 2014-08-04 |  | 100% | 0d | 0d | start no earlier than 2014-08-04 |
| 286 | 1.12.9.2 | Instalacion alfombra |  | 10d | 2014-10-03 A | 2014-10-16 | 288FS-5d | 100% | 0d | 0d |  |
| 287 | 1.12.9.3 | Instalacion porcelanatos |  | 15d | 2014-08-29 A | 2014-09-18 | 297FS-10d | 100% | 0d | 0d |  |
| 288 | 1.12.9.4 | Papel mural |  | 10d | 2014-09-26 A | 2014-10-27 | 289FS-3d, 291FS-3d, 305FS-3d | 95% | 0.5d | 0d |  |
| 289 | 1.12.9.5 | Guardapolvos |  | 10d | 2014-09-17 A | 2014-10-27 | 283 | 97% | 0.3d | 0d |  |
| 290 | 1.12.9.6 | LLEGADA QUINCALLERÍA Y MIRILLA | milestone | 0d | 2014-09-09 A | 2014-09-09 |  | 100% | 0d | 0d | start no earlier than 2014-09-09 |
| 291 | 1.12.9.7 | Carpintería (colocacion marco,endolados,pilastra,hoja,quincalleria) |  | 10d | 2014-09-17 A | 2014-09-30 | 283 | 100% | 0d | 0d |  |
| 292 | 1.12.9.8 | LLEGADA DE PLANOS FINALES DE MUEBLERÍA | milestone | 0d | 2014-07-01 A | 2014-07-01 |  | 100% | 0d | 0d | start no earlier than 2014-07-01 |
| 293 | 1.12.9.9 | LLEGADA MUEBLES POR CONTRATISTA |  | 10d | 2014-09-29 A | 2014-10-10 |  | 100% | 0d | 0d | start no earlier than 2014-09-29 |
| 294 | 1.12.9.10 | Muebles |  | 11d | 2014-10-06 A | 2014-10-30 | 288FS-5d, 293FS-5d | 66% | 3.74d | 0d |  |
| 295 | 1.12.10 | **Baños** |  | 68.5d | 2014-07-23 A | 2014-10-27 |  | 99% | 0.69d | 0d |  |
| 296 | 1.12.10.1 | Instalación zocalo |  | 10d | 2014-07-23 A | 2014-08-05 | 279 | 100% | 0d | 0d |  |
| 297 | 1.12.10.2 | Impermeabilizacion |  | 10d | 2014-08-29 A | 2014-09-11 | 280, 281FS-5d, 296 | 100% | 0d | 0d |  |
| 298 | 1.12.10.3 | Instalacion Shower Door |  | 15d | 2014-09-19 A | 2014-10-09 | 287, 297 | 100% | 0d | 0d |  |
| 299 | 1.12.10.4 | LLEGADA CHALLA | milestone | 0d | 2014-09-05 A | 2014-09-05 |  | 100% | 0d | 0d | start no earlier than 2014-09-05 |
| 300 | 1.12.10.5 | Instalacion artefactos sanitarios |  | 15d | 2014-09-19 A | 2014-10-09 | 287, 299 | 100% | 0d | 0d |  |
| 301 | 1.12.10.6 | Instalacion cubierta |  | 10d | 2014-09-19 A | 2014-10-27 | 287 | 95% | 0.5d | 0d |  |
| 302 | 1.12.10.7 | Instalacion espejo |  | 4d | 2014-10-06 A | 2014-10-09 | 300FS-4d, 301 | 100% | 0d | 0d |  |

| ID | WBS | Task | Type | Duration | Start | Finish | Predecessors | Complete | Remaining | Total slack | Constraint |
| --- | --- | --- | --- | --- | --- | --- | --- | --- | --- | --- | --- |
| 303 | 1.12.11 | **Cielos** |  | 36d | 2014-08-29 A | 2014-10-17 |  | 100% | 0d | 0d |  |
| 304 | 1.12.11.1 | Cielo volcanita |  | 25d | 2014-08-29 A | 2014-10-02 | 280, 281FS-10d | 100% | 0d | 0d |  |
| 305 | 1.12.11.2 | Cenefa Trupan |  | 10d | 2014-09-17 A | 2014-09-30 | 283 | 100% | 0d | 0d |  |
| 306 | 1.12.11.3 | Cielo Palmeta acústica |  | 15d | 2014-09-29 A | 2014-10-17 | 304FS-4d | 100% | 0d | 0d |  |
| 307 | 1.12.12 | **Luminarias** |  | 27.2d | 2014-09-19 A | 2014-10-28 |  | 92% | 2.18d | 0d |  |
| 308 | 1.12.12.1 | Instalacion Luminarias |  | 15d | 2014-09-19 A | 2014-10-28 | 304FS-10d | 92% | 1.2d | 0d |  |
| 309 | 1.12.13 | Entrega y aseo | milestone | 0d | 2014-10-30 A | 2014-10-30 | 294 |  | 0d | 0d | start no earlier than 2014-10-24 |
| 310 | 1.13 | **9º Piso** |  | 118d | 2014-05-26 A | 2014-11-06 |  | 90% | 11.8d | 0d |  |
| 311 | 1.13.1 | Entrega obra gruesa | milestone | 0d | 2014-05-26 A | 2014-05-26 | 3FS+101d | 100% | 0d | 0d |  |
| 312 | 1.13.2 | Sobrelosa |  | 6d | 2014-05-27 A | 2014-06-03 | 311 | 100% | 0d | 0d |  |
| 313 | 1.13.3 | Trazado |  | 4d | 2014-06-04 A | 2014-06-09 | 312 | 100% | 0d | 0d |  |
| 314 | 1.13.4 | Tabiqueria |  | 35d | 2014-06-30 A | 2014-08-15 | 210FS-38d, 279FS-34d, 313 | 100% | 0d | 0d |  |
| 315 | 1.13.5 | TERMINO MODIFICACIONES INSTALACIONES CIELOS Y TABIQUES | milestone | 0d | 2014-09-12 A | 2014-09-12 |  | 100% | 0d | 0d | start no earlier than 2014-09-12 |
| 316 | 1.13.6 | ENTREGA INSTALACIONES DE CLIMA | milestone | 0d | 2014-09-12 A | 2014-09-12 |  | 100% | 0d | 0d | start no earlier than 2014-09-12 |
| 317 | 1.13.7 | ENTREGA INSTALACIONES SANITARIAS | milestone | 0d | 2014-09-05 A | 2014-09-05 |  | 100% | 0d | 0d | start no earlier than 2014-09-05 |
| 318 | 1.13.8 | Enlucidos |  | 15d | 2014-08-04 A | 2014-08-22 | 314FS-10d | 100% | 0d | 0d |  |
| 319 | 1.13.9 | Pinturas Interiores |  | 30d | 2014-08-18 A | 2014-09-26 | 314 | 100% | 0d | 0d |  |
| 320 | 1.13.10 | **Revestimiento de piso y muro** |  | 59d | 2014-08-18 A | 2014-11-06 |  | 79% | 12.39d | 0d |  |
| 321 | 1.13.10.1 | TERMINO VENTANA GLASSTECH | milestone | 0d | 2014-08-18 A | 2014-08-18 |  | 100% | 0d | 0d | start no earlier than 2014-08-18 |
| 322 | 1.13.10.2 | Instalacion alfombra |  | 10d | 2014-10-15 A | 2014-10-28 | 324FS-5d | 90% | 1d | 0d |  |
| 323 | 1.13.10.3 | Instalacion porcelanatos |  | 15d | 2014-09-26 A | 2014-10-16 | 331 | 100% | 0d | 0d |  |
| 324 | 1.13.10.4 | Papel Mural |  | 10d | 2014-10-08 A | 2014-10-29 | 325FS-3d, 326FS-3d, 338FS-3d | 70% | 3d | 0d |  |
| 325 | 1.13.10.5 | Guardapolvos |  | 10d | 2014-09-29 A | 2014-10-28 | 319 | 80% | 2d | 0d |  |
| 326 | 1.13.10.6 | Carpintería (colocacion marco,endolados,pilastra,hoja,quincalleria) |  | 10d | 2014-09-29 A | 2014-10-27 | 319 | 95% | 0.5d | 0d |  |
| 327 | 1.13.10.7 | Llegada de muebles por contratista |  | 10d | 2014-10-13 A | 2014-10-24 |  | 100% | 0d | 0d | start no earlier than 2014-10-13 |
| 328 | 1.13.10.8 | Muebles |  | 10d | 2014-10-20 A | 2014-11-06 | 324FS-5d, 327FS-5d | 10% | 9d | 0d |  |

| ID | WBS | Task | Type | Duration | Start | Finish | Predecessors | Complete | Remaining | Total slack | Constraint |
| --- | --- | --- | --- | --- | --- | --- | --- | --- | --- | --- | --- |
| 329 | 1.13.11 | **Baños** |  | 55.7d | 2014-08-18 A | 2014-11-03 |  | 89% | 6.13d | 0d |  |
| 330 | 1.13.11.1 | Instalacion zocalos |  | 10d | 2014-08-18 A | 2014-08-29 | 296, 314 | 100% | 0d | 0d |  |
| 331 | 1.13.11.2 | Impermeabilizacion |  | 10d | 2014-09-12 A | 2014-09-25 | 297FS-15d, 315, 316, 317, 330 | 100% | 0d | 0d |  |
| 332 | 1.13.11.3 | Instalacion Shower Door |  | 15d | 2014-10-03 A | 2014-10-28 | 323FS-10d, 331 | 92% | 1.2d | 0d |  |
| 333 | 1.13.11.4 | Instalacion artefactos sanitarios |  | 15d | 2014-10-07 A | 2014-10-27 | 226FS-24d, 300FS-14d, 323FS-8d | 100% | 0d | 0d |  |
| 334 | 1.13.11.5 | Instalacion cubierta |  | 10d | 2014-10-13 A | 2014-11-03 | 323FS-4d | 43% | 5.7d | 0d |  |
| 335 | 1.13.11.6 | Instalacion espejo |  | 4d | 2014-10-21 A | 2014-10-24 | 333FS-5d | 100% | 0d | 0d |  |
| 336 | 1.13.12 | **Cielos** |  | 31d | 2014-09-12 A | 2014-10-24 |  | 100% | 0d | 0d |  |
| 337 | 1.13.12.1 | Cielo volcanita |  | 25d | 2014-09-12 A | 2014-10-16 | 304FS-20d, 315, 316 | 100% | 0d | 0d |  |
| 338 | 1.13.12.2 | Cenefa trupan |  | 10d | 2014-09-29 A | 2014-10-10 | 319 | 100% | 0d | 0d |  |
| 339 | 1.13.12.3 | Cielo Palmeta acústica |  | 15d | 2014-10-06 A | 2014-10-24 | 337FS-9d | 100% | 0d | 0d |  |
| 340 | 1.13.13 | **Luminarias** |  | 24.25d | 2014-10-03 A | 2014-11-06 |  | 45% | 13.34d | 0d |  |
| 341 | 1.13.13.1 | Instalacion Luminarias |  | 15d | 2014-10-03 A | 2014-11-06 | 337FS-10d | 45% | 8.25d | 0d |  |
| 342 | 1.13.14 | Entrega y aseo | milestone | 0d | 2014-11-06 A | 2014-11-06 | 328 |  | 0d | 0d |  |
| 343 | 1.14 | **10º Piso** |  | 116d | 2014-06-05 A | 2014-11-14 |  | 70% | 34.8d | 0d |  |
| 344 | 1.14.1 | Entrega obra gruesa | milestone | 0d | 2014-06-05 A | 2014-06-05 | 3FS+109d | 100% | 0d | 0d |  |
| 345 | 1.14.2 | Trazado |  | 4d | 2014-06-06 A | 2014-06-11 | 344 | 100% | 0d | 0d |  |
| 346 | 1.14.3 | Sobrelosa |  | 8d | 2014-06-12 A | 2014-06-23 | 345 | 100% | 0d | 0d |  |
| 347 | 1.14.4 | ENTREGA INSTALACIONES DE CLIMA | milestone | 0d | 2014-09-22 A | 2014-09-22 |  | 100% | 0d | 0d | start no earlier than 2014-09-22 |
| 348 | 1.14.5 | ENTREGA INSTALACIONES SANITARIAS | milestone | 0d | 2014-09-12 A | 2014-09-12 |  | 100% | 0d | 0d | start no earlier than 2014-09-12 |
| 349 | 1.14.6 | **Tabiqueria** |  | 35d | 2014-07-14 A | 2014-08-29 |  | 100% | 0d | 0d |  |
| 350 | 1.14.6.1 | 1ª Cara |  | 10d | 2014-07-14 A | 2014-07-25 | 314FS-25d, 346FS+5d | 100% | 0d | 0d |  |
| 351 | 1.14.6.2 | Instalaciones Asociadas |  | 20d | 2014-07-22 A | 2014-08-18 | 350FS-4d | 100% | 0d | 0d |  |
| 352 | 1.14.6.3 | 2ª Cara |  | 10d | 2014-08-18 A | 2014-08-29 | 351FS-1d | 100% | 0d | 0d |  |
| 353 | 1.14.7 | Enlucidos |  | 15d | 2014-08-18 A | 2014-09-05 | 352FS-10d | 100% | 0d | 0d |  |
| 354 | 1.14.8 | Pinturas Interiores |  | 30d | 2014-09-01 A | 2014-10-10 | 352 | 100% | 0d | 0d |  |

| ID | WBS | Task | Type | Duration | Start | Finish | Predecessors | Complete | Remaining | Total slack | Constraint |
| --- | --- | --- | --- | --- | --- | --- | --- | --- | --- | --- | --- |
| 355 | 1.14.9 | **Revestimiento de piso y muro** |  | 55d | 2014-09-01 A | 2014-11-14 |  | 45% | 30.25d | 0d |  |
| 356 | 1.14.9.1 | TERMINO VENTANA GLASSTECH | milestone | 0d | 2014-09-01 A | 2014-09-01 |  | 100% | 0d | 0d | start no earlier than 2014-09-01 |
| 357 | 1.14.9.2 | Instalacion alfombra |  | 10d | 2014-10-30 A | 2014-11-12 | 359FS-7d |  | 10d | 0d | start no earlier than 2014-10-24 |
| 358 | 1.14.9.3 | Instalacion porcelanatos |  | 15d | 2014-10-06 A | 2014-10-28 | 366 | 90% | 1.5d | 0d |  |
| 359 | 1.14.9.4 | Papel mural |  | 10d | 2014-10-27 A | 2014-11-07 | 360FS-5d, 361FS-5d, 373FS-5d |  | 10d | 0d | start no earlier than 2014-10-24 |
| 360 | 1.14.9.5 | Guardapolvos |  | 10d | 2014-10-13 A | 2014-10-28 | 354 | 80% | 2d | 0d |  |
| 361 | 1.14.9.6 | Carpintería (colocacion marco,endolados,pilastra,hoja,quincalleria) |  | 10d | 2014-10-13 A | 2014-10-27 | 354 | 95% | 0.5d | 0d |  |
| 362 | 1.14.9.7 | Llegada de muebles |  | 10d | 2014-10-20 A | 2014-11-04 |  | 30% | 7d | 0d | start no earlier than 2014-10-20 |
| 363 | 1.14.9.8 | Muebles |  | 10d | 2014-11-03 A | 2014-11-14 | 359FS-5d, 362FS-5d |  | 10d | 0d |  |
| 364 | 1.14.10 | **Baños** |  | 55d | 2014-09-01 A | 2014-11-14 |  | 54% | 25.3d | 0d |  |
| 365 | 1.14.10.1 | Instalacion zocalos |  | 10d | 2014-09-01 A | 2014-09-12 | 330FS-2d, 352 | 100% | 0d | 0d |  |
| 366 | 1.14.10.2 | Impermeabilizacion |  | 10d | 2014-09-22 A | 2014-10-03 | 331FS-7d, 347, 348, 352FS+3d, 365 | 100% | 0d | 0d |  |
| 367 | 1.14.10.3 | Instalacion Shower Door |  | 15d | 2014-10-27 A | 2014-11-14 | 358FS-12d, 366FS-3d |  | 15d | 0d | start no earlier than 2014-10-24 |
| 368 | 1.14.10.4 | Instalacion artefactos sanitarios |  | 15d | 2014-10-16 A | 2014-11-05 | 333FS-14d, 358FS-7d | 97% | 0.45d | 0d |  |
| 369 | 1.14.10.5 | Instalacion cubierta |  | 10d | 2014-10-27 A | 2014-11-07 | 358FS-5d |  | 10d | 0d | start no earlier than 2014-10-24 |
| 370 | 1.14.10.6 | Instalacion espejo |  | 4d | 2014-11-06 A | 2014-11-11 | 368FS-6d, 369FS-2d |  | 4d | 0d |  |
| 371 | 1.14.11 | **Cielos** |  | 30d | 2014-09-22 A | 2014-10-31 |  | 92% | 2.4d | 0d |  |
| 372 | 1.14.11.1 | Cielo volcanita |  | 25d | 2014-09-22 A | 2014-10-24 | 337FS-20d, 347, 352 | 100% | 0d | 0d |  |
| 373 | 1.14.11.2 | Cenefa trupan |  | 10d | 2014-10-13 A | 2014-10-24 | 354 | 100% | 0d | 0d |  |
| 374 | 1.14.11.3 | Cielo Palmeta acústica |  | 15d | 2014-10-13 A | 2014-10-31 | 372FS-10d | 73% | 4.05d | 0d |  |
| 375 | 1.14.12 | **Luminarias** |  | 15d | 2014-10-27 A | 2014-11-14 |  |  | 15d | 0d |  |
| 376 | 1.14.12.1 | Instalacion Luminarias |  | 15d | 2014-10-27 A | 2014-11-14 | 372FS-10d |  | 15d | 0d | start no earlier than 2014-10-24 |
| 377 | 1.14.13 | Entrega y aseo | milestone | 0d | 2014-11-14 A | 2014-11-14 | 363 |  | 0d | 0d |  |
| 378 | 1.15 | **11º Piso** |  | 117.75d | 2014-06-18 A | 2014-12-01 |  | 61% | 45.92d | 0d |  |
| 379 | 1.15.1 | Entrega obra gruesa | milestone | 0d | 2014-06-18 A | 2014-06-18 | 3FS+118d | 100% | 0d | 0d |  |
| 380 | 1.15.2 | Trazado |  | 4d | 2014-06-19 A | 2014-06-24 | 379 | 100% | 0d | 0d |  |
| 381 | 1.15.3 | Sobrelosa |  | 8d | 2014-06-25 A | 2014-07-04 | 380 | 100% | 0d | 0d |  |

| ID | WBS | Task | Type | Duration | Start | Finish | Predecessors | Complete | Remaining | Total slack | Constraint |
| --- | --- | --- | --- | --- | --- | --- | --- | --- | --- | --- | --- |
| 382 | 1.15.4 | **Tabiqueria** |  | 40d | 2014-07-21 A | 2014-09-12 |  | 100% | 0d | 0d |  |
| 383 | 1.15.4.1 | 1ª Cara |  | 10d | 2014-07-21 A | 2014-08-01 | 349FS-30d, 381 | 100% | 0d | 0d |  |
| 384 | 1.15.4.2 | Instalaciones Asociadas |  | 25d | 2014-07-29 A | 2014-09-01 | 383FS-4d | 100% | 0d | 0d |  |
| 385 | 1.15.4.3 | 2ª Cara |  | 10d | 2014-09-01 A | 2014-09-12 | 384FS-1d | 100% | 0d | 0d |  |
| 386 | 1.15.5 | Enlucidos |  | 15d | 2014-09-01 A | 2014-09-19 | 385FS-10d | 100% | 0d | 0d |  |
| 387 | 1.15.6 | Pinturas interiores |  | 25d | 2014-09-15 A | 2014-10-28 | 385 | 93% | 1.75d | 0d |  |
| 388 | 1.15.7 | **Revestimiento de piso y muro** |  | 55.75d | 2014-09-15 A | 2014-12-01 |  | 10% | 50.17d | 0d |  |
| 389 | 1.15.7.1 | TERMINO VENTANA GLASSTECH | milestone | 0d | 2014-09-15 A | 2014-09-15 |  | 100% | 0d | 0d | start no earlier than 2014-09-15 |
| 390 | 1.15.7.2 | Instalacion alfombra |  | 10d | 2014-11-17 A | 2014-12-01 | 392FS-3d |  | 10d | 0d |  |
| 391 | 1.15.7.3 | Instalacion porcelanatos |  | 15d | 2014-10-13 A | 2014-11-10 | 399 | 35% | 9.75d | 0d |  |
| 392 | 1.15.7.4 | Papel mural |  | 10d | 2014-11-06 A | 2014-11-20 | 393FS-3d, 394FS-3d, 410FS-3d |  | 10d | 0d |  |
| 393 | 1.15.7.5 | Guardapolvos |  | 10d | 2014-10-20 A | 2014-11-07 | 387 | 25% | 7.5d | 0d |  |
| 394 | 1.15.7.6 | Carpintería (colocacion marco,endolados,pilastra,hoja,quincalleria) |  | 10d | 2014-10-28 A | 2014-11-11 | 387 |  | 10d | 0d | start no earlier than 2014-10-24 |
| 395 | 1.15.7.7 | Llegada de muebles por contratista |  | 10d | 2014-10-27 A | 2014-11-07 |  |  | 10d | 0d | start no earlier than 2014-10-27 |
| 396 | 1.15.7.8 | Muebles |  | 10d | 2014-11-13 A | 2014-11-27 | 392FS-5d, 395 |  | 10d | 0d |  |
| 397 | 1.15.8 | **Baños** |  | 45.5d | 2014-09-15 A | 2014-11-17 |  | 38% | 28.21d | 0d |  |
| 398 | 1.15.8.1 | Instalacion zocalos |  | 10d | 2014-09-15 A | 2014-09-26 | 365FS-2d, 385 | 100% | 0d | 0d |  |
| 399 | 1.15.8.2 | Impermeabilizacion |  | 10d | 2014-09-29 A | 2014-10-27 | 398 | 95% | 0.5d | 0d |  |
| 400 | 1.15.8.3 | Instalacion Shower Door |  | 15d | 2014-10-27 A | 2014-11-17 | 391FS-16d, 399 |  | 15d | 0d | start no earlier than 2014-10-24 |
| 401 | 1.15.8.4 | Instalacion artefactos sanitarios |  | 15d | 2014-10-16 A | 2014-11-10 | 368FS-15d, 391FS-12d | 30% | 10.5d | 0d |  |
| 402 | 1.15.8.5 | Instalacion cubierta |  | 10d | 2014-10-29 A | 2014-11-12 | 391FS-8d |  | 10d | 0d | start no earlier than 2014-10-24 |
| 403 | 1.15.8.6 | Instalacion espejo |  | 4d | 2014-10-30 A | 2014-11-05 | 401FS-7d |  | 4d | 0d |  |
| 404 | 1.15.9 | **Cielos** |  | 82d | 2014-07-28 A | 2014-11-18 |  | 83% | 13.94d | 0d |  |
| 405 | 1.15.9.1 | Instalaciones (Clima y Sanitarias estimada) |  | 35d | 2014-07-28 A | 2014-09-12 | 383FS-5d | 100% | 0d | 0d |  |
| 406 | 1.15.9.2 | Estructuración Cielo Volcanita |  | 15d | 2014-08-28 A | 2014-09-17 | 405FS-12d | 100% | 0d | 0d |  |
| 407 | 1.15.9.3 | Instalaciones TyP estimada |  | 20d | 2014-09-09 A | 2014-10-06 | 406FS-7d | 100% | 0d | 0d |  |
| 408 | 1.15.9.4 | Tapado de cielo |  | 15d | 2014-09-26 A | 2014-10-28 | 407FS-7d | 90% | 1.5d | 0d |  |
| 409 | 1.15.9.5 | Pintura Cielo |  | 15d | 2014-10-10 A | 2014-10-31 | 408FS-5d | 70% | 4.5d | 0d |  |
| 410 | 1.15.9.6 | Cenefa trupan |  | 10d | 2014-10-20 A | 2014-10-31 | 387 | 95% | 0.5d | 0d |  |
| 411 | 1.15.9.7 | Cielo Palmeta acústica |  | 15d | 2014-10-29 A | 2014-11-18 | 410FS-3d |  | 15d | 0d |  |

| ID | WBS | Task | Type | Duration | Start | Finish | Predecessors | Complete | Remaining | Total slack | Constraint |
| --- | --- | --- | --- | --- | --- | --- | --- | --- | --- | --- | --- |
| 412 | 1.15.10 | **Luminarias** |  | 15d | 2014-10-27 A | 2014-11-14 |  |  | 15d | 0d |  |
| 413 | 1.15.10.1 | Instalacion Luminarias |  | 15d | 2014-10-27 A | 2014-11-14 | 409FS-10d |  | 15d | 0d | start no earlier than 2014-10-24 |
| 414 | 1.15.11 | Entrega y aseo | milestone | 0d | 2014-11-27 A | 2014-11-27 | 396 |  | 0d | 0d |  |
| 415 | 1.16 | **12º Piso** |  | 109d | 2014-06-30 A | 2014-11-28 |  | 46% | 58.86d | 0d |  |
| 416 | 1.16.1 | Entrega obra gruesa | milestone | 0d | 2014-06-30 A | 2014-06-30 | 3FS+126d | 100% | 0d | 0d |  |
| 417 | 1.16.2 | Trazado |  | 4d | 2014-07-01 A | 2014-07-04 | 416 | 100% | 0d | 0d |  |
| 418 | 1.16.3 | Sobrelosa |  | 8d | 2014-07-07 A | 2014-07-16 | 417 | 100% | 0d | 0d |  |
| 419 | 1.16.4 | **Tabiqueria** |  | 50.4d | 2014-08-18 A | 2014-10-27 |  | 99% | 0.5d | 0d |  |
| 420 | 1.16.4.1 | 1ª Cara |  | 10d | 2014-08-18 A | 2014-08-29 | 382FS-20d, 418FS+6d | 100% | 0d | 0d |  |
| 421 | 1.16.4.2 | Instalaciones Asociadas |  | 20d | 2014-08-26 A | 2014-10-27 | 420FS-4d | 98% | 0.4d | 0d |  |
| 422 | 1.16.4.3 | 2ª Cara |  | 10d | 2014-09-22 A | 2014-10-27 | 421FS-1d | 98% | 0.2d | 0d |  |
| 423 | 1.16.5 | Enlucidos |  | 15d | 2014-09-22 A | 2014-10-10 | 422FS-10d | 100% | 0d | 0d |  |
| 424 | 1.16.6 | Pinturas Interiores |  | 25d | 2014-10-02 A | 2014-11-05 | 422FS-2d | 70% | 7.5d | 0d |  |
| 425 | 1.16.7 | **Revestimiento de piso y muro** |  | 45d | 2014-09-29 A | 2014-11-28 |  |  | 45d | 0d |  |
| 426 | 1.16.7.1 | TERMINO VENTANA GLASSTECH | milestone | 0d | 2014-09-29 A | 2014-09-29 |  | 100% | 0d | 0d | start no earlier than 2014-09-29 |
| 427 | 1.16.7.2 | Instalacion alfombra |  | 10d | 2014-11-13 A | 2014-11-26 | 429FS-8d |  | 10d | 0d |  |
| 428 | 1.16.7.3 | Instalacion porcelanatos |  | 15d | 2014-11-05 A | 2014-11-25 | 391FS-10d, 436 |  | 15d | 0d |  |
| 429 | 1.16.7.4 | Papel mural |  | 10d | 2014-11-11 A | 2014-11-24 | 430FS-5d, 431FS-5d, 447FS-5d |  | 10d | 0d |  |
| 430 | 1.16.7.5 | Guardapolvos |  | 10d | 2014-11-04 A | 2014-11-17 | 424FS-2d |  | 10d | 0d |  |
| 431 | 1.16.7.6 | Carpintería (colocacion marco,endolados,pilastra,hoja,quincalleria) |  | 10d | 2014-11-04 A | 2014-11-17 | 424FS-2d |  | 10d | 0d |  |
| 432 | 1.16.7.7 | Llegada de muebles por contratista |  | 10d | 2014-11-03 A | 2014-11-14 |  |  | 10d | 0d | start no earlier than 2014-11-03 |
| 433 | 1.16.7.8 | Muebles |  | 10d | 2014-11-17 A | 2014-11-28 | 429FS-6d, 432 |  | 10d | 0d |  |
| 434 | 1.16.8 | **Baños** |  | 39d | 2014-10-06 A | 2014-11-27 |  | 20% | 31.2d | 0d |  |
| 435 | 1.16.8.1 | Instalacion zocalo |  | 10d | 2014-10-06 A | 2014-10-17 | 398, 422 | 100% | 0d | 0d |  |
| 436 | 1.16.8.2 | Impermeabilizacion |  | 10d | 2014-10-20 A | 2014-11-04 | 435 | 30% | 7d | 0d |  |
| 437 | 1.16.8.3 | Instalacion Shower Door |  | 15d | 2014-11-07 A | 2014-11-27 | 428FS-13d, 436 |  | 15d | 0d |  |
| 438 | 1.16.8.4 | Instalacion artefactos sanitarios |  | 15d | 2014-11-06 A | 2014-11-26 | 401FS-18d, 428FS-14d |  | 15d | 0d |  |
| 439 | 1.16.8.5 | Instalacion cubierta |  | 11d | 2014-11-13 A | 2014-11-27 | 428FS-9d |  | 11d | 0d |  |
| 440 | 1.16.8.6 | Instalacion espejo |  | 4d | 2014-11-19 A | 2014-11-24 | 438FS-6d |  | 4d | 0d |  |

| ID | WBS | Task | Type | Duration | Start | Finish | Predecessors | Complete | Remaining | Total slack | Constraint |
| --- | --- | --- | --- | --- | --- | --- | --- | --- | --- | --- | --- |
| 441 | 1.16.9 | **Cielos** |  | 65d | 2014-08-25 A | 2014-11-21 |  | 58% | 27.3d | 0d |  |
| 442 | 1.16.9.1 | Instalaciones (Clima y Sanitarias estimada) |  | 35d | 2014-08-25 A | 2014-10-28 | 420FS-5d | 95% | 1.75d | 0d |  |
| 443 | 1.16.9.2 | Estructuración Cielo Volcanita |  | 15d | 2014-09-22 A | 2014-10-29 | 442FS-15d | 85% | 2.25d | 0d |  |
| 444 | 1.16.9.3 | Instalaciones TyP estimada |  | 20d | 2014-10-02 A | 2014-10-29 | 443FS-7d | 85% | 3d | 0d |  |
| 445 | 1.16.9.4 | Tapado de cielo |  | 15d | 2014-10-21 A | 2014-11-10 | 444FS-7d | 55% | 6.75d | 0d |  |
| 446 | 1.16.9.5 | Pintura Cielo |  | 15d | 2014-10-31 A | 2014-11-20 | 445FS-7d | 10% | 13.5d | 0d |  |
| 447 | 1.16.9.6 | Cenefa trupan |  | 10d | 2014-11-04 A | 2014-11-17 | 424FS-2d |  | 10d | 0d |  |
| 448 | 1.16.9.7 | Cielo Palmeta acústica |  | 15d | 2014-11-03 A | 2014-11-21 | 447FS-11d |  | 15d | 0d |  |
| 449 | 1.16.10 | **Luminarias** |  | 15d | 2014-11-07 A | 2014-11-27 |  |  | 15d | 0d |  |
| 450 | 1.16.10.1 | Instalacion Luminarias |  | 15d | 2014-11-07 A | 2014-11-27 | 446FS-10d |  | 15d | 0d |  |
| 451 | 1.16.11 | Entrega y aseo | milestone | 0d | 2014-11-28 A | 2014-11-28 | 433 |  | 0d | 0d |  |
| 452 | 1.17 | **13º Piso** |  | 111d | 2014-07-10 A | 2014-12-12 |  | 39% | 67.71d | 0d |  |
| 453 | 1.17.1 | Entrega obra gruesa | milestone | 0d | 2014-07-10 A | 2014-07-10 | 3FS+134d | 100% | 0d | 0d |  |
| 454 | 1.17.2 | Trazado |  | 5d | 2014-07-11 A | 2014-07-17 | 453 | 100% | 0d | 0d |  |
| 455 | 1.17.3 | Sobrelosa |  | 8d | 2014-07-18 A | 2014-07-29 | 454 | 100% | 0d | 0d |  |
| 456 | 1.17.4 | **Tabiqueria** |  | 46.6d | 2014-08-25 A | 2014-10-28 |  | 95% | 2.33d | 0d |  |
| 457 | 1.17.4.1 | 1ª Cara |  | 10d | 2014-08-25 A | 2014-09-05 | 419FS-30d, 455 | 100% | 0d | 0d |  |
| 458 | 1.17.4.2 | Instalaciones Asociadas |  | 20d | 2014-09-02 A | 2014-10-28 | 457FS-4d | 92% | 1.6d | 0d |  |
| 459 | 1.17.4.3 | 2ª Cara |  | 10d | 2014-09-29 A | 2014-10-28 | 458FS-1d | 95% | 0.5d | 0d |  |
| 460 | 1.17.5 | Enlucidos |  | 15d | 2014-09-29 A | 2014-10-17 | 459FS-10d | 100% | 0d | 0d |  |
| 461 | 1.17.6 | Pinturas interiores |  | 25d | 2014-10-09 A | 2014-11-12 | 459FS-2d | 63% | 9.25d | 0d |  |
| 462 | 1.17.7 | **Revestimiento de piso y muro** |  | 45d | 2014-10-13 A | 2014-12-12 |  |  | 45d | 0d |  |
| 463 | 1.17.7.1 | TERMINO VENTANA GLASSTECH | milestone | 0d | 2014-10-13 A | 2014-10-13 |  | 100% | 0d | 0d | start no earlier than 2014-10-13 |
| 464 | 1.17.7.2 | Instalacion alfombra |  | 10d | 2014-11-27 A | 2014-12-10 | 466FS-5d |  | 10d | 0d |  |
| 465 | 1.17.7.3 | Instalacion porcelanatos |  | 15d | 2014-11-12 A | 2014-12-02 | 473 |  | 15d | 0d |  |
| 466 | 1.17.7.4 | Papel mural |  | 10d | 2014-11-20 A | 2014-12-03 | 467FS-5d, 468FS-5d, 484FS-5d |  | 10d | 0d |  |
| 467 | 1.17.7.5 | Guardapolvos |  | 10d | 2014-11-13 A | 2014-11-26 | 461 |  | 10d | 0d |  |
| 468 | 1.17.7.6 | Carpintería (colocacion marco,endolados,pilastra,hoja,quincalleria) |  | 10d | 2014-11-13 A | 2014-11-26 | 461 |  | 10d | 0d |  |
| 469 | 1.17.7.7 | Llegada de muebles por contratista |  | 10d | 2014-11-17 A | 2014-11-28 |  |  | 10d | 0d | start no earlier than 2014-11-17 |
| 470 | 1.17.7.8 | Muebles |  | 10d | 2014-12-01 A | 2014-12-12 | 466FS-5d, 469 |  | 10d | 0d |  |

| ID | WBS | Task | Type | Duration | Start | Finish | Predecessors | Complete | Remaining | Total slack |
| --- | --- | --- | --- | --- | --- | --- | --- | --- | --- | --- |
| 471 | 1.17.8 | **Baños** |  | 38d | 2014-10-15 A | 2014-12-05 |  | 16% | 31.92d | 0d |
| 472 | 1.17.8.1 | Instalacion zocalo |  | 10d | 2014-10-15 A | 2014-10-28 | 435FS-3d, 459 | 100% | 0d | 0d |
| 473 | 1.17.8.2 | Impermeabilizacion |  | 10d | 2014-10-29 A | 2014-11-11 | 472 |  | 10d | 0d |
| 474 | 1.17.8.3 | Instalacion Shower Door |  | 15d | 2014-11-12 A | 2014-12-02 | 465FS-15d, 473 |  | 15d | 0d |
| 475 | 1.17.8.4 | Instalacion artefactos sanitarios |  | 15d | 2014-11-17 A | 2014-12-05 | 438FS-19d, 465FS-12d |  | 15d | 0d |
| 476 | 1.17.8.5 | Instalacion cubierta |  | 10d | 2014-11-19 A | 2014-12-02 | 465FS-10d |  | 10d | 0d |
| 477 | 1.17.8.6 | Instalacion espejo |  | 4d | 2014-12-01 A | 2014-12-04 | 475FS-5d |  | 4d | 0d |
| 478 | 1.17.9 | **Cielos** |  | 67d | 2014-09-01 A | 2014-12-02 |  | 43% | 38.19d | 0d |
| 479 | 1.17.9.1 | Instalaciones (Clima y Sanitarias estimada) |  | 35d | 2014-09-01 A | 2014-11-04 | 457FS-5d | 82% | 6.3d | 0d |
| 480 | 1.17.9.2 | Estructuración Cielo Volcanita |  | 15d | 2014-09-29 A | 2014-10-29 | 479FS-15d | 80% | 3d | 0d |
| 481 | 1.17.9.3 | Instalaciones TyP estimada |  | 20d | 2014-10-09 A | 2014-11-05 | 480FS-7d | 65% | 7d | 0d |
| 482 | 1.17.9.4 | Tapado de cielo |  | 15d | 2014-10-28 A | 2014-11-17 | 481FS-7d |  | 15d | 0d |
| 483 | 1.17.9.5 | Pintura Cielo |  | 15d | 2014-11-07 A | 2014-11-27 | 482FS-7d |  | 15d | 0d |
| 484 | 1.17.9.6 | Cenefa trupan |  | 10d | 2014-11-13 A | 2014-11-26 | 461 |  | 10d | 0d |
| 485 | 1.17.9.7 | Cielo Palmeta acústica |  | 15d | 2014-11-12 A | 2014-12-02 | 484FS-11d |  | 15d | 0d |
| 486 | 1.17.10 | **Luminarias** |  | 15d | 2014-11-14 A | 2014-12-04 |  |  | 15d | 0d |
| 487 | 1.17.10.1 | Instalacion Luminarias |  | 15d | 2014-11-14 A | 2014-12-04 | 483FS-10d |  | 15d | 0d |
| 488 | 1.17.11 | Entrega y aseo | milestone | 0d | 2014-12-12 A | 2014-12-12 | 470 |  | 0d | 0d |
| 489 | 1.18 | **14º Piso** |  | 108d | 2014-07-22 A | 2014-12-19 |  | 40% | 64.8d | 0d |
| 490 | 1.18.1 | Entrega obra gruesa | milestone | 0d | 2014-07-22 A | 2014-07-22 | 3FS+142d | 100% | 0d | 0d |
| 491 | 1.18.2 | Trazado |  | 4d | 2014-07-23 A | 2014-07-28 | 490 | 100% | 0d | 0d |
| 492 | 1.18.3 | Sobrelosa |  | 8d | 2014-07-29 A | 2014-08-07 | 491 | 100% | 0d | 0d |
| 493 | 1.18.4 | **Tabiqueria** |  | 40.8d | 2014-09-01 A | 2014-10-27 |  | 97% | 1.22d | 0d |
| 494 | 1.18.4.1 | 1ª Cara |  | 10d | 2014-09-01 A | 2014-09-12 | 456FS-30d, 492 | 100% | 0d | 0d |
| 495 | 1.18.4.2 | Instalaciones Asociadas |  | 20d | 2014-09-09 A | 2014-10-27 | 494FS-4d | 98% | 0.4d | 0d |
| 496 | 1.18.4.3 | 2ª Cara |  | 10d | 2014-10-06 A | 2014-10-27 | 495FS-1d | 92% | 0.8d | 0d |
| 497 | 1.18.5 | Enlucidos |  | 15d | 2014-10-06 A | 2014-10-24 | 496FS-10d | 100% | 0d | 0d |
| 498 | 1.18.6 | Pinturas interiores |  | 25d | 2014-10-16 A | 2014-11-19 | 496FS-2d | 65% | 8.75d | 0d |

| ID | WBS | Task | Type | Duration | Start | Finish | Predecessors | Complete | Remaining | Total slack | Constraint |
| --- | --- | --- | --- | --- | --- | --- | --- | --- | --- | --- | --- |
| 499 | 1.18.7 | **Revestimiento de piso y muro** |  | 40d | 2014-10-27 A | 2014-12-19 |  |  | 40d | 0d |  |
| 500 | 1.18.7.1 | TERMINO VENTANA GLASSTECH | milestone | 0d | 2014-10-27 A | 2014-10-27 |  | 100% | 0d | 0d | start no earlier than 2014-10-27 |
| 501 | 1.18.7.2 | Instalacion alfombra |  | 10d | 2014-12-04 A | 2014-12-17 | 503FS-5d |  | 10d | 0d |  |
| 502 | 1.18.7.3 | Instalacion porcelanatos |  | 15d | 2014-11-20 A | 2014-12-10 | 510 |  | 15d | 0d |  |
| 503 | 1.18.7.4 | Papel mural |  | 10d | 2014-11-27 A | 2014-12-10 | 504FS-5d, 505FS-5d, 521FS-5d |  | 10d | 0d |  |
| 504 | 1.18.7.5 | Guardapolvos |  | 10d | 2014-11-20 A | 2014-12-03 | 498 |  | 10d | 0d |  |
| 505 | 1.18.7.6 | Carpintería (colocacion marco,endolados,pilastra,hoja,quincalleria) |  | 10d | 2014-11-20 A | 2014-12-03 | 498 |  | 10d | 0d |  |
| 506 | 1.18.7.7 | Llegada de muebles por contratista |  | 10d | 2014-11-24 A | 2014-12-05 |  |  | 10d | 0d | start no earlier than 2014-11-24 |
| 507 | 1.18.7.8 | Muebles |  | 10d | 2014-12-08 A | 2014-12-19 | 503FS-5d, 506 |  | 10d | 0d |  |
| 508 | 1.18.8 | **Baños** |  | 36d | 2014-10-23 A | 2014-12-11 |  | 23% | 27.72d | 0d |  |
| 509 | 1.18.8.1 | Instalacion zocalo |  | 10d | 2014-10-23 A | 2014-11-05 | 472FS-4d, 496 | 100% | 0d | 0d |  |
| 510 | 1.18.8.2 | Impermeabilizacion |  | 10d | 2014-11-06 A | 2014-11-19 | 509 | 45% | 5.5d | 0d |  |
| 511 | 1.18.8.3 | Instalacion Shower Door |  | 15d | 2014-11-20 A | 2014-12-10 | 502FS-15d, 510 |  | 15d | 0d |  |
| 512 | 1.18.8.4 | Instalacion artefactos sanitarios |  | 15d | 2014-11-21 A | 2014-12-11 | 475FS-18d, 502FS-14d |  | 15d | 0d |  |
| 513 | 1.18.8.5 | Instalacion cubierta |  | 10d | 2014-11-28 A | 2014-12-11 | 502FS-9d |  | 10d | 0d |  |
| 514 | 1.18.8.6 | Instalacion espejo |  | 4d | 2014-12-05 A | 2014-12-10 | 512FS-5d |  | 4d | 0d |  |
| 515 | 1.18.9 | **Cielos** |  | 67d | 2014-09-08 A | 2014-12-09 |  | 42% | 38.86d | 0d |  |
| 516 | 1.18.9.1 | Instalaciones (Clima y Sanitarias estimada) |  | 35d | 2014-09-08 A | 2014-11-04 | 494FS-5d | 80% | 7d | 0d |  |
| 517 | 1.18.9.2 | Estructuración Cielo Volcanita |  | 15d | 2014-10-06 A | 2014-10-29 | 516FS-15d | 80% | 3d | 0d |  |
| 518 | 1.18.9.3 | Instalaciones TyP estimada |  | 20d | 2014-10-16 A | 2014-11-12 | 517FS-7d | 55% | 9d | 0d |  |
| 519 | 1.18.9.4 | Tapado de cielo |  | 15d | 2014-11-04 A | 2014-11-24 | 518FS-7d | 10% | 13.5d | 0d |  |
| 520 | 1.18.9.5 | Pintura Cielo |  | 15d | 2014-11-14 A | 2014-12-04 | 519FS-7d |  | 15d | 0d |  |
| 521 | 1.18.9.6 | Cenefa trupan |  | 10d | 2014-11-20 A | 2014-12-03 | 498 |  | 10d | 0d |  |
| 522 | 1.18.9.7 | Cielo Palmeta acústica |  | 15d | 2014-11-19 A | 2014-12-09 | 521FS-11d |  | 15d | 0d |  |

| ID | WBS | Task | Type | Duration | Start | Finish | Predecessors | Complete | Remaining | Total slack | Constraint |
| --- | --- | --- | --- | --- | --- | --- | --- | --- | --- | --- | --- |
| 523 | 1.18.10 | **Luminarias** |  | 15d | 2014-11-21 A | 2014-12-11 |  |  | 15d | 0d |  |
| 524 | 1.18.10.1 | Instalacion Luminarias |  | 15d | 2014-11-21 A | 2014-12-11 | 520FS-10d |  | 15d | 0d |  |
| 525 | 1.18.11 | Entrega y aseo | milestone | 0d | 2014-12-19 A | 2014-12-19 | 507 |  | 0d | 0d |  |
| 526 | 1.19 | **15º Piso** |  | 105d | 2014-08-01 A | 2014-12-26 |  | 37% | 66.15d | 0d |  |
| 527 | 1.19.1 | Entrega obra gruesa | milestone | 0d | 2014-08-01 A | 2014-08-01 | 3FS+150d | 100% | 0d | 0d |  |
| 528 | 1.19.2 | Trazado |  | 4d | 2014-08-04 A | 2014-08-07 | 527 | 100% | 0d | 0d |  |
| 529 | 1.19.3 | Sobrelosa |  | 6d | 2014-08-08 A | 2014-08-15 | 528 | 100% | 0d | 0d |  |
| 530 | 1.19.4 | **Tabiqueria** |  | 36.6d | 2014-09-08 A | 2014-10-28 |  | 94% | 2.2d | 0d |  |
| 531 | 1.19.4.1 | 1ª Cara |  | 10d | 2014-09-08 A | 2014-09-19 | 493FS-30d, 529 | 100% | 0d | 0d |  |
| 532 | 1.19.4.2 | Instalaciones Asociadas |  | 20d | 2014-09-16 A | 2014-10-28 | 531FS-4d | 92% | 1.6d | 0d |  |
| 533 | 1.19.4.3 | 2ª Cara |  | 10d | 2014-10-13 A | 2014-10-28 | 532FS-1d | 92% | 0.8d | 0d |  |
| 534 | 1.19.5 | Enlucidos |  | 15d | 2014-10-13 A | 2014-10-31 | 533FS-10d | 98% | 0.3d | 0d |  |
| 535 | 1.19.6 | Pinturas interiores |  | 25d | 2014-10-23 A | 2014-11-26 | 533FS-2d | 60% | 10d | 0d |  |
| 536 | 1.19.7 | **Revestimiento de piso y muro** |  | 35d | 2014-11-10 A | 2014-12-26 |  |  | 35d | 0d |  |
| 537 | 1.19.7.1 | TERMINO VENTANA GLASSTECH | milestone | 0d | 2014-11-10 A | 2014-11-10 |  |  | 0d | 0d | start no earlier than 2014-11-10 |
| 538 | 1.19.7.2 | Instalacion alfombra |  | 10d | 2014-12-11 A | 2014-12-24 | 540FS-5d |  | 10d | 0d |  |
| 539 | 1.19.7.3 | Instalacion porcelanatos |  | 15d | 2014-11-28 A | 2014-12-18 | 547 |  | 15d | 0d |  |
| 540 | 1.19.7.4 | Papel mural |  | 10d | 2014-12-04 A | 2014-12-17 | 541FS-5d, 542FS-5d, 558FS-5d |  | 10d | 0d |  |
| 541 | 1.19.7.5 | Guardapolvos |  | 10d | 2014-11-27 A | 2014-12-10 | 535 |  | 10d | 0d |  |
| 542 | 1.19.7.6 | Carpintería (colocacion marco,endolados,pilastra,hoja,quincalleria) |  | 10d | 2014-11-27 A | 2014-12-10 | 535 |  | 10d | 0d |  |
| 543 | 1.19.7.7 | Llegada de muebles por contratista |  | 10d | 2014-12-08 A | 2014-12-19 |  |  | 10d | 0d | start no earlier than 2014-12-08 |
| 544 | 1.19.7.8 | Muebles |  | 10d | 2014-12-15 A | 2014-12-26 | 540FS-5d, 543FS-5d |  | 10d | 0d |  |
| 545 | 1.19.8 | **Baños** |  | 38d | 2014-10-31 A | 2014-12-23 |  | 16% | 31.92d | 0d |  |
| 546 | 1.19.8.1 | Instalacion zocalo |  | 10d | 2014-10-31 A | 2014-11-13 | 509FS-4d, 533 | 100% | 0d | 0d |  |
| 547 | 1.19.8.2 | Impermeabilizacion |  | 10d | 2014-11-14 A | 2014-11-27 | 546 |  | 10d | 0d |  |
| 548 | 1.19.8.3 | Instalacion Shower Door |  | 15d | 2014-12-01 A | 2014-12-19 | 539FS-14d, 547FS-2d |  | 15d | 0d |  |
| 549 | 1.19.8.4 | Instalacion artefactos sanitarios |  | 15d | 2014-12-02 A | 2014-12-22 | 512FS-11d, 539FS-13d |  | 15d | 0d |  |
| 550 | 1.19.8.5 | Instalacion cubierta |  | 10d | 2014-12-10 A | 2014-12-23 | 539FS-7d |  | 10d | 0d |  |
| 551 | 1.19.8.6 | Instalacion espejo |  | 4d | 2014-12-16 A | 2014-12-19 | 549FS-5d |  | 4d | 0d |  |

| ID | WBS | Task | Type | Duration | Start | Finish | Predecessors | Complete | Remaining | Total slack | Constraint |
| --- | --- | --- | --- | --- | --- | --- | --- | --- | --- | --- | --- |
| 552 | 1.19.9 | **Cielos** |  | 67d | 2014-09-15 A | 2014-12-16 |  | 39% | 40.87d | 0d |  |
| 553 | 1.19.9.1 | Instalaciones (Clima y Sanitarias estimada) |  | 35d | 2014-09-15 A | 2014-11-03 | 531FS-5d | 84% | 5.6d | 0d |  |
| 554 | 1.19.9.2 | Estructuración Cielo Volcanita |  | 15d | 2014-10-13 A | 2014-11-03 | 553FS-15d | 66% | 5.1d | 0d |  |
| 555 | 1.19.9.3 | Instalaciones TyP estimada |  | 20d | 2014-10-23 A | 2014-11-19 | 554FS-7d | 47% | 10.6d | 0d |  |
| 556 | 1.19.9.4 | Tapado de cielo |  | 15d | 2014-11-11 A | 2014-12-01 | 555FS-7d | 2% | 14.7d | 0d |  |
| 557 | 1.19.9.5 | Pintura Cielo |  | 15d | 2014-11-21 A | 2014-12-11 | 556FS-7d |  | 15d | 0d |  |
| 558 | 1.19.9.6 | Cenefa trupan |  | 10d | 2014-11-27 A | 2014-12-10 | 535 |  | 10d | 0d |  |
| 559 | 1.19.9.7 | Cielo Palmeta acústica |  | 15d | 2014-11-26 A | 2014-12-16 | 558FS-11d |  | 15d | 0d |  |
| 560 | 1.19.10 | **Luminarias** |  | 15d | 2014-11-28 A | 2014-12-18 |  |  | 15d | 0d |  |
| 561 | 1.19.10.1 | Instalacion Luminarias |  | 15d | 2014-11-28 A | 2014-12-18 | 557FS-10d |  | 15d | 0d |  |
| 562 | 1.19.11 | Entrega y aseo | milestone | 0d | 2014-12-26 A | 2014-12-26 | 544 |  | 0d | 0d |  |
| 563 | 1.20 | **16º Piso** |  | 110d | 2014-08-08 A | 2015-01-09 |  | 31% | 75.9d | 0d |  |
| 564 | 1.20.1 | Entrega obra gruesa | milestone | 0d | 2014-08-08 A | 2014-08-08 | 3FS+155d | 100% | 0d | 0d |  |
| 565 | 1.20.2 | Trazado |  | 4d | 2014-08-11 A | 2014-08-14 | 564 | 100% | 0d | 0d |  |
| 566 | 1.20.3 | Sobrelosa |  | 6d | 2014-08-15 A | 2014-08-22 | 565 | 100% | 0d | 0d |  |
| 567 | 1.20.4 | **Tabiqueria** |  | 36d | 2014-09-15 A | 2014-11-03 |  | 81% | 6.84d | 0d |  |
| 568 | 1.20.4.1 | 1ª Cara |  | 10d | 2014-09-15 A | 2014-10-27 | 530FS-30d, 566 | 95% | 0.5d | 0d |  |
| 569 | 1.20.4.2 | Instalaciones Asociadas |  | 20d | 2014-09-23 A | 2014-10-30 | 568FS-4d | 80% | 4d | 0d |  |
| 570 | 1.20.4.3 | 2ª Cara |  | 10d | 2014-10-20 A | 2014-11-03 | 569FS-1d | 70% | 3d | 0d |  |
| 571 | 1.20.5 | Enlucidos |  | 15d | 2014-10-20 A | 2014-11-07 | 570FS-10d | 95% | 0.75d | 0d |  |
| 572 | 1.20.6 | Pinturas interiores |  | 25d | 2014-10-30 A | 2014-12-03 | 570FS-2d | 35% | 16.25d | 0d |  |
| 573 | 1.20.7 | **Revestimiento de piso y muro** |  | 35d | 2014-11-24 A | 2015-01-09 |  |  | 35d | 0d |  |
| 574 | 1.20.7.1 | TERMINO VENTANA GLASSTECH | milestone | 0d | 2014-11-24 A | 2014-11-24 |  |  | 0d | 0d | start no earlier than 2014-11-24 |
| 575 | 1.20.7.2 | Instalacion alfombra |  | 10d | 2014-12-25 A | 2015-01-07 | 577 |  | 10d | 0d |  |
| 576 | 1.20.7.3 | Instalacion porcelanatos |  | 15d | 2014-12-05 A | 2014-12-25 | 584 |  | 15d | 0d |  |
| 577 | 1.20.7.4 | Papel mural |  | 10d | 2014-12-11 A | 2014-12-24 | 578FS-5d, 579FS-5d, 595FS-5d |  | 10d | 0d |  |
| 578 | 1.20.7.5 | Guardapolvos |  | 10d | 2014-12-04 A | 2014-12-17 | 572 |  | 10d | 0d |  |
| 579 | 1.20.7.6 | Carpintería (colocacion marco,endolados,pilastra,hoja,quincalleria) |  | 10d | 2014-12-04 A | 2014-12-17 | 572 |  | 10d | 0d |  |
| 580 | 1.20.7.7 | Llegada de muebles por contratista |  | 10d | 2014-12-15 A | 2014-12-26 |  |  | 10d | 0d | start no earlier than 2014-12-15 |
| 581 | 1.20.7.8 | Muebles |  | 10d | 2014-12-29 A | 2015-01-09 | 577FS-5d, 580 |  | 10d | 0d |  |

| ID | WBS | Task | Type | Duration | Start | Finish | Predecessors | Complete | Remaining | Total slack |
| --- | --- | --- | --- | --- | --- | --- | --- | --- | --- | --- |
| 582 | 1.20.8 | **Baños** |  | 38d | 2014-11-07 A | 2014-12-30 |  | 14% | 32.68d | 0d |
| 583 | 1.20.8.1 | Instalacion zocalo |  | 10d | 2014-11-07 A | 2014-11-20 | 546FS-5d, 570 | 90% | 1d | 0d |
| 584 | 1.20.8.2 | Impermeabilizacion |  | 10d | 2014-11-21 A | 2014-12-04 | 583 |  | 10d | 0d |
| 585 | 1.20.8.3 | Instalacion Shower Door |  | 15d | 2014-12-08 A | 2014-12-26 | 576FS-14d, 584FS-2d |  | 15d | 0d |
| 586 | 1.20.8.4 | Instalacion artefactos sanitarios |  | 15d | 2014-12-10 A | 2014-12-30 | 549FS-10d, 576FS-12d |  | 15d | 0d |
| 587 | 1.20.8.5 | Instalacion cubierta |  | 10d | 2014-12-17 A | 2014-12-30 | 576FS-7d |  | 10d | 0d |
| 588 | 1.20.8.6 | Instalacion espejo |  | 4d | 2014-12-24 A | 2014-12-29 | 586FS-5d |  | 4d | 0d |
| 589 | 1.20.9 | **Cielos** |  | 67d | 2014-09-22 A | 2014-12-23 |  | 31% | 46.23d | 0d |
| 590 | 1.20.9.1 | Instalaciones (Clima y Sanitarias estimada) |  | 35d | 2014-09-22 A | 2014-11-07 | 568FS-5d | 77% | 8.05d | 0d |
| 591 | 1.20.9.2 | Estructuración Cielo Volcanita |  | 15d | 2014-10-20 A | 2014-11-12 | 590FS-15d | 15% | 12.75d | 0d |
| 592 | 1.20.9.3 | Instalaciones TyP estimada |  | 20d | 2014-10-30 A | 2014-11-26 | 591FS-7d | 45% | 11d | 0d |
| 593 | 1.20.9.4 | Tapado de cielo |  | 15d | 2014-11-18 A | 2014-12-08 | 592FS-7d |  | 15d | 0d |
| 594 | 1.20.9.5 | Pintura Cielo |  | 15d | 2014-11-28 A | 2014-12-18 | 593FS-7d |  | 15d | 0d |
| 595 | 1.20.9.6 | Cenefa trupan |  | 10d | 2014-12-04 A | 2014-12-17 | 572 |  | 10d | 0d |
| 596 | 1.20.9.7 | Cielo Palmeta acústica |  | 15d | 2014-12-03 A | 2014-12-23 | 595FS-11d |  | 15d | 0d |
| 597 | 1.20.10 | **Luminarias** |  | 15d | 2014-12-05 A | 2014-12-25 |  |  | 15d | 0d |
| 598 | 1.20.10.1 | Instalacion Luminarias |  | 15d | 2014-12-05 A | 2014-12-25 | 594FS-10d |  | 15d | 0d |
| 599 | 1.20.11 | Entrega y aseo | milestone | 0d | 2015-01-09 A | 2015-01-09 | 581 |  | 0d | 0d |
| 600 | 1.21 | **17º Piso** |  | 112d | 2014-08-18 A | 2015-01-21 |  | 18% | 91.84d | 0d |
| 601 | 1.21.1 | Entrega obra gruesa | milestone | 0d | 2014-08-18 A | 2014-08-18 | 3FS+161d | 100% | 0d | 0d |
| 602 | 1.21.2 | Trazado |  | 3d | 2014-08-19 A | 2014-08-21 | 601 | 100% | 0d | 0d |
| 603 | 1.21.3 | Sobrelosa |  | 5d | 2014-08-22 A | 2014-08-28 | 602 | 100% | 0d | 0d |
| 604 | 1.21.4 | **Tabiqueria** |  | 45d | 2014-09-16 A | 2014-11-17 |  | 54% | 20.7d | 0d |
| 605 | 1.21.4.1 | 1ª Cara |  | 10d | 2014-09-16 A | 2014-10-28 | 567FS-34d, 603 | 85% | 1.5d | 0d |
| 606 | 1.21.4.2 | Instalaciones Asociadas |  | 20d | 2014-09-24 A | 2014-11-12 | 605FS-4d | 35% | 13d | 0d |
| 607 | 1.21.4.3 | 2ª Cara |  | 10d | 2014-10-21 A | 2014-11-17 | 606FS-1d | 60% | 4d | 0d |
| 608 | 1.21.5 | Enlucidos |  | 15d | 2014-10-21 A | 2014-11-10 | 607FS-10d | 80% | 3d | 0d |
| 609 | 1.21.6 | Pinturas interiores |  | 25d | 2014-11-04 A | 2014-12-15 | 607 | 20% | 20d | 0d |

| ID | WBS | Task | Type | Duration | Start | Finish | Predecessors | Complete | Remaining | Total slack | Constraint |
| --- | --- | --- | --- | --- | --- | --- | --- | --- | --- | --- | --- |
| 610 | 1.21.7 | **Revestimiento de piso y muro** |  | 33d | 2014-12-08 A | 2015-01-21 |  |  | 33d | 0d |  |
| 611 | 1.21.7.1 | TERMINO VENTANA GLASSTECH | milestone | 0d | 2014-12-08 A | 2014-12-08 |  |  | 0d | 0d | start no earlier than 2014-12-08 |
| 612 | 1.21.7.2 | Instalacion alfombra |  | 10d | 2015-01-08 A | 2015-01-21 | 614 |  | 10d | 0d |  |
| 613 | 1.21.7.3 | Instalacion porcelanatos |  | 15d | 2014-12-12 A | 2015-01-02 | 621 |  | 15d | 0d |  |
| 614 | 1.21.7.4 | Papel mural |  | 10d | 2014-12-25 A | 2015-01-07 | 615FS-3d, 616FS-3d, 632FS-3d |  | 10d | 0d |  |
| 615 | 1.21.7.5 | Guardapolvos |  | 10d | 2014-12-16 A | 2014-12-29 | 609 |  | 10d | 0d |  |
| 616 | 1.21.7.6 | Carpintería (colocacion marco,endolados,pilastra,hoja,quincalleria) |  | 10d | 2014-12-16 A | 2014-12-29 | 609 |  | 10d | 0d |  |
| 617 | 1.21.7.7 | Llegada de muebles por contratista |  | 10d | 2014-12-22 A | 2015-01-02 |  |  | 10d | 0d | start no earlier than 2014-12-22 |
| 618 | 1.21.7.8 | Muebles |  | 10d | 2015-01-05 A | 2015-01-16 | 614FS-5d, 617 |  | 10d | 0d |  |
| 619 | 1.21.8 | **Baños** |  | 39.8d | 2014-11-13 A | 2015-01-07 |  | 2% | 39d | 0d |  |
| 620 | 1.21.8.1 | Instalacion zocalo |  | 10d | 2014-11-13 A | 2014-11-28 | 583FS-6d, 607 | 12% | 8.8d | 0d |  |
| 621 | 1.21.8.2 | Impermeabilizacion |  | 10d | 2014-11-28 A | 2014-12-12 | 620 |  | 10d | 0d |  |
| 622 | 1.21.8.3 | Instalacion Shower Door |  | 15d | 2014-12-16 A | 2015-01-06 | 613FS-13d, 621 |  | 15d | 0d |  |
| 623 | 1.21.8.4 | Instalacion artefactos sanitarios |  | 15d | 2014-12-17 A | 2015-01-07 | 586FS-10d, 613FS-12d |  | 15d | 0d |  |
| 624 | 1.21.8.5 | Instalacion cubierta |  | 10d | 2014-12-24 A | 2015-01-07 | 613FS-7d |  | 10d | 0d |  |
| 625 | 1.21.8.6 | Instalacion espejo |  | 4d | 2014-12-31 A | 2015-01-06 | 623FS-5d, 624FS-5d |  | 4d | 0d |  |
| 626 | 1.21.9 | **Cielos** |  | 74d | 2014-09-23 A | 2015-01-02 |  | 15% | 62.9d | 0d |  |
| 627 | 1.21.9.1 | Instalaciones (Clima y Sanitarias estimada) |  | 35d | 2014-09-23 A | 2014-11-26 | 605FS-5d | 35% | 22.75d | 0d |  |
| 628 | 1.21.9.2 | Estructuración Cielo Volcanita |  | 15d | 2014-11-05 A | 2014-11-26 | 627FS-15d |  | 15d | 0d | start no earlier than 2014-10-24 |
| 629 | 1.21.9.3 | Instalaciones TyP estimada |  | 20d | 2014-10-31 A | 2014-12-05 | 628FS-7d | 32% | 13.6d | 0d |  |
| 630 | 1.21.9.4 | Tapado de cielo |  | 15d | 2014-11-28 A | 2014-12-19 | 629FS-5d |  | 15d | 0d |  |
| 631 | 1.21.9.5 | Pintura Cielo |  | 15d | 2014-12-12 A | 2015-01-02 | 630FS-5d |  | 15d | 0d |  |
| 632 | 1.21.9.6 | Cenefa trupan |  | 10d | 2014-12-16 A | 2014-12-29 | 609 |  | 10d | 0d |  |
| 633 | 1.21.9.7 | Cielo Palmeta acústica |  | 15d | 2014-12-15 A | 2015-01-02 | 632FS-11d |  | 15d | 0d |  |

| ID | WBS | Task | Type | Duration | Start | Finish | Predecessors | Complete | Remaining | Total slack | Constraint |
| --- | --- | --- | --- | --- | --- | --- | --- | --- | --- | --- | --- |
| 634 | 1.21.10 | **Luminarias** |  | 15d | 2014-12-19 A | 2015-01-09 |  |  | 15d | 0d |  |
| 635 | 1.21.10.1 | Instalacion Luminarias |  | 15d | 2014-12-19 A | 2015-01-09 | 631FS-10d |  | 15d | 0d |  |
| 636 | 1.21.11 | Entrega y aseo | milestone | 0d | 2015-01-16 A | 2015-01-16 | 618 |  | 0d | 0d |  |
| 637 | 1.22 | **18º Piso** |  | 76.8d | 2014-09-29 A | 2015-01-13 |  | 14% | 66.05d | 0d |  |
| 638 | 1.22.1 | Entrega obra gruesa | milestone | 0d | 2014-09-29 A | 2014-09-29 | 3FS+171d | 100% | 0d | 0d | start no earlier than 2014-09-29 |
| 639 | 1.22.2 | Trazado |  | 4d | 2014-09-29 A | 2014-10-02 | 638 | 100% | 0d | 0d |  |
| 640 | 1.22.3 | Sobrelosa |  | 6d | 2014-10-03 A | 2014-10-28 | 639 | 75% | 1.5d | 0d |  |
| 641 | 1.22.4 | **Tabiqueria** |  | 30d | 2014-10-13 A | 2014-11-21 |  | 30% | 21d | 0d |  |
| 642 | 1.22.4.1 | 1ª Cara |  | 10d | 2014-10-13 A | 2014-11-03 | 604FS-29d, 640 | 60% | 4d | 0d |  |
| 643 | 1.22.4.2 | Instalaciones Asociadas |  | 15d | 2014-10-21 A | 2014-11-11 | 642FS-4d | 30% | 10.5d | 0d |  |
| 644 | 1.22.4.3 | 2ª Cara |  | 10d | 2014-11-10 A | 2014-11-21 | 643FS-2d |  | 10d | 0d |  |
| 645 | 1.22.5 | Enlucidos |  | 15d | 2014-11-07 A | 2014-11-27 | 644FS-10d | 40% | 9d | 0d |  |
| 646 | 1.22.6 | Tabique vidriado |  | 20d | 2014-10-27 A | 2014-11-21 | 639FS+15d |  | 20d | 0d | start no earlier than 2014-10-24 |
| 647 | 1.22.7 | Estructura Metálica |  | 30d | 2014-10-03 A | 2014-11-13 | 639 | 100% | 0d | 0d |  |
| 648 | 1.22.8 | Pinturas Interiores |  | 20d | 2014-11-24 A | 2014-12-19 | 644 |  | 20d | 0d |  |
| 649 | 1.22.9 | **Revestimiento de piso y muro** |  | 36.8d | 2014-11-24 A | 2015-01-13 |  |  | 36.8d | 0d |  |
| 650 | 1.22.9.1 | Instalacion porcelanatos |  | 20d | 2014-12-16 A | 2015-01-13 | 658 |  | 20d | 0d |  |
| 651 | 1.22.9.2 | Instalacion piso goma |  | 20d | 2014-11-24 A | 2014-12-19 | 646 |  | 20d | 0d |  |
| 652 | 1.22.9.3 | Guardapolvos |  | 10d | 2014-12-22 A | 2015-01-02 | 648 |  | 10d | 0d |  |
| 653 | 1.22.9.4 | Carpintería (colocacion marco,endolados,pilastra,hoja,quincalleria) |  | 10d | 2014-12-22 A | 2015-01-02 | 648 |  | 10d | 0d |  |
| 654 | 1.22.9.5 | Instalacion de ventanas |  | 10d | 2014-12-29 A | 2015-01-09 | 652FS-5d, 653FS-5d |  | 10d | 0d |  |
| 655 | 1.22.10 | **Piscina** |  | 20d | 2014-12-12 A | 2015-01-08 |  | 20% | 16d | 0d |  |
| 656 | 1.22.10.1 | Instalacion piscina |  | 20d | 2014-12-12 A | 2015-01-08 | 651FS-5d | 20% | 16d | 0d |  |
| 657 | 1.22.11 | **Baños** |  | 35d | 2014-11-25 A | 2015-01-13 |  |  | 35d | 0d |  |
| 658 | 1.22.11.1 | Impermeabilizacion |  | 15d | 2014-11-25 A | 2014-12-16 | 621FS-13d, 644 |  | 15d | 0d |  |
| 659 | 1.22.11.2 | Instalacion artefactos sanitarios |  | 12d | 2014-12-24 A | 2015-01-09 | 623FS-10d, 650FS-15d |  | 12d | 0d |  |
| 660 | 1.22.11.3 | Instalacion cubierta |  | 10d | 2014-12-30 A | 2015-01-13 | 650FS-10d |  | 10d | 0d |  |
| 661 | 1.22.11.4 | Instalacion espejo |  | 5d | 2014-12-31 A | 2015-01-07 | 659FS-7d |  | 5d | 0d |  |

| ID | WBS | Task | Type | Duration | Start | Finish | Predecessors | Complete | Remaining | Total slack | Constraint |
| --- | --- | --- | --- | --- | --- | --- | --- | --- | --- | --- | --- |
| 662 | 1.22.12 | **Cielos** |  | 56.7d | 2014-10-20 A | 2015-01-06 |  | 2% | 55.57d | 0d |  |
| 663 | 1.22.12.1 | Instalaciones (Clima y Sanitarias estimada) |  | 35d | 2014-10-20 A | 2014-12-10 | 642FS-5d | 8% | 32.2d | 0d |  |
| 664 | 1.22.12.2 | Estructuración Cielo Volcanita |  | 15d | 2014-11-19 A | 2014-12-10 | 663FS-15d |  | 15d | 0d |  |
| 665 | 1.22.12.3 | Instalaciones TyP estimada |  | 15d | 2014-12-01 A | 2014-12-22 | 664FS-7d |  | 15d | 0d |  |
| 666 | 1.22.12.4 | Tapado de cielo |  | 15d | 2014-12-11 A | 2015-01-01 | 665FS-7d |  | 15d | 0d |  |
| 667 | 1.22.12.5 | Pintura Cielo |  | 10d | 2014-12-23 A | 2015-01-06 | 666FS-7d |  | 10d | 0d |  |
| 668 | 1.22.12.6 | Cenefa trupan |  | 10d | 2014-12-22 A | 2015-01-02 | 648 |  | 10d | 0d |  |
| 669 | 1.22.12.7 | Cielo modular metalico |  | 15d | 2014-12-10 A | 2014-12-31 | 663 |  | 15d | 0d |  |
| 670 | 1.22.12.8 | Cielo Palmeta acústica |  | 15d | 2014-12-10 A | 2014-12-31 | 663 |  | 15d | 0d |  |
| 671 | 1.22.13 | **Luminarias** |  | 15d | 2014-12-23 A | 2015-01-13 |  |  | 15d | 0d |  |
| 672 | 1.22.13.1 | Instalacion luminarias |  | 15d | 2014-12-23 A | 2015-01-13 | 667FS-10d |  | 15d | 0d |  |
| 673 | 1.22.14 | Revestimiento metálico |  | 25d | 2014-12-08 A | 2015-01-09 | 638FS+50d |  | 25d | 0d |  |
| 674 | 1.22.15 | Entrega y aseo | milestone | 0d | 2015-01-13 A | 2015-01-13 | 650, 660 |  | 0d | 0d |  |
| 675 | 1.23 | **Cubierta** |  | 75d | 2014-09-29 A | 2015-01-09 |  | 9% | 68.25d | 0d |  |
| 676 | 1.23.1 | Entrega obra gruesa | milestone | 0d | 2014-09-29 A | 2014-09-29 | 3FS+161d | 100% | 0d | 0d | start no earlier than 2014-09-29 |
| 677 | 1.23.2 | Trazado |  | 5d | 2014-09-29 A | 2014-10-03 | 676 | 100% | 0d | 0d |  |
| 678 | 1.23.3 | Cerchas metalicas |  | 21d | 2014-11-03 A | 2014-12-01 | 677FS+20d | 50% | 10.5d | 0d |  |
| 679 | 1.23.4 | Parriilas estructura metálica de climatización |  | 20d | 2014-12-12 A | 2015-01-08 | 678FS+8d |  | 20d | 0d |  |
| 680 | 1.23.5 | Escotilas |  | 30d | 2014-11-10 A | 2014-12-19 | 677FS+25d |  | 30d | 0d |  |
| 681 | 1.23.6 | Gateras |  | 30d | 2014-11-17 A | 2014-12-26 | 677FS+30d |  | 30d | 0d |  |
| 682 | 1.23.7 | Instalacion de puertas |  | 10d | 2014-12-26 A | 2015-01-08 | 683FS+20d |  | 10d | 0d |  |
| 683 | 1.23.8 | Tabiqueria |  | 24d | 2014-10-27 A | 2014-11-27 | 604FS-30d, 677FS+6d |  | 24d | 0d | start no earlier than 2014-10-24 |
| 684 | 1.23.9 | Viga alero |  | 35d | 2014-10-27 A | 2014-12-12 | 676FS+20d |  | 35d | 0d |  |
| 685 | 1.23.10 | Entrega |  | 1d | 2015-01-09 A | 2015-01-09 | 679 |  | 1d | 0d |  |

| ID | WBS | Task | Type | Duration | Start | Finish | Predecessors | Complete | Remaining | Total slack |
| --- | --- | --- | --- | --- | --- | --- | --- | --- | --- | --- |
| 686 | 1.24 | **Levantamiento de Observaciones** |  | 15d | 2015-01-19 A | 2015-02-06 |  |  | 15d | 0d |
| 687 | 1.24.1 | Levantamiento de Observaciones |  | 15d | 2015-01-19 A | 2015-02-06 | 636 |  | 15d | 0d |
| 688 | 1.25 | **Desmovilización de Equipos** |  | 8d | 2015-02-02 A | 2015-02-11 |  |  | 8d | 0d |
| 689 | 1.25.1 | desmovilización de Equipos |  | 8d | 2015-02-02 A | 2015-02-11 | 687FS-5d |  | 8d | 0d |
| 690 | 1.26 | **Fachada** |  | 131d | 2014-06-23 A | 2014-12-22 |  | 73% | 35.37d | 0d |
| 691 | 1.26.1 | **MURO CORTINA COSTILLA** |  | 91.4d | 2014-06-23 A | 2014-10-28 |  | 97% | 2.74d | 0d |
| 692 | 1.26.1.1 | Replanteo y Trazado |  | 6d | 2014-06-23 A | 2014-06-30 | 5FS+120d | 100% | 0d | 0d |
| 693 | 1.26.1.2 | Instalación de Anclajes |  | 11d | 2014-07-07 A | 2014-07-21 | 692FS+4d | 100% | 0d | 0d |
| 694 | 1.26.1.3 | Instalación de Costillas y Fretes Vidriados |  | 40d | 2014-07-21 A | 2014-09-12 | 693FS-1d | 100% | 0d | 0d |
| 695 | 1.26.1.4 | Instalación de Puertas Automáticas y Pórtico de Vidrio |  | 6d | 2014-09-11 A | 2014-10-28 | 694FS-2d | 80% | 1.2d | 0d |
| 696 | 1.26.1.5 | Terminaciones y Entrega |  | 6d | 2014-09-18 A | 2014-10-28 | 695FS-1d | 80% | 1.2d | 0d |
| 697 | 1.26.2 | **Muro Cortina (estructura, clips de anclaje, cristal) Ventanas** |  | 111d | 2014-07-21 A | 2014-12-22 |  | 73% | 29.97d | 0d |
| 698 | 1.26.2.1 | Trazado Torre del 7° al 16° |  | 100d | 2014-07-21 A | 2014-12-05 | 5FS+140d | 100% | 0d | 0d |
| 699 | 1.26.2.2 | Ventanas y Muro Cortina del 7° al 16° |  | 101d | 2014-07-21 A | 2014-12-08 | 698FS-100d | 85% | 15.15d | 0d |
| 700 | 1.26.2.3 | Ventanas Linea Lateral del Eje 16 al 18 |  | 41d | 2014-10-27 A | 2014-12-22 | 698FS-30d | 52% | 19.68d | 0d |
| 701 | 1.26.2.4 | Ventanas Linea Lateral del Eje 8 al 10 |  | 41d | 2014-10-27 A | 2014-12-22 | 698FS-30d |  | 41d | 0d |
| 702 | 1.26.3 | Estructura metalica para parrillas fachada Kennedy |  | 110d | 2014-07-11 A | 2014-12-11 | 344FS+25d | 98% | 2.2d | 0d |
| 703 | 1.26.4 | Revestimiento Trespa hotel (incluido estructura) |  | 65d | 2014-09-22 A | 2014-12-19 | 344FS+76d | 40% | 39d | 0d |
| 704 | 1.26.5 | Celosía 7OS |  | 55d | 2014-10-06 A | 2014-12-19 | 676FS+5d | 50% | 27.5d | 0d |
| 705 | 1.26.6 | Revestimiento alucobond (estructura, anclajes, planchas) |  | 85d | 2014-08-25 A | 2014-12-19 | 344FS+56d | 60% | 34d | 0d |
| 706 | 1.27 | **Ascensores** |  | 179d | 2014-04-30 A | 2015-01-05 |  | 72% | 50.12d | 0d |
| 707 | 1.27.1 | **Ascensores P1 Y P2** |  | 112d | 2014-04-30 A | 2014-10-02 |  | 100% | 0d | 0d |
| 708 | 1.27.1.1 | Remates obra gruesa y obras civiles |  | 44d | 2014-04-30 A | 2014-06-30 | 207 | 100% | 0d | 0d |
| 709 | 1.27.1.2 | **Instalacion y puesta en marcha ascensor P1 Y P2** |  | 68d | 2014-06-30 A | 2014-10-02 |  | 100% | 0d | 0d |
| 710 | 1.27.1.2.1 | Entrega de Escotilla | milestone | 0d | 2014-06-30 A | 2014-06-30 | 708 | 100% | 0d | 0d |
| 711 | 1.27.1.2.2 | Ingreso Personal- Preparación de Faena |  | 2d | 2014-07-30 A | 2014-07-31 | 708FS+21d | 100% | 0d | 0d |
| 712 | 1.27.1.2.3 | Toma de plomadas en escotilla |  | 2d | 2014-08-01 A | 2014-08-04 | 711 | 100% | 0d | 0d |
| 713 | 1.27.1.2.4 | Colgar plomos |  | 2d | 2014-08-05 A | 2014-08-06 | 712 | 100% | 0d | 0d |
| 714 | 1.27.1.2.5 | Colgar equipos de izaje |  | 1d | 2014-08-07 A | 2014-08-07 | 713 | 100% | 0d | 0d |
| 715 | 1.27.1.2.6 | Armar Cabina |  | 3d | 2014-08-07 A | 2014-08-11 | 714FS-1d | 100% | 0d | 0d |
| 716 | 1.27.1.2.7 | Instalacion de Paragolpes |  | 1d | 2014-08-12 A | 2014-08-12 | 715 | 100% | 0d | 0d |
| 717 | 1.27.1.2.8 | Instalar rieles de cabina y contrapeso |  | 5d | 2014-08-13 A | 2014-08-19 | 716 | 100% | 0d | 0d |
| 718 | 1.27.1.2.9 | Instalar marcos y puertas |  | 5d | 2014-08-19 A | 2014-08-25 | 717FS-1d | 100% | 0d | 0d |
| 719 | 1.27.1.2.10 | Remates de soldadura |  | 3d | 2014-08-26 A | 2014-08-28 | 718 | 100% | 0d | 0d |
| 720 | 1.27.1.2.11 | Alineación de rieles de cabina y contrapeso |  | 4d | 2014-08-28 A | 2014-09-02 | 719FS-1d | 100% | 0d | 0d |
| 721 | 1.27.1.2.12 | Entrega de marcos y puertas |  | 1d | 2014-09-03 A | 2014-09-03 | 720 | 100% | 0d | 0d |
| 722 | 1.27.1.2.13 | Terminación armado de cabina |  | 2d | 2014-09-04 A | 2014-09-05 | 721 | 100% | 0d | 0d |
| 723 | 1.27.1.2.14 | Instalacion eléctrica de escotilla |  | 3d | 2014-09-08 A | 2014-09-10 | 722 | 100% | 0d | 0d |
| 724 | 1.27.1.2.15 | Instalación zócalos y pasamanos | milestone | 0d | 2014-09-10 A | 2014-09-10 | 723 | 100% | 0d | 0d |
| 725 | 1.27.1.2.16 | Colgado de cabina y contrapeso |  | 2d | 2014-09-10 A | 2014-09-11 | 724FS-1d | 100% | 0d | 0d |
| 726 | 1.27.1.2.17 | Entrega mecánica |  | 2d | 2014-09-12 A | 2014-09-15 | 725 | 100% | 0d | 0d |
| 727 | 1.27.1.2.18 | Suministro eléctrico y frentes de acceso cerrados por constructora |  | 1d | 2014-09-16 A | 2014-09-16 | 726 | 100% | 0d | 0d |
| 728 | 1.27.1.2.19 | Ajustes y puesta en marcha equipos |  | 10d | 2014-09-16 A | 2014-09-29 | 727FS-1d | 100% | 0d | 0d |
| 729 | 1.27.1.2.20 | Terminaciones cabina |  | 2d | 2014-09-30 A | 2014-10-01 | 728 | 100% | 0d | 0d |
| 730 | 1.27.1.2.21 | Entrega |  | 1d | 2014-10-02 A | 2014-10-02 | 729 | 100% | 0d | 0d |

| ID | WBS | Task | Type | Duration | Start | Finish | Predecessors | Complete | Remaining | Total slack |
| --- | --- | --- | --- | --- | --- | --- | --- | --- | --- | --- |
| 731 | 1.27.2 | **Ascensores S1 Y S2** |  | 164d | 2014-04-30 A | 2014-12-15 |  | 77% | 37.72d | 0d |
| 732 | 1.27.2.1 | Remates Obra Gruesa y obras civiles |  | 74d | 2014-04-30 A | 2014-08-11 | 207 | 100% | 0d | 0d |
| 733 | 1.27.2.2 | **Instalacion y puesta en marcha ascensor S1 Y S2** |  | 91d | 2014-08-11 A | 2014-12-15 |  | 60% | 36.4d | 0d |
| 734 | 1.27.2.2.1 | Entrega de Escotilla |  | 1d | 2014-08-11 A | 2014-08-11 | 732FS-1d | 100% | 0d | 0d |
| 735 | 1.27.2.2.2 | Ingreso Personal- Preparación de Faena |  | 2d | 2014-08-12 A | 2014-08-13 | 734 | 100% | 0d | 0d |
| 736 | 1.27.2.2.3 | Toma de plomadas en escotilla |  | 2d | 2014-08-14 A | 2014-08-15 | 735 | 100% | 0d | 0d |
| 737 | 1.27.2.2.4 | Colgar plomos |  | 2d | 2014-08-18 A | 2014-08-19 | 736 | 100% | 0d | 0d |
| 738 | 1.27.2.2.5 | Colgar equipos de izaje |  | 1d | 2014-08-20 A | 2014-08-20 | 737 | 100% | 0d | 0d |
| 739 | 1.27.2.2.6 | Armar Cabina |  | 3d | 2014-08-20 A | 2014-10-27 | 738FS-1d | 70% | 0.9d | 0d |
| 740 | 1.27.2.2.7 | Instalacion de Paragolpes |  | 1d | 2014-08-25 A | 2014-08-25 | 739 | 100% | 0d | 0d |
| 741 | 1.27.2.2.8 | Instalar rieles de cabina y contrapeso |  | 22d | 2014-08-22 A | 2014-10-28 | 740FS-2d | 92% | 1.76d | 0d |
| 742 | 1.27.2.2.9 | Instalar marcos y puertas |  | 13d | 2014-09-19 A | 2014-10-31 | 741FS-2d | 65% | 4.55d | 0d |
| 743 | 1.27.2.2.10 | Remates de soldadura |  | 8d | 2014-10-07 A | 2014-11-04 | 742FS-1d | 65% | 2.8d | 0d |
| 744 | 1.27.2.2.11 | Alineación de rieles de cabina y contrapeso |  | 7d | 2014-10-17 A | 2014-11-05 | 743 | 84% | 1.12d | 0d |
| 745 | 1.27.2.2.12 | Entrega de marcos y puertas |  | 2d | 2014-10-27 A | 2014-11-06 | 744FS-1d | 10% | 1.8d | 0d |
| 746 | 1.27.2.2.13 | Terminación armado de cabina |  | 2d | 2014-10-29 A | 2014-11-10 | 745 | 10% | 1.8d | 0d |
| 747 | 1.27.2.2.14 | Instalacion eléctrica de escotilla |  | 10d | 2014-10-30 A | 2014-11-12 | 746FS-1d | 100% | 0d | 0d |
| 748 | 1.27.2.2.15 | Instalación zócalos y pasamanos |  | 1d | 2014-11-13 A | 2014-11-13 | 747 |  | 1d | 0d |
| 749 | 1.27.2.2.16 | Colgado de cabina y contrapeso |  | 3d | 2014-11-14 A | 2014-11-18 | 748 |  | 3d | 0d |
| 750 | 1.27.2.2.17 | Entrega mecánica |  | 2d | 2014-11-18 A | 2014-11-19 | 749FS-1d |  | 2d | 0d |
| 751 | 1.27.2.2.18 | Suministro eléctrico y frentes de acceso cerrados por constructora | milestone | 0d | 2014-11-19 A | 2014-11-19 | 750 |  | 0d | 0d |
| 752 | 1.27.2.2.19 | Ajustes y puesta en marcha equipos |  | 17d | 2014-11-18 A | 2014-12-10 | 749FS-2d, 750FS-2d |  | 17d | 0d |
| 753 | 1.27.2.2.20 | Terminaciones cabina |  | 2d | 2014-12-11 A | 2014-12-12 | 752 |  | 2d | 0d |
| 754 | 1.27.2.2.21 | Entrega |  | 1d | 2014-12-15 A | 2014-12-15 | 753 |  | 1d | 0d |

| ID | WBS | Task | Type | Duration | Start | Finish | Predecessors | Complete | Remaining | Total slack | Constraint |
| --- | --- | --- | --- | --- | --- | --- | --- | --- | --- | --- | --- |
| 755 | 1.27.3 | **Ascensores P3 Y P4** |  | 89d | 2014-09-03 A | 2015-01-05 |  | 27% | 64.97d | 0d |  |
| 756 | 1.27.3.1 | Remates Obra Gruesa y obras civiles |  | 22d | 2014-09-03 A | 2014-10-02 | 207FS+90d | 100% | 0d | 0d |  |
| 757 | 1.27.3.2 | **Instalacion y puesta en marcha ascensor S1 Y S2** |  | 51d | 2014-10-24 A | 2015-01-05 |  |  | 51d | 0d |  |
| 758 | 1.27.3.2.1 | Entrega de Escotilla | milestone | 0d | 2014-10-24 A | 2014-10-24 | 756 |  | 0d | 0d | start no earlier than 2014-10-24 |
| 759 | 1.27.3.2.2 | Ingreso Personal- Preparación de Faena |  | 2d | 2014-10-27 A | 2014-10-28 | 758FS-1d |  | 2d | 0d | start no earlier than 2014-10-24 |
| 760 | 1.27.3.2.3 | Toma de plomadas en escotilla |  | 1d | 2014-10-29 A | 2014-10-29 | 759 |  | 1d | 0d | start no earlier than 2014-10-24 |
| 761 | 1.27.3.2.4 | Colgar plomos |  | 1d | 2014-10-30 A | 2014-10-30 | 760 |  | 1d | 0d | start no earlier than 2014-10-24 |
| 762 | 1.27.3.2.5 | Colgar equipos de izaje |  | 1d | 2014-10-31 A | 2014-10-31 | 761 |  | 1d | 0d | start no earlier than 2014-10-24 |
| 763 | 1.27.3.2.6 | Armar Cabina |  | 2d | 2014-10-31 A | 2014-11-03 | 762FS-1d |  | 2d | 0d | start no earlier than 2014-10-24 |
| 764 | 1.27.3.2.7 | Instalacion de Paragolpes |  | 1d | 2014-11-04 A | 2014-11-04 | 763 |  | 1d | 0d | start no earlier than 2014-10-24 |
| 765 | 1.27.3.2.8 | Instalar rieles de cabina y contrapeso |  | 9d | 2014-11-04 A | 2014-11-14 | 764FS-1d |  | 9d | 0d | start no earlier than 2014-10-24 |
| 766 | 1.27.3.2.9 | Instalar marcos y puertas |  | 6d | 2014-11-14 A | 2014-11-21 | 765FS-1d |  | 6d | 0d | start no earlier than 2014-10-24 |
| 767 | 1.27.3.2.10 | Remates de soldadura |  | 2d | 2014-11-24 A | 2014-11-25 | 766 |  | 2d | 0d |  |
| 768 | 1.27.3.2.11 | Alineación de rieles de cabina y contrapeso |  | 2d | 2014-11-26 A | 2014-11-27 | 767 |  | 2d | 0d |  |
| 769 | 1.27.3.2.12 | Entrega de marcos y puertas |  | 1d | 2014-11-28 A | 2014-11-28 | 768 |  | 1d | 0d |  |
| 770 | 1.27.3.2.13 | Terminación armado de cabina |  | 2d | 2014-11-28 A | 2014-12-01 | 769FS-1d |  | 2d | 0d |  |
| 771 | 1.27.3.2.14 | Instalacion eléctrica de escotilla |  | 3d | 2014-12-02 A | 2014-12-04 | 770 |  | 3d | 0d |  |
| 772 | 1.27.3.2.15 | Armado sala de maquinas |  | 4d | 2014-12-04 A | 2014-12-09 | 771FS-1d |  | 4d | 0d |  |
| 773 | 1.27.3.2.16 | Instalación zócalos y pasamanos |  | 1d | 2014-12-10 A | 2014-12-10 | 772 |  | 1d | 0d |  |
| 774 | 1.27.3.2.17 | Colgado de cabina y contrapeso |  | 1d | 2014-12-11 A | 2014-12-11 | 773 |  | 1d | 0d |  |
| 775 | 1.27.3.2.18 | Entrega mecánica |  | 3d | 2014-12-11 A | 2014-12-15 | 774FS-1d |  | 3d | 0d |  |
| 776 | 1.27.3.2.19 | Suministro eléctrico y frentes de acceso cerrados por constructora | milestone | 0d | 2014-12-15 A | 2014-12-15 | 775 |  | 0d | 0d |  |
| 777 | 1.27.3.2.20 | Ajustes y puesta en marcha equipos |  | 14d | 2014-12-15 A | 2015-01-01 | 776FS-1d |  | 14d | 0d |  |
| 778 | 1.27.3.2.21 | Terminaciones cabina |  | 2d | 2015-01-01 A | 2015-01-02 | 777FS-1d |  | 2d | 0d |  |
| 779 | 1.27.3.2.22 | Entrega |  | 1d | 2015-01-05 A | 2015-01-05 | 778 |  | 1d | 0d |  |
| 780 | 1.28 | DESMOVILIZACIÓN OBRA CYBM | milestone | 0d | 2015-02-11 A | 2015-02-11 | 674, 685, 687, 689 |  | 0d | 0d |  |
